# 20190122- Plan del Proyecto de Implementacion del SIIM Daule

Schedule from MS Project XML, 2018-07-16 to 2019-07-10, A marks actual dates.
PlanERP

## Calendars

- Estándar: Mon-Fri 08:00-12:00, 13:00-17:00; Sat-Sun off.

## Resources

| Resource |
| --- |
| Administrador de Contrato - Cliente |
| Líder Técnico - Cliente |
| Líder Funcional - Usuario Experto - Cliente |
| Funcionarios Técnicos - Cliente |
| Usuarios Finales - Cliente |
| Desarrollador PlanERP |
| Gerente de Proyecto PlanERP |
| Líder del Proyecto/Desarrollo PlanERP |
| Analista Procesos PlanERP |
| Analista de Calidad PlanERP |
| Especialista Base de Datos PlanERP |
| Consultor Especialista en Procesos de GADs PlanERP |

## Schedule

| ID | WBS | Task | Type | Duration | Start | Finish | Predecessors | Complete | Constraint | Resources | Porcentage Avance |
| --- | --- | --- | --- | --- | --- | --- | --- | --- | --- | --- | --- |
| 1 | 1 | Programa de Implementación SIIM |  | 0d | 2018-07-16 A | 2019-07-10 |  | 82% |  |  |  |
| 2 | 2 | **FASE 1: Implementación de Módulos de Servicio al Cliente (SC) y Atención al Ciudadano (AC)** |  | 0d | 2018-07-16 A | 2019-01-25 A |  | 100% |  |  |  |
| 3 | 2.1 | **ETAPA 1: Preparación del Proyecto e Instalación del SIIM - Módulos SC y AC** |  | 0d | 2018-07-16 A | 2018-07-25 A |  | 100% |  |  |  |
| 4 | 2.1.1 | **Actividades de Gestión del Proyecto** |  | 0d | 2018-07-16 A | 2018-07-18 A |  | 100% |  |  |  |
| 5 | 2.1.1.1 | Revisión de Información de Contrato y Anexos |  | 0d | 2018-07-16 A | 2018-07-16 A |  | 100% | start no earlier than 2018-07-16 | Gerente de Proyecto PlanERP; Líder del Proyecto/Desarrollo PlanERP |  |
| 6 | 2.1.1.2 | Definir la Organización del Proyecto |  | 0d | 2018-07-16 A | 2018-07-17 A | 5FS+6h | 100% |  | Gerente de Proyecto PlanERP; Líder del Proyecto/Desarrollo PlanERP |  |
| 7 | 2.1.1.3 | Kick-off Interno del Proyecto |  | 0d | 2018-07-17 A | 2018-07-18 A | 6FS+4h | 100% |  | Gerente de Proyecto PlanERP; Líder del Proyecto/Desarrollo PlanERP |  |
| 8 | 2.1.2 | **Preparación del kick-off del Proyecto** |  | 0d | 2018-07-18 A | 2018-07-19 A |  | 100% |  |  |  |
| 9 | 2.1.2.1 | Comunicación con el Cliente |  | 0d | 2018-07-18 A | 2018-07-18 A | 7FS+6h | 100% |  | Administrador de Contrato - Cliente; Gerente de Proyecto PlanERP |  |
| 10 | 2.1.2.2 | Crear la presentación del kick-off |  | 0d | 2018-07-18 A | 2018-07-19 A | 9FS+4h | 100% |  | Gerente de Proyecto PlanERP; Líder del Proyecto/Desarrollo PlanERP |  |
| 11 | 2.1.3 | **Reunión de Kick-off** |  | 0d | 2018-07-19 A | 2018-07-19 A |  | 100% |  |  |  |
| 12 | 2.1.3.1 | Realizar la reunión de kick-off |  | 0d | 2018-07-19 A | 2018-07-19 A | 10FS+4h | 100% |  | Administrador de Contrato - Cliente; Líder Funcional - Usuario Experto - Cliente; Gerente de Proyecto PlanERP; Líder Técnico - Cliente; Líder del Proyecto/Desarrollo PlanERP |  |
| 13 | 2.1.4 | **Entrega e Instalación del Software** |  | 0d | 2018-07-19 A | 2018-07-25 A |  | 100% |  |  |  |
| 14 | 2.1.4.1 | **Instalar SIIM en Servidor** |  | 0d | 2018-07-19 A | 2018-07-24 A | 11FS+0.29d | 100% |  | Funcionarios Técnicos - Cliente |  |
| 15 | 2.1.4.1.1 | 1 Dirección de Desarrollo Territorial (No incluye Catastro) |  | 0d | 2018-07-19 A | 2018-07-19 A |  | 100% |  |  |  |
| 16 | 2.1.4.1.2 | 4 Dirección de Justicia y Vigilancia |  | 0d | 2018-07-19 A | 2018-07-19 A | 15FS+2h | 100% |  |  |  |
| 17 | 2.1.4.1.3 | 5 Dirección de Desarrollo Humano y Social |  | 0d | 2018-07-19 A | 2018-07-20 A | 16FS+2h | 100% |  |  |  |
| 18 | 2.1.4.1.4 | 8.3 Rentas |  | 0d | 2018-07-20 A | 2018-07-20 A | 17FS+2h | 100% |  |  |  |
| 19 | 2.1.4.1.5 | 8.4 Tesorería |  | 0d | 2018-07-20 A | 2018-07-20 A | 18FS+2h | 100% |  |  |  |
| 20 | 2.1.4.1.6 | 9.1 Mercados |  | 0d | 2018-07-20 A | 2018-07-20 A | 19FS+2h | 100% |  |  |  |
| 21 | 2.1.4.1.7 | 9.2 Cementerio |  | 0d | 2018-07-20 A | 2018-07-20 A | 20FS+1h | 100% |  |  |  |
| 22 | 2.1.4.1.8 | 9.3 Camal |  | 0d | 2018-07-20 A | 2018-07-20 A | 21FS+1h | 100% |  |  |  |
| 23 | 2.1.4.1.9 | 10 Registro de la Propiedad y Mercantil |  | 0d | 2018-07-20 A | 2018-07-23 A | 22FS+1h | 100% |  |  |  |
| 24 | 2.1.4.1.10 | 11 Administración de bomberos |  | 0d | 2018-07-23 A | 2018-07-23 A | 23FS+2h | 100% |  |  |  |
| 25 | 2.1.4.1.11 | 12 CRM para ciudadanos. Ventanilla Única |  | 0d | 2018-07-23 A | 2018-07-23 A | 24FS+1h | 100% |  |  |  |
| 26 | 2.1.4.1.12 | 15.1 BI Desarrollo Territorial |  | 0d | 2018-07-23 A | 2018-07-23 A | 25FS+2h | 100% |  |  |  |
| 27 | 2.1.4.1.13 | 15.5 BI Obras Públicas Municipales |  | 0d | 2018-07-23 A | 2018-07-24 A | 26FS+2h | 100% |  |  |  |
| 28 | 2.1.4.1.14 | 15.7 BI Registro de la Propiedad y Mercantil |  | 0d | 2018-07-24 A | 2018-07-24 A | 27FS+2h | 100% |  |  |  |
| 29 | 2.1.4.1.15 | 16.1 Consultas Portal Web |  | 0d | 2018-07-24 A | 2018-07-24 A | 28FS+2h | 100% |  |  |  |
| 30 | 2.1.4.1.16 | 16.2 Aplicación para móviles (APP) |  | 0d | 2018-07-24 A | 2018-07-24 A | 29FS+2h | 100% |  |  |  |
| 31 | 2.1.4.2 | Entrega de Software |  | 0d | 2018-07-24 A | 2018-07-25 A | 14FS+4d | 100% |  | Gerente de Proyecto PlanERP; Administrador de Contrato - Cliente |  |
| 32 | 2.1.5 | Revisar la ETAPA del Proyecto |  | 0d | 2018-07-25 A | 2018-07-25 A | 13FS+4.29d | 100% |  | Administrador de Contrato - Cliente; Gerente de Proyecto PlanERP; Analista de Calidad PlanERP |  |
| 33 | 2.1.6 | HITO: FINALIZACION ETAPA 1 | milestone | 0d | 2018-07-25 A | 2018-07-25 A | 32FS+1d | 100% |  |  | 5% |

Notes:
- 5: · Obtener información de los procesos de negociación, el cliente, cronograma, procesos de negocio / · Levantamiento de los riesgos del proyecto
- 6: · Esclarecer las responsabilidades internas del proyecto
- 7: · Comunicar el Plan del Proyecto al equipo
- 9: · Confirmar disponibilidad de hardware y recursos / · Confirmar fecha y agenda para la reunión de kickoff
- 10: · Elaborar la presentación para la reunión del kickoff, con la agenda y el plan del proyecto
- 12: · Conducir reunión de kickoff / · Comprender las expectativas del usuario y requerimientos de alto nivel / · Finalizar el plan del proyecto y cronograma / · Firmar el Acuerdo de Nivel de Servicio (SLA)
- 14: · Instalar SIIM Base e inicializarlo con una Base de Datos de prueba en el hardware del cliente
- 32: · Obtener la firma de finalización de la fase del proyecto

| ID | WBS | Task | Type | Duration | Start | Finish | Predecessors | Complete | Resources | Porcentage Avance |
| --- | --- | --- | --- | --- | --- | --- | --- | --- | --- | --- |
| 34 | 2.2 | **ETAPA 2: Levantamiento de Características Institucionales - Módulos SC y AC** |  | 0d | 2018-07-25 A | 2018-08-13 A | 3FS+9d | 100% |  |  |
| 35 | 2.2.1 | **Actividades de Gestión del Proyecto** |  | 0d | 2018-07-25 A | 2018-07-26 A |  | 100% |  |  |
| 36 | 2.2.1.1 | Revisión del Plan del Proyecto |  | 0d | 2018-07-25 A | 2018-07-26 A | 32FS+1d | 100% | Administrador de Contrato - Cliente; Gerente de Proyecto PlanERP |  |
| 37 | 2.2.1.2 | Programar talleres de requerimientos de Entidad |  | 0d | 2018-07-26 A | 2018-07-26 A | 36FS+4h | 100% | Administrador de Contrato - Cliente; Gerente de Proyecto PlanERP |  |
| 38 | 2.2.2 | **Sesiones de Requerimientos del Entidad** |  | 0d | 2018-07-26 A | 2018-08-10 A |  | 100% |  |  |
| 39 | 2.2.2.1 | Conducir Sesiones de Requerimientos |  | 0d | 2018-07-26 A | 2018-08-08 A | 37FS+4h | 100% | Funcionarios Técnicos - Cliente; Analista Procesos PlanERP; Consultor Especialista en Procesos de GADs PlanERP |  |
| 40 | 2.2.2.2 | Crear Documento de Características del Entidad |  | 0d | 2018-08-08 A | 2018-08-10 A | 39FS+10d | 100% | Analista Procesos PlanERP; Funcionarios Técnicos - Cliente; Consultor Especialista en Procesos de GADs PlanERP |  |
| 41 | 2.2.3 | **Revisar el Documento de Características del Entidad** |  | 0d | 2018-08-10 A | 2018-08-10 A |  | 100% |  |  |
| 42 | 2.2.3.1 | Revisar el Documento de Características del Entidad |  | 0d | 2018-08-10 A | 2018-08-10 A | 40FS+2d | 100% | Administrador de Contrato - Cliente; Gerente de Proyecto PlanERP; Analista de Calidad PlanERP; Consultor Especialista en Procesos de GADs PlanERP; Analista Procesos PlanERP |  |
| 43 | 2.2.3.2 | Revisar el Plan del Proyecto |  | 0d | 2018-08-10 A | 2018-08-10 A | 42FS+2h | 100% | Administrador de Contrato - Cliente; Gerente de Proyecto PlanERP |  |
| 44 | 2.2.4 | Revisar la ETAPA del Proyecto |  | 0d | 2018-08-10 A | 2018-08-13 A | 41FS+0.57d | 100% | Administrador de Contrato - Cliente; Gerente de Proyecto PlanERP; Líder del Proyecto/Desarrollo PlanERP; Analista de Calidad PlanERP |  |
| 45 | 2.2.5 | HITO: FINALIZACION ETAPA 2 | milestone | 0d | 2018-08-13 A | 2018-08-13 A | 44FS+1d | 100% |  | 10% |
| 46 | 2.3 | **ETAPA 3: Migración de Datos, Configuración y Pruebas de Operación - Módulos SC y AC** |  | 0d | 2018-08-13 A | 2018-10-22 A | 34FS+14.71d | 100% |  |  |
| 47 | 2.3.1 | **Gestión General del Proyecto** |  | 0d | 2018-08-13 A | 2018-08-14 A |  | 100% |  |  |
| 48 | 2.3.1.1 | Planificar cambio Organizacional |  | 0d | 2018-08-13 A | 2018-08-14 A | 44FS+1d | 100% | Administrador de Contrato - Cliente; Gerente de Proyecto PlanERP; Líder del Proyecto/Desarrollo PlanERP |  |
| 49 | 2.3.1.2 | Planificar Entrenamiento a Usuarios Finales |  | 0d | 2018-08-14 A | 2018-08-14 A | 48FS+2h | 100% | Administrador de Contrato - Cliente; Gerente de Proyecto PlanERP; Líder del Proyecto/Desarrollo PlanERP |  |
| 50 | 2.3.1.3 | Definir y Preparar la Migración de Datos |  | 0d | 2018-08-14 A | 2018-08-14 A | 48FS+2h | 100% | Funcionarios Técnicos - Cliente; Líder del Proyecto/Desarrollo PlanERP; Especialista Base de Datos PlanERP |  |
| 51 | 2.3.2 | **Configuración del Sistema en Producción** |  | 0d | 2018-08-14 A | 2018-10-22 A |  | 100% |  |  |
| 52 | 2.3.2.1 | Instalar el SIIM en Producción |  | 0d | 2018-08-14 A | 2018-08-15 A | 50FS+2h | 100% | Funcionarios Técnicos - Cliente; Analista Procesos PlanERP; Desarrollador PlanERP; Líder del Proyecto/Desarrollo PlanERP; Especialista Base de Datos PlanERP |  |
| 53 | 2.3.2.2 | Configurar Inicialización del Sistema |  | 0d | 2018-08-15 A | 2018-08-16 A | 52FS+1d | 100% | Funcionarios Técnicos - Cliente; Analista Procesos PlanERP; Desarrollador PlanERP; Líder del Proyecto/Desarrollo PlanERP; Especialista Base de Datos PlanERP |  |
| 54 | 2.3.2.3 | Realizar la Migración de Datos |  | 0d | 2018-08-16 A | 2018-10-22 A | 53FS+1d | 100% | Funcionarios Técnicos - Cliente; Analista Procesos PlanERP; Desarrollador PlanERP; Líder del Proyecto/Desarrollo PlanERP; Especialista Base de Datos PlanERP |  |
| 55 | 2.3.2.4 | Desarrollar Adaptaciones al Software |  | 0d | 2018-08-16 A | 2018-08-28 A | 53FS+1d | 100% | Funcionarios Técnicos - Cliente; Analista Procesos PlanERP; Desarrollador PlanERP; Líder del Proyecto/Desarrollo PlanERP; Especialista Base de Datos PlanERP |  |
| 56 | 2.3.2.5 | Configuración del Sistema en base al Documento de Características del Entidad |  | 0d | 2018-08-28 A | 2018-08-31 A | 55FS+10d | 100% | Funcionarios Técnicos - Cliente; Analista Procesos PlanERP; Desarrollador PlanERP; Líder del Proyecto/Desarrollo PlanERP; Especialista Base de Datos PlanERP |  |
| 57 | 2.3.2.6 | Configurar Interfaces |  | 0d | 2018-08-31 A | 2018-09-03 A | 56FS+3d | 100% | Funcionarios Técnicos - Cliente; Analista Procesos PlanERP; Desarrollador PlanERP; Líder del Proyecto/Desarrollo PlanERP; Especialista Base de Datos PlanERP |  |
| 58 | 2.3.2.7 | Configurar Usuarios y Autorizaciones |  | 0d | 2018-09-03 A | 2018-09-04 A | 57FS+1d | 100% | Funcionarios Técnicos - Cliente; Analista Procesos PlanERP; Desarrollador PlanERP; Líder del Proyecto/Desarrollo PlanERP; Especialista Base de Datos PlanERP |  |

Notes:
- 36: · Revisar las actas de la reunión de kick-off / · Se actualiza el plan del proyecto en base a la reunión de kick-off
- 37: · Se agenda el taller de levantamiento de requerimientos
- 39: · Las Necesidades del negocio son detalladas en áreas como: Catastro urbano, catastro rural, etc. / · Los requerimientos son definidos para: Autorizaciones y dueños de información, Migración de datos, Interfaces y puntos de Integración, rendimiento del sistema
- 40: · Todos los datos relevantes (requerimientos, soluciones, limites, brechas) son documentadas en el documento de Características del Negocio
- 42: · Se determina la factibilidad de los requerimientos técnicos y de negocio / · Se establecen los limites y brechas y se acuerdan las soluciones
- 43: · Se actualiza el plan del proyecto basado en la revisión del Documento de Características del Negocio
- 44: · Obtener la firma de finalización de la fase del proyecto
- 48: · Se definen los roles de usuario y se asignan a los procesos de negocio / · Se define la estrategia de comunicación con los usuarios finales
- 49: · Se define la estrategia de Entrenamiento / · Se crea el cronograma de entrenamiento preliminar / · Se crea el material de entrenamiento
- 50: · Se limpia y se filtra los datos relevantes de los sistemas legados
- 52: · El SIIM con su base de datos respectiva es instalado en el hardware del cliente para su uso en producción
- 53: · Se inicializa el SIIM basado en el BluePrint y la guía de instalación del SIIM
- 54: · Se configura el SIIM en Producción basado en el BluePrint del Negocio
- 56: · Se configura el SIIM en Producción basado en el BluePrint del Negocio
- 57: · Se configuran las interfaces estándar para imprimir, email, etc.
- 58: · Se completa la lista de usuarios con las respectivas autorizaciones y se crean los usuarios en el SIIM

| ID | WBS | Task | Duration | Start | Finish | Predecessors | Complete | Resources |
| --- | --- | --- | --- | --- | --- | --- | --- | --- |
| 59 | 2.3.3 | **Gestión del Cambio Organizacional** | 0d | 2018-09-04 A | 2018-09-05 A |  | 100% |  |
| 60 | 2.3.3.1 | Conducir la comunicación de la Gestión de Cambios (si es aplicable) | 0d | 2018-09-04 A | 2018-09-05 A | 58FS+1d | 100% | Administrador de Contrato - Cliente; Líder Funcional - Usuario Experto - Cliente; Gerente de Proyecto PlanERP; Consultor Especialista en Procesos de GADs PlanERP |
| 61 | 2.3.4 | **Pruebas de validación/aceptación del Sistema** | 0d | 2018-09-05 A | 2018-09-10 A |  | 100% |  |
| 62 | 2.3.4.1 | Mantener la Lista Maestra de Procesos de Entidad | 0d | 2018-09-05 A | 2018-09-05 A | 60FS+1d | 100% | Líder Funcional - Usuario Experto - Cliente; Gerente de Proyecto PlanERP; Líder del Proyecto/Desarrollo PlanERP; Analista Procesos PlanERP; Consultor Especialista en Procesos de GADs PlanERP |
| 63 | 2.3.4.2 | **Conducir Talleres de Validación** | 0d | 2018-09-05 A | 2018-09-10 A | 62FS+2h | 100% | Líder Funcional - Usuario Experto - Cliente; Analista Procesos PlanERP; Analista de Calidad PlanERP; Consultor Especialista en Procesos de GADs PlanERP |
| 64 | 2.3.4.2.1 | 1 Dirección de Desarrollo Territorial (No incluye Catastro) | 0d | 2018-09-05 A | 2018-09-05 A |  | 100% |  |
| 65 | 2.3.4.2.2 | 4 Dirección de Justicia y Vigilancia | 0d | 2018-09-05 A | 2018-09-05 A | 64FS+2h | 100% |  |
| 66 | 2.3.4.2.3 | 5 Dirección de Desarrollo Humano y Social | 0d | 2018-09-05 A | 2018-09-05 A | 65FS+2h | 100% |  |
| 67 | 2.3.4.2.4 | 8.3 Rentas | 0d | 2018-09-05 A | 2018-09-06 A | 66FS+1h | 100% |  |
| 68 | 2.3.4.2.5 | 8.4 Tesorería | 0d | 2018-09-06 A | 2018-09-06 A | 67FS+2h | 100% |  |
| 69 | 2.3.4.2.6 | 9.1 Mercados | 0d | 2018-09-06 A | 2018-09-06 A | 68FS+2h | 100% |  |
| 70 | 2.3.4.2.7 | 9.2 Cementerio | 0d | 2018-09-06 A | 2018-09-06 A | 69FS+1h | 100% |  |
| 71 | 2.3.4.2.8 | 9.3 Camal | 0d | 2018-09-06 A | 2018-09-06 A | 70FS+1h | 100% |  |
| 72 | 2.3.4.2.9 | 10 Registro de la Propiedad y Mercantil | 0d | 2018-09-06 A | 2018-09-07 A | 71FS+1h | 100% |  |
| 73 | 2.3.4.2.10 | 11 Administración de bomberos | 0d | 2018-09-07 A | 2018-09-07 A | 72FS+2h | 100% |  |
| 74 | 2.3.4.2.11 | 12 CRM para ciudadanos. Ventanilla Única | 0d | 2018-09-07 A | 2018-09-07 A | 73FS+1h | 100% |  |
| 75 | 2.3.4.2.12 | 15.1 BI Desarrollo Territorial | 0d | 2018-09-07 A | 2018-09-07 A | 74FS+2h | 100% |  |
| 76 | 2.3.4.2.13 | 15.5 BI Obras Públicas Municipales | 0d | 2018-09-07 A | 2018-09-07 A | 75FS+1h | 100% |  |
| 77 | 2.3.4.2.14 | 15.7 BI Registro de la Propiedad y Mercantil | 0d | 2018-09-07 A | 2018-09-07 A | 76FS+1h | 100% |  |
| 78 | 2.3.4.2.15 | 16.1 Consultas Portal Web | 0d | 2018-09-07 A | 2018-09-07 A | 77FS+1h | 100% |  |
| 79 | 2.3.4.2.16 | 16.2 Aplicación para móviles (APP) | 0d | 2018-09-07 A | 2018-09-10 A | 78FS+1h | 100% |  |
| 80 | 2.3.5 | **Pruebas de Aceptacion Sistema** | 0d | 2018-09-10 A | 2018-09-14 A |  | 100% |  |
| 81 | 2.3.5.1 | Definir casos de prueba y alcance | 0d | 2018-09-10 A | 2018-09-10 A | 79FS+1h, 30FS+2h | 100% | Líder Funcional - Usuario Experto - Cliente; Líder del Proyecto/Desarrollo PlanERP; Analista de Calidad PlanERP; Funcionarios Técnicos - Cliente |
| 82 | 2.3.5.2 | Preparar ambiente de pruebas | 0d | 2018-09-10 A | 2018-09-11 A | 81FS+2h | 100% | Funcionarios Técnicos - Cliente; Líder Funcional - Usuario Experto - Cliente; Líder del Proyecto/Desarrollo PlanERP; Analista de Calidad PlanERP |

Notes:
- 60: · Se comunica a los usuarios finales los roles, tareas y cronograma de entrenamiento / · Se comunica a los proveedores y clientes acerca del cronograma y cambios a realizar
- 62: · Se crea la lista de los procesos de negocio mas relevantes para la implementación del SIIM
- 63: · Todos los procesos de negocio de la lista maestra ha sido revisado en el sistema / · Los datos importados en la migración de datos ha sido verificado / · Los cambios en la configuración y el alcance están documentados
- 81: · Se crea el plan de prueba, con sus casos de prueba
- 82: · Una copia de la base de datos del SIIM de producción es creada e inicializada en el ambiente de pruebas del SIIM

| ID | WBS | Task | Type | Duration | Start | Finish | Predecessors | Complete | Resources | Porcentage Avance |
| --- | --- | --- | --- | --- | --- | --- | --- | --- | --- | --- |
| 83 | 2.3.5.3 | **Ejecutar el plan de pruebas de Aceptacion del Sistema** |  | 0d | 2018-09-11 A | 2018-09-13 A | 82FS+1d | 100% | Líder Funcional - Usuario Experto - Cliente; Líder del Proyecto/Desarrollo PlanERP; Analista de Calidad PlanERP; Funcionarios Técnicos - Cliente; Consultor Especialista en Procesos de GADs PlanERP |  |
| 84 | 2.3.5.3.1 | 1 Dirección de Desarrollo Territorial (No incluye Catastro) |  | 0d | 2018-09-11 A | 2018-09-11 A |  | 100% |  |  |
| 85 | 2.3.5.3.2 | 4 Dirección de Justicia y Vigilancia |  | 0d | 2018-09-11 A | 2018-09-11 A | 84FS+2h | 100% |  |  |
| 86 | 2.3.5.3.3 | 5 Dirección de Desarrollo Humano y Social |  | 0d | 2018-09-11 A | 2018-09-11 A | 85FS+2h | 100% |  |  |
| 87 | 2.3.5.3.4 | 8.3 Rentas |  | 0d | 2018-09-11 A | 2018-09-12 A | 86FS+1h | 100% |  |  |
| 88 | 2.3.5.3.5 | 8.4 Tesorería |  | 0d | 2018-09-12 A | 2018-09-12 A | 87FS+2h | 100% |  |  |
| 89 | 2.3.5.3.6 | 9.1 Mercados |  | 0d | 2018-09-12 A | 2018-09-12 A | 88FS+2h | 100% |  |  |
| 90 | 2.3.5.3.7 | 9.2 Cementerio |  | 0d | 2018-09-12 A | 2018-09-12 A | 89FS+1h | 100% |  |  |
| 91 | 2.3.5.3.8 | 9.3 Camal |  | 0d | 2018-09-12 A | 2018-09-12 A | 90FS+1h | 100% |  |  |
| 92 | 2.3.5.3.9 | 10 Registro de la Propiedad y Mercantil |  | 0d | 2018-09-12 A | 2018-09-12 A | 91FS+1h | 100% |  |  |
| 93 | 2.3.5.3.10 | 11 Administración de bomberos |  | 0d | 2018-09-12 A | 2018-09-13 A | 92FS+2h | 100% |  |  |
| 94 | 2.3.5.3.11 | 12 CRM para ciudadanos. Ventanilla Única |  | 0d | 2018-09-13 A | 2018-09-13 A | 93FS+1h | 100% |  |  |
| 95 | 2.3.5.3.12 | 15.1 BI Desarrollo Territorial |  | 0d | 2018-09-13 A | 2018-09-13 A | 94FS+2h | 100% |  |  |
| 96 | 2.3.5.3.13 | 15.5 BI Obras Públicas Municipales |  | 0d | 2018-09-13 A | 2018-09-13 A | 95FS+1h | 100% |  |  |
| 97 | 2.3.5.3.14 | 15.7 BI Registro de la Propiedad y Mercantil |  | 0d | 2018-09-13 A | 2018-09-13 A | 96FS+1h | 100% |  |  |
| 98 | 2.3.5.3.15 | 16.1 Consultas Portal Web |  | 0d | 2018-09-13 A | 2018-09-13 A | 97FS+1h | 100% |  |  |
| 99 | 2.3.5.3.16 | 16.2 Aplicación para móviles (APP) |  | 0d | 2018-09-13 A | 2018-09-13 A | 98FS+1h | 100% |  |  |
| 100 | 2.3.5.4 | Revisar los resultados de las pruebas y necesidades de cambios |  | 0d | 2018-09-13 A | 2018-09-14 A | 99FS+1h, 79FS+1h, 30FS+2h | 100% | Administrador de Contrato - Cliente; Gerente de Proyecto PlanERP; Analista de Calidad PlanERP; Consultor Especialista en Procesos de GADs PlanERP |  |
| 101 | 2.3.6 | **Planificar Salida a Producción y Soporte** |  | 0d | 2018-09-14 A | 2018-09-17 A |  | 100% |  |  |
| 102 | 2.3.6.1 | Definir Plan de Salida a Producción |  | 0d | 2018-09-14 A | 2018-09-17 A | 100FS+1d | 100% | Administrador de Contrato - Cliente; Líder Funcional - Usuario Experto - Cliente; Gerente de Proyecto PlanERP; Líder del Proyecto/Desarrollo PlanERP |  |
| 103 | 2.3.6.2 | Planificar Estrategia de Soporte |  | 0d | 2018-09-14 A | 2018-09-17 A | 100FS+1d | 100% | Administrador de Contrato - Cliente; Líder Funcional - Usuario Experto - Cliente; Gerente de Proyecto PlanERP; Líder del Proyecto/Desarrollo PlanERP |  |
| 104 | 2.3.6.3 | Planificar Administración del Sistema |  | 0d | 2018-09-14 A | 2018-09-17 A | 100FS+1d | 100% | Administrador de Contrato - Cliente; Líder Funcional - Usuario Experto - Cliente; Gerente de Proyecto PlanERP; Líder del Proyecto/Desarrollo PlanERP |  |
| 105 | 2.3.7 | Revisar la ETAPA del Proyecto |  | 0d | 2018-09-17 A | 2018-09-17 A | 101FS+0.29d | 100% | Administrador de Contrato - Cliente; Gerente de Proyecto PlanERP; Líder del Proyecto/Desarrollo PlanERP; Analista de Calidad PlanERP |  |
| 106 | 2.3.8 | HITO: FINALIZACION ETAPA 3 | milestone | 0d | 2018-09-17 A | 2018-09-17 A | 105FS+1d | 100% |  | 25% |

Notes:
- 83: · Todos los casos de prueba han sido completados exitosamente
- 100: · Se revisan los resultados de las pruebas y los cambios requeridos / · Se actualiza el plan del proyecto
- 102: · Se define el plan de la Salida a Producción
- 103: · Se definen todos los procedimientos y contactos de soporte
- 104: · Se designa al administrador del Sistema, se definen sus tareas y responsabilidades
- 105: · Obtener la firma de finalización de la fase del proyecto

| ID | WBS | Task | Duration | Start | Finish | Predecessors | Complete | Resources |
| --- | --- | --- | --- | --- | --- | --- | --- | --- |
| 107 | 2.4 | **ETAPA 4: Preparación Final previo Despliegue en Producción - Módulos SC y AC** | 0d | 2018-09-17 A | 2018-10-11 A |  | 100% |  |
| 108 | 2.4.1 | **Gestión General del Proyecto** | 0d | 2018-09-17 A | 2018-09-18 A |  | 100% |  |
| 109 | 2.4.1.1 | Confirmar el Plan de Entrenamiento | 0d | 2018-09-17 A | 2018-09-18 A | 105FS+1d | 100% | Administrador de Contrato - Cliente; Funcionarios Técnicos - Cliente; Gerente de Proyecto PlanERP; Líder del Proyecto/Desarrollo PlanERP |
| 110 | 2.4.1.2 | Finalizar plan de Salida a Producción | 0d | 2018-09-18 A | 2018-09-18 A | 109FS+2h | 100% | Administrador de Contrato - Cliente; Funcionarios Técnicos - Cliente; Gerente de Proyecto PlanERP; Líder del Proyecto/Desarrollo PlanERP; Analista de Calidad PlanERP |
| 111 | 2.4.2 | **Entrenamiento en Modulos de Areas Funcionales Fase 1** | 0d | 2018-09-18 A | 2018-10-08 A | 108FS+0.57d | 100% |  |
| 112 | 2.4.2.1 | **Entrenamiento de Usuarios Funcionales y Certificación de Procesos** | 0d | 2018-09-18 A | 2018-10-02 A | 110FS+2h | 100% | Líder Funcional - Usuario Experto - Cliente; Usuarios Finales - Cliente; Funcionarios Técnicos - Cliente; Analista Procesos PlanERP; Desarrollador PlanERP; Consultor Especialista en Procesos de GADs PlanERP |
| 113 | 2.4.2.1.1 | 1 Dirección de Desarrollo Territorial (No incluye Catastro) | 0d | 2018-09-18 A | 2018-09-19 A |  | 100% |  |
| 114 | 2.4.2.1.2 | 4 Dirección de Justicia y Vigilancia | 0d | 2018-09-19 A | 2018-09-20 A | 113FS+1d | 100% |  |
| 115 | 2.4.2.1.3 | 5 Dirección de Desarrollo Humano y Social | 0d | 2018-09-20 A | 2018-09-21 A | 114FS+1d | 100% |  |
| 116 | 2.4.2.1.4 | 8.3 Rentas | 0d | 2018-09-21 A | 2018-09-21 A | 115FS+1d | 100% |  |
| 117 | 2.4.2.1.5 | 8.4 Tesorería | 0d | 2018-09-21 A | 2018-09-24 A | 116FS+1d | 100% |  |
| 118 | 2.4.2.1.6 | 9.1 Mercados | 0d | 2018-09-24 A | 2018-09-25 A | 117FS+1d | 100% |  |
| 119 | 2.4.2.1.7 | 9.2 Cementerio | 0d | 2018-09-25 A | 2018-09-25 A | 118FS+0.5d | 100% |  |
| 120 | 2.4.2.1.8 | 9.3 Camal | 0d | 2018-09-25 A | 2018-09-26 A | 119FS+0.5d | 100% |  |
| 121 | 2.4.2.1.9 | 10 Registro de la Propiedad y Mercantil | 0d | 2018-09-26 A | 2018-09-26 A | 120FS+0.5d | 100% |  |
| 122 | 2.4.2.1.10 | 11 Administración de bomberos | 0d | 2018-09-27 A | 2018-09-27 A | 121FS+1d | 100% |  |
| 123 | 2.4.2.1.11 | 12 CRM para ciudadanos. Ventanilla Única | 0d | 2018-09-27 A | 2018-09-28 A | 122FS+0.5d | 100% |  |
| 124 | 2.4.2.1.12 | 15.1 BI Desarrollo Territorial | 0d | 2018-09-28 A | 2018-09-28 A | 123FS+1d | 100% |  |
| 125 | 2.4.2.1.13 | 15.5 BI Obras Públicas Municipales | 0d | 2018-09-28 A | 2018-10-01 A | 124FS+0.5d | 100% |  |
| 126 | 2.4.2.1.14 | 15.7 BI Registro de la Propiedad y Mercantil | 0d | 2018-10-01 A | 2018-10-01 A | 125FS+0.5d | 100% |  |
| 127 | 2.4.2.1.15 | 16.1 Consultas Portal Web | 0d | 2018-10-01 A | 2018-10-02 A | 126FS+0.5d | 100% |  |
| 128 | 2.4.2.1.16 | 16.2 Aplicación para móviles (APP) | 0d | 2018-10-02 A | 2018-10-02 A | 127FS+1d | 100% |  |
| 129 | 2.4.2.2 | Entrenamiento de Usuario Técnicos | 0d | 2018-10-02 A | 2018-10-08 A | 128FS+0.5d, 99FS+1h, 79FS+1h, 30FS+2h | 100% | Funcionarios Técnicos - Cliente; Desarrollador PlanERP; Especialista Base de Datos PlanERP; Líder del Proyecto/Desarrollo PlanERP |
| 130 | 2.4.3 | **Preparación del Sistema** | 0d | 2018-10-08 A | 2018-10-09 A | 111FS+16d | 100% |  |
| 131 | 2.4.3.1 | Completar la Administración del Sistema | 0d | 2018-10-08 A | 2018-10-08 A |  | 100% | Funcionarios Técnicos - Cliente; Desarrollador PlanERP; Analista Procesos PlanERP |
| 132 | 2.4.3.2 | Comprobación de la Puesta a Producción | 0d | 2018-10-08 A | 2018-10-09 A | 131FS+3h | 100% | Funcionarios Técnicos - Cliente; Administrador de Contrato - Cliente; Analista de Calidad PlanERP; Líder del Proyecto/Desarrollo PlanERP |

Notes:
- 109: · El plan y cronograma de entrenamiento es confirmado y comunicado a los usuarios
- 110: · El plan de salida a producción es confirmado y comunicado a los usuarios finales
- 112: · Se entrena a los usuarios principales
- 129: · Se entrena al administrador del sistema
- 131: · Completar todas las configuraciones administrativas / · Completar todas las configuraciones/instalaciones del cliente
- 132: · Se completa la lista de comprobación de Puesta en Producción

| ID | WBS | Task | Type | Duration | Start | Finish | Predecessors | Complete | Constraint | Resources | Porcentage Avance |
| --- | --- | --- | --- | --- | --- | --- | --- | --- | --- | --- | --- |
| 133 | 2.4.4 | **Transición** |  | 0d | 2018-10-09 A | 2018-10-11 A | 130FS+0.86d | 100% |  |  |  |
| 134 | 2.4.4.1 | Finalizar Procesamiento de Sistemas Legados |  | 0d | 2018-10-09 A | 2018-10-09 A |  | 100% |  | Administrador de Contrato - Cliente; Líder Funcional - Usuario Experto - Cliente; Desarrollador PlanERP; Líder del Proyecto/Desarrollo PlanERP; Especialista Base de Datos PlanERP |  |
| 135 | 2.4.4.2 | Realizar la Salida a Producción - Carga Inicial y Configuración Inicial |  | 0d | 2018-10-09 A | 2018-10-11 A | 134FS+1h | 100% |  | Administrador de Contrato - Cliente; Líder Funcional - Usuario Experto - Cliente; Desarrollador PlanERP; Líder del Proyecto/Desarrollo PlanERP; Especialista Base de Datos PlanERP |  |
| 136 | 2.4.5 | Revisar la ETAPA del Proyecto |  | 0d | 2018-10-11 A | 2018-10-11 A | 133FS+2.14d | 100% |  | Administrador de Contrato - Cliente; Gerente de Proyecto PlanERP; Líder del Proyecto/Desarrollo PlanERP; Analista de Calidad PlanERP |  |
| 137 | 2.4.6 | HITO: FINALIZACION ETAPA 4 | milestone | 0d | 2018-10-11 A | 2018-10-11 A | 136FS+2h | 100% |  |  | 35% |
| 138 | 2.5 | **ETAPA 5: Despliegue en Producción y Soporte Técnico - Módulos SC y AC** |  | 0d | 2018-10-11 A | 2018-11-16 A | 107FS+19.86d | 100% |  |  |  |
| 139 | 2.5.1 | **Soporte en Producción** |  | 0d | 2018-10-11 A | 2018-11-16 A |  | 100% |  |  |  |
| 140 | 2.5.1.1 | Soporte durante la Salida a Producción |  | 0d | 2018-10-11 A | 2018-11-16 A | 136FS+2h | 100% |  | Funcionarios Técnicos - Cliente; Desarrollador PlanERP; Analista Procesos PlanERP; Especialista Base de Datos PlanERP; Consultor Especialista en Procesos de GADs PlanERP |  |
| 141 | 2.5.1.2 | Resolver incidentes críticos |  | 0d | 2018-10-11 A | 2018-11-05 A | 136FS+2h | 100% |  | Funcionarios Técnicos - Cliente; Desarrollador PlanERP; Analista Procesos PlanERP; Especialista Base de Datos PlanERP; Consultor Especialista en Procesos de GADs PlanERP |  |
| 142 | 2.5.1.3 | Entregar el soporte y Administración al cliente |  | 0d | 2018-10-11 A | 2018-10-12 A |  | 100% |  | Funcionarios Técnicos - Cliente; Desarrollador PlanERP; Analista Procesos PlanERP; Especialista Base de Datos PlanERP; Consultor Especialista en Procesos de GADs PlanERP |  |
| 143 | 2.5.2 | **Mejora Continua** |  | 0d | 2018-10-11 A | 2018-10-24 A |  | 100% |  |  |  |
| 144 | 2.5.2.1 | Monitoreo del Sistema y Acompañamiento ETAPA1 |  | 0d | 2018-10-11 A | 2018-10-24 A | 136FS+2h | 100% |  | Administrador de Contrato - Cliente; Funcionarios Técnicos - Cliente; Líder Funcional - Usuario Experto - Cliente; Especialista Base de Datos PlanERP; Líder del Proyecto/Desarrollo PlanERP; Consultor Especialista en Procesos de GADs PlanERP |  |
| 145 | 2.5.2.2 | Ajustes y Configuraciones finales al Software acorde a necesidades Entidad |  | 0d | 2018-10-11 A | 2018-10-24 A | 136FS+2h | 100% |  | Administrador de Contrato - Cliente; Funcionarios Técnicos - Cliente; Líder Funcional - Usuario Experto - Cliente; Especialista Base de Datos PlanERP; Líder del Proyecto/Desarrollo PlanERP; Consultor Especialista en Procesos de GADs PlanERP |  |
| 146 | 2.5.3 | **Cierre de la ETAPA 5** |  | 0d | 2018-10-24 A | 2018-10-24 A |  | 100% |  |  |  |
| 147 | 2.5.3.1 | Reunión de Cierre de la ETAPA 5 |  | 0d | 2018-10-24 A | 2018-10-24 A | 143FS+10d | 100% |  | Administrador de Contrato - Cliente; Líder Funcional - Usuario Experto - Cliente; Funcionarios Técnicos - Cliente; Gerente de Proyecto PlanERP; Líder del Proyecto/Desarrollo PlanERP; Analista de Calidad PlanERP |  |
| 148 | 2.5.4 | HITO: FIN DE LA ETAPA 5 | milestone | 0d | 2018-10-24 A | 2018-10-24 A | 147FS+2h | 100% |  |  | 40% |
| 149 | 2.6 | **ETAPA 6: Estabilización, Apoyo Emisión 2019 y Desarrollo de funcionalidades no establecidas en el Alcance Contractual** |  | 0d | 2018-11-16 A | 2019-01-25 A |  | 100% |  |  |  |
| 150 | 2.6.1 | Depuración de Errores de Calidad de Información fuente migrada (Base Oracle) |  | 0d | 2018-11-16 A | 2018-12-24 A | 138FS+30d | 100% |  |  |  |
| 151 | 2.6.2 | Soporte y Mantenimiento de Módulos de la Fase 1 |  | 0d | 2018-11-16 A | 2018-12-24 A | 138FS+30d | 100% |  |  |  |
| 152 | 2.6.3 | Adaptaciones a Software para incluir Nuevas funcionalidades no contempladas en alcance proyecto |  | 0d | 2018-11-16 A | 2018-12-24 A | 138FS+30d | 100% |  |  |  |
| 153 | 2.6.4 | Implementación de Licencia temporal de Modulo de Catastro Urbano SIIM |  | 0d | 2018-12-03 A | 2018-12-26 A |  | 100% | start no earlier than 2018-12-03 |  |  |
| 154 | 2.6.5 | Migración de información de Emisión de Impuestos de Catastro Urbano 2019 |  | 0d | 2018-12-03 A | 2018-12-26 A |  | 100% | start no earlier than 2018-12-03 |  |  |
| 155 | 2.6.6 | Creación de interfaces mediante ETLs para integración entre Sistema Oracle y SIIM para la recaudación de Impuestos 2019 de Catastro Urbano |  | 0d | 2018-12-03 A | 2018-12-26 A |  | 100% | start no earlier than 2018-12-03 |  |  |
| 156 | 2.6.7 | Soporte en Recaudación de Impuestos de Catastro urbano y mejoras 2019 |  | 0d | 2018-12-26 A | 2019-01-25 A | 155FS+20d | 100% |  |  |  |

Notes:
- 134: · Se completa el mantenimiento de las transacciones y datos maestros de sistemas legados, la noche previa a la salida a producción / · Se documentan los cambios significativos desde la ultima corrida de migración de datos y han sido importados al SIIM
- 135: · Los balances de apertura son transferidos en el SIIM / · Los procesos piloto son completados exitosamente en el SIIM, de acuerdo a la lista de comprobación de la Salida a Producción / · Se crean/actualizan los manuales de usuario / · Se entrega al cliente el usuario para hacer al portal de soporte del SIIM
- 136: · Obtener la firma de finalización de la fase del proyecto
- 140: · El consultor del SIIM resuelve de manera inmediata cualquier incidente
- 141: · Se resuelve cualquier incidente critico excepcional
- 142: · El equipo técnico del cliente asume el soporte y administración del sistema / · La lista de comprobación de la Salida a Producción es completada en el portal del SIIM, para activar el soporte
- 144: · Se registran todos los incidentes / · Se registran las mejoras al rendimiento, funcionalidad, usabilidad, etc.
- 147: · Se revisa el plan del proyecto / · Se completan todos los hitos de manera exitosa / · Se agenda la reunión de "Revisión y Optimización" / · El cliente firma la aceptación final del proyecto

| ID | WBS | Task | Type | Duration | Start | Finish | Predecessors | Complete | Constraint | Resources | Porcentage Avance |
| --- | --- | --- | --- | --- | --- | --- | --- | --- | --- | --- | --- |
| 157 | 2.6.8 | **Cierre de la FASE 1** |  | 0d | 2019-01-25 A | 2019-01-25 A |  | 100% |  |  |  |
| 158 | 2.6.8.1 | Reunión de Cierre de la FASE 1 |  | 0d | 2019-01-25 A | 2019-01-25 A | 156FS+25d | 100% |  | Administrador de Contrato - Cliente; Líder Funcional - Usuario Experto - Cliente; Funcionarios Técnicos - Cliente; Gerente de Proyecto PlanERP; Líder del Proyecto/Desarrollo PlanERP; Analista de Calidad PlanERP |  |
| 159 | 2.6.8.2 | HITO: FIN DE LA FASE 1 | milestone | 0d | 2019-01-25 A | 2019-01-25 A | 158FS+2h | 100% |  |  | 50% |
| 160 | 3 | **FASE 2: Implementación de Módulos de Planificación de Recursos Institucionales - PRI** |  | 0d | 2019-01-25 A | 2019-05-14 |  | 74% |  |  |  |
| 161 | 3.1 | **ETAPA 1: Instalación del SIIM - Módulos PRI** |  | 0d | 2019-01-25 A | 2019-01-31 |  | 99% |  |  |  |
| 162 | 3.1.1 | **Entrega e Instalación del Software** |  | 0d | 2019-01-25 A | 2019-01-30 A |  | 100% |  |  |  |
| 163 | 3.1.1.1 | **Instalar SIIM en Servidor** |  | 0d | 2019-01-25 A | 2019-01-30 A |  | 100% |  | Funcionarios Técnicos - Cliente |  |
| 164 | 3.1.1.1.1 | **Instalar Módulos PRI** |  | 0d | 2019-01-25 A | 2019-01-30 A | 149FS+57.29d | 100% |  | Funcionarios Técnicos - Cliente; Desarrollador PlanERP; Líder del Proyecto/Desarrollo PlanERP |  |
| 165 | 3.1.1.1.1.1 | 2.1 Administración Técnica |  | 0d | 2019-01-25 A | 2019-01-25 A |  | 100% |  |  |  |
| 166 | 3.1.1.1.1.2 | 2.2 Salud Ocupacional y Riesgos |  | 0d | 2019-01-25 A | 2019-01-28 A | 165FS+2h | 100% |  |  |  |
| 167 | 3.1.1.1.1.3 | 3.2 Adquisiciones |  | 0d | 2019-01-28 A | 2019-01-28 A | 166FS+2h | 100% |  |  |  |
| 168 | 3.1.1.1.1.4 | 6.1 Administración de Bienes |  | 0d | 2019-01-28 A | 2019-01-28 A | 167FS+2h | 100% |  |  |  |
| 169 | 3.1.1.1.1.5 | 8.1 Contabilidad |  | 0d | 2019-01-28 A | 2019-01-28 A | 168FS+2h | 100% |  |  |  |
| 170 | 3.1.1.1.1.6 | 8.2 Presupuestos |  | 0d | 2019-01-28 A | 2019-01-29 A | 169FS+2h | 100% |  |  |  |
| 171 | 3.1.1.1.1.7 | 13 CRM para Urbanizaciones |  | 0d | 2019-01-29 A | 2019-01-29 A | 170FS+2h | 100% |  |  |  |
| 172 | 3.1.1.1.1.8 | 14 Dirección de Planificación Institucional (Incluye control de proyectos de Obras Públicas |  | 0d | 2019-01-29 A | 2019-01-29 A | 171FS+2h | 100% |  |  |  |
| 173 | 3.1.1.1.1.9 | 15.6 Servicios Corporativos |  | 0d | 2019-01-29 A | 2019-01-29 A | 172FS+2h | 100% |  |  |  |
| 174 | 3.1.1.1.1.10 | 15.8 BI Planificación Institucional |  | 0d | 2019-01-29 A | 2019-01-30 A | 173FS+2h | 100% |  |  |  |
| 175 | 3.1.1.2 | Entrega de Software |  | 0d | 2019-01-30 A | 2019-01-30 A | 163FS+2.86d | 100% | finish no earlier than 2018-04-10 | Gerente de Proyecto PlanERP; Administrador de Contrato - Cliente |  |
| 176 | 3.1.2 | Revisar la ETAPA del Proyecto |  | 0d | 2019-01-30 A | 2019-01-31 A | 162FS+3.14d | 100% | finish no earlier than 2018-04-10 | Administrador de Contrato - Cliente; Gerente de Proyecto PlanERP; Analista de Calidad PlanERP |  |
| 177 | 3.1.3 | HITO: FINALIZACION ETAPA 1 | milestone | 0d | 2019-01-31 | 2019-01-31 | 176FS+1d |  | finish no earlier than 2018-04-10 |  | 53% |
| 178 | 3.2 | **ETAPA 2: Levantamiento de Características Institucionales - Módulos PRI** |  | 0d | 2019-01-31 A | 2019-02-11 | 161FS+4.14d | 99% |  |  |  |
| 179 | 3.2.1 | **Actividades de Gestión del Proyecto** |  | 0d | 2019-01-31 A | 2019-01-31 A |  | 100% |  |  |  |
| 180 | 3.2.1.1 | Revisión del Plan del Proyecto |  | 0d | 2019-01-31 A | 2019-01-31 A |  | 100% | finish no earlier than 2018-04-11 | Administrador de Contrato - Cliente; Gerente de Proyecto PlanERP |  |
| 181 | 3.2.1.2 | Programar talleres de requerimientos de Entidad |  | 0d | 2019-01-31 A | 2019-01-31 A | 180FS+2h | 100% | finish no earlier than 2018-04-11 | Administrador de Contrato - Cliente; Gerente de Proyecto PlanERP |  |

| ID | WBS | Task | Type | Duration | Start | Finish | Predecessors | Complete | Constraint | Resources | Porcentage Avance |
| --- | --- | --- | --- | --- | --- | --- | --- | --- | --- | --- | --- |
| 182 | 3.2.2 | **Sesiones de Requerimientos del Entidad** |  | 0d | 2019-01-31 A | 2019-02-08 A | 179FS+0.57d | 100% |  |  |  |
| 183 | 3.2.2.1 | Conducir Sesiones de Requerimientos |  | 0d | 2019-01-31 A | 2019-02-07 A |  | 100% | finish no earlier than 2018-04-17 | Funcionarios Técnicos - Cliente; Analista Procesos PlanERP; Consultor Especialista en Procesos de GADs PlanERP |  |
| 184 | 3.2.2.2 | Crear Documento de Características del Entidad |  | 0d | 2019-02-07 A | 2019-02-08 A | 183FS+5d | 100% | finish no earlier than 2018-04-18 | Analista Procesos PlanERP; Funcionarios Técnicos - Cliente; Consultor Especialista en Procesos de GADs PlanERP |  |
| 185 | 3.2.3 | **Revisar el Documento de Características del Entidad** |  | 0d | 2019-02-08 A | 2019-02-08 A | 182FS+6d | 100% |  |  |  |
| 186 | 3.2.3.1 | Revisar el Documento de Características del Entidad |  | 0d | 2019-02-08 A | 2019-02-08 A |  | 100% | finish no earlier than 2018-04-19 | Administrador de Contrato - Cliente; Gerente de Proyecto PlanERP; Analista de Calidad PlanERP; Consultor Especialista en Procesos de GADs PlanERP; Analista Procesos PlanERP |  |
| 187 | 3.2.3.2 | Revisar el Plan del Proyecto |  | 0d | 2019-02-08 A | 2019-02-08 A | 186FS+4h | 100% | finish no earlier than 2018-04-19 | Administrador de Contrato - Cliente; Gerente de Proyecto PlanERP |  |
| 188 | 3.2.4 | Revisar la ETAPA del Proyecto |  | 0d | 2019-02-08 A | 2019-02-11 A | 185FS+1d | 100% | finish no earlier than 2018-04-20 | Administrador de Contrato - Cliente; Gerente de Proyecto PlanERP; Líder del Proyecto/Desarrollo PlanERP; Analista de Calidad PlanERP |  |
| 189 | 3.2.5 | HITO: FINALIZACION ETAPA 2 | milestone | 0d | 2019-02-11 | 2019-02-11 | 188FS+1d |  | finish no earlier than 2018-04-20 |  | 55% |
| 190 | 3.3 | **ETAPA 3: Migración de Datos, Configuración y Pruebas de Operación de Módulos - Módulos PRI** |  | 0d | 2019-02-11 A | 2019-03-25 | 178FS+8.57d | 50% |  |  |  |
| 191 | 3.3.1 | **Gestión General del Proyecto** |  | 0d | 2019-02-11 A | 2019-02-13 A |  | 100% |  |  |  |
| 192 | 3.3.1.1 | Planificar cambio Organizacional |  | 0d | 2019-02-11 A | 2019-02-12 A |  | 100% | finish no earlier than 2018-04-20 | Administrador de Contrato - Cliente; Gerente de Proyecto PlanERP; Líder del Proyecto/Desarrollo PlanERP |  |
| 193 | 3.3.1.2 | Planificar Entrenamiento a Usuarios Finales |  | 0d | 2019-02-12 A | 2019-02-12 A | 192FS+3h | 100% | finish no earlier than 2018-04-20 | Administrador de Contrato - Cliente; Gerente de Proyecto PlanERP; Líder del Proyecto/Desarrollo PlanERP |  |
| 194 | 3.3.1.3 | Definir y Preparar la Migración de Datos |  | 0d | 2019-02-12 A | 2019-02-13 A | 193FS+4h | 100% | finish no earlier than 2018-04-20 | Funcionarios Técnicos - Cliente; Líder del Proyecto/Desarrollo PlanERP; Especialista Base de Datos PlanERP |  |
| 195 | 3.3.2 | **Configuración del Sistema en Producción** |  | 0d | 2019-02-13 A | 2019-03-08 | 191FS+1.57d | 62% |  |  |  |
| 196 | 3.3.2.1 | Instalar el SIIM en Producción |  | 0d | 2019-02-13 A | 2019-02-13 A |  | 100% | finish no earlier than 2018-04-20 | Funcionarios Técnicos - Cliente; Analista Procesos PlanERP; Desarrollador PlanERP; Líder del Proyecto/Desarrollo PlanERP; Especialista Base de Datos PlanERP |  |
| 197 | 3.3.2.2 | Configurar Inicialización del Sistema |  | 0d | 2019-02-13 A | 2019-02-14 A | 196FS+4h | 100% | finish no earlier than 2018-04-23 | Funcionarios Técnicos - Cliente; Analista Procesos PlanERP; Desarrollador PlanERP; Líder del Proyecto/Desarrollo PlanERP; Especialista Base de Datos PlanERP |  |
| 198 | 3.3.2.3 | Realizar la Migración de Datos |  | 0d | 2019-02-14 A | 2019-03-01 | 197FS+1d | 50% | finish no earlier than 2018-05-23 | Funcionarios Técnicos - Cliente; Analista Procesos PlanERP; Desarrollador PlanERP; Líder del Proyecto/Desarrollo PlanERP; Especialista Base de Datos PlanERP |  |
| 199 | 3.3.2.4 | Desarrollar Adaptaciones al Software |  | 0d | 2019-03-01 A | 2019-03-05 | 198FS+13d | 50% | finish no earlier than 2018-04-27 | Funcionarios Técnicos - Cliente; Analista Procesos PlanERP; Desarrollador PlanERP; Líder del Proyecto/Desarrollo PlanERP; Especialista Base de Datos PlanERP |  |
| 200 | 3.3.2.5 | Configuración del Sistema en base al Documento de Características del Entidad |  | 0d | 2019-03-05 A | 2019-03-06 A | 199FS+2d | 100% | finish no earlier than 2018-05-01 | Funcionarios Técnicos - Cliente; Analista Procesos PlanERP; Desarrollador PlanERP; Líder del Proyecto/Desarrollo PlanERP; Especialista Base de Datos PlanERP |  |
| 201 | 3.3.2.6 | Configurar Interfaces |  | 0d | 2019-03-06 A | 2019-03-07 A | 200FS+1d | 100% | finish no earlier than 2018-05-02 | Funcionarios Técnicos - Cliente; Analista Procesos PlanERP; Desarrollador PlanERP; Líder del Proyecto/Desarrollo PlanERP; Especialista Base de Datos PlanERP |  |
| 202 | 3.3.2.7 | Configurar Usuarios y Autorizaciones |  | 0d | 2019-03-07 A | 2019-03-08 A | 201FS+1d | 100% | finish no earlier than 2018-05-03 | Funcionarios Técnicos - Cliente; Analista Procesos PlanERP; Desarrollador PlanERP; Líder del Proyecto/Desarrollo PlanERP; Especialista Base de Datos PlanERP |  |
| 203 | 3.3.3 | **Gestión del Cambio Organizacional** |  | 0d | 2019-03-08 A | 2019-03-08 A | 195FS+19.57d | 100% |  |  |  |
| 204 | 3.3.3.1 | Conducir la comunicación de la Gestión de Cambios (si es aplicable) |  | 0d | 2019-03-08 A | 2019-03-08 A |  | 100% | finish no earlier than 2018-05-04 | Administrador de Contrato - Cliente; Líder Funcional - Usuario Experto - Cliente; Gerente de Proyecto PlanERP; Consultor Especialista en Procesos de GADs PlanERP |  |
| 205 | 3.3.4 | **Pruebas de validación del Sistema** |  | 0d | 2019-03-08 A | 2019-03-14 | 203FS+0.29d | 13% |  |  |  |
| 206 | 3.3.4.1 | Mantener la Lista Maestra de Procesos de Entidad |  | 0d | 2019-03-08 A | 2019-03-11 A |  | 100% | finish no earlier than 2018-05-04 | Líder Funcional - Usuario Experto - Cliente; Gerente de Proyecto PlanERP; Líder del Proyecto/Desarrollo PlanERP; Analista Procesos PlanERP; Consultor Especialista en Procesos de GADs PlanERP |  |

| ID | WBS | Task | Duration | Start | Finish | Predecessors | Complete | Constraint | Resources |
| --- | --- | --- | --- | --- | --- | --- | --- | --- | --- |
| 207 | 3.3.4.2 | **Conducir Talleres de Validación** | 0d | 2019-03-11 | 2019-03-14 | 206FS+4h |  |  | Líder Funcional - Usuario Experto - Cliente; Analista Procesos PlanERP; Analista de Calidad PlanERP; Consultor Especialista en Procesos de GADs PlanERP |
| 208 | 3.3.4.2.1 | 2.1 Administración Técnica | 0d | 2019-03-11 | 2019-03-11 |  |  |  |  |
| 209 | 3.3.4.2.2 | 2.2 Salud Ocupacional y Riesgos | 0d | 2019-03-11 | 2019-03-11 | 208FS+4h |  |  |  |
| 210 | 3.3.4.2.3 | 3.2 Adquisiciones | 0d | 2019-03-11 | 2019-03-12 | 209FS+2h |  |  |  |
| 211 | 3.3.4.2.4 | 6.1 Administración de Bienes | 0d | 2019-03-12 | 2019-03-12 | 210FS+4h |  |  |  |
| 212 | 3.3.4.2.5 | 8.1 Contabilidad | 0d | 2019-03-12 | 2019-03-13 | 211FS+2h |  |  |  |
| 213 | 3.3.4.2.6 | 8.2 Presupuestos | 0d | 2019-03-13 | 2019-03-13 | 212FS+4h |  |  |  |
| 214 | 3.3.4.2.7 | 13 CRM para Urbanizaciones | 0d | 2019-03-13 | 2019-03-13 | 213FS+4h |  |  |  |
| 215 | 3.3.4.2.8 | 14 Dirección de Planificación Institucional (Incluye control de proyectos de Obras Públicas) | 0d | 2019-03-13 | 2019-03-14 | 214FS+2h |  |  |  |
| 216 | 3.3.4.2.9 | 15.6 BI Servicios Corporativos | 0d | 2019-03-14 | 2019-03-14 | 215FS+2h |  |  |  |
| 217 | 3.3.4.2.10 | 15.8 BI Planificación Institucional | 0d | 2019-03-14 | 2019-03-14 | 216FS+2h |  |  |  |
| 218 | 3.3.5 | **Pruebas de aceptacion del Sistema** | 0d | 2019-03-14 A | 2019-03-21 | 205FS+4.57d | 11% |  |  |
| 219 | 3.3.5.1 | Definir casos de prueba y alcance | 0d | 2019-03-14 A | 2019-03-14 |  | 50% | finish no earlier than 2018-05-09 | Líder Funcional - Usuario Experto - Cliente; Líder del Proyecto/Desarrollo PlanERP; Analista de Calidad PlanERP; Funcionarios Técnicos - Cliente |
| 220 | 3.3.5.2 | Preparar ambiente de pruebas | 0d | 2019-03-14 A | 2019-03-15 | 219FS+3h | 50% | finish no earlier than 2018-05-10 | Funcionarios Técnicos - Cliente; Líder Funcional - Usuario Experto - Cliente; Líder del Proyecto/Desarrollo PlanERP; Analista de Calidad PlanERP |
| 221 | 3.3.5.3 | **Ejecutar el plan de pruebas** | 0d | 2019-03-15 | 2019-03-21 | 220FS+1d |  |  | Líder Funcional - Usuario Experto - Cliente; Líder del Proyecto/Desarrollo PlanERP; Analista de Calidad PlanERP; Funcionarios Técnicos - Cliente; Consultor Especialista en Procesos de GADs PlanERP |
| 222 | 3.3.5.3.1 | 2.1 Administración Técnica | 0d | 2019-03-15 | 2019-03-18 |  |  |  |  |
| 223 | 3.3.5.3.2 | 2.2 Salud Ocupacional y Riesgos | 0d | 2019-03-18 | 2019-03-18 | 222FS+4h |  |  |  |
| 224 | 3.3.5.3.3 | 3.2 Adquisiciones | 0d | 2019-03-18 | 2019-03-19 | 223FS+2h |  |  |  |
| 225 | 3.3.5.3.4 | 6.1 Administración de Bienes | 0d | 2019-03-19 | 2019-03-19 | 224FS+4h |  |  |  |
| 226 | 3.3.5.3.5 | 8.1 Contabilidad | 0d | 2019-03-19 | 2019-03-19 | 225FS+2h |  |  |  |
| 227 | 3.3.5.3.6 | 8.2 Presupuestos | 0d | 2019-03-19 | 2019-03-20 | 226FS+4h |  |  |  |
| 228 | 3.3.5.3.7 | 13 CRM para Urbanizaciones | 0d | 2019-03-20 | 2019-03-20 | 227FS+4h |  |  |  |
| 229 | 3.3.5.3.8 | 14 Dirección de Planificación Institucional (Incluye control de proyectos de Obras Públicas) | 0d | 2019-03-20 | 2019-03-20 | 228FS+2h |  |  |  |
| 230 | 3.3.5.3.9 | 15.6 BI Servicios Corporativos | 0d | 2019-03-20 | 2019-03-21 | 229FS+2h |  |  |  |
| 231 | 3.3.5.3.10 | 15.8 BI Planificación Institucional | 0d | 2019-03-21 | 2019-03-21 | 230FS+2h |  |  |  |
| 232 | 3.3.5.4 | Revisar los resultados de las pruebas y necesidades de cambios | 0d | 2019-03-14 | 2019-03-15 |  |  | finish no earlier than 2018-05-14 | Administrador de Contrato - Cliente; Gerente de Proyecto PlanERP; Analista de Calidad PlanERP; Consultor Especialista en Procesos de GADs PlanERP |

| ID | WBS | Task | Type | Duration | Start | Finish | Predecessors | Complete | Constraint | Resources | Porcentage Avance |
| --- | --- | --- | --- | --- | --- | --- | --- | --- | --- | --- | --- |
| 233 | 3.3.6 | **Planificar Salida a Producción y Soporte** |  | 0d | 2019-03-21 A | 2019-03-22 A | 218FS+5.43d | 100% |  |  |  |
| 234 | 3.3.6.1 | Definir Plan de Salida a Producción |  | 0d | 2019-03-21 A | 2019-03-21 A |  | 100% | finish no earlier than 2018-05-15 | Administrador de Contrato - Cliente; Líder Funcional - Usuario Experto - Cliente; Gerente de Proyecto PlanERP; Líder del Proyecto/Desarrollo PlanERP |  |
| 235 | 3.3.6.2 | Planificar Estrategia de Soporte |  | 0d | 2019-03-21 A | 2019-03-22 A | 234FS+3h | 100% | finish no earlier than 2018-05-15 | Administrador de Contrato - Cliente; Líder Funcional - Usuario Experto - Cliente; Gerente de Proyecto PlanERP; Líder del Proyecto/Desarrollo PlanERP |  |
| 236 | 3.3.6.3 | Planificar Administración del Sistema |  | 0d | 2019-03-22 A | 2019-03-22 A | 235FS+3h | 100% | finish no earlier than 2018-05-15 | Administrador de Contrato - Cliente; Líder Funcional - Usuario Experto - Cliente; Gerente de Proyecto PlanERP; Líder del Proyecto/Desarrollo PlanERP |  |
| 237 | 3.3.7 | Revisar la ETAPA del Proyecto |  | 0d | 2019-03-22 A | 2019-03-25 A | 233FS+1.29d | 100% | finish no earlier than 2018-05-15 | Administrador de Contrato - Cliente; Gerente de Proyecto PlanERP; Líder del Proyecto/Desarrollo PlanERP; Analista de Calidad PlanERP |  |
| 238 | 3.3.8 | HITO: FINALIZACION ETAPA 3 | milestone | 0d | 2019-03-25 | 2019-03-25 | 237FS+1d |  | finish no earlier than 2018-05-15 |  | %60 |
| 239 | 3.4 | **ETAPA 4: Preparación Final previo Despliegue en Producción - Módulos PRI** |  | 0d | 2019-03-25 A | 2019-04-08 | 190FS+33.71d | 19% |  |  |  |
| 240 | 3.4.1 | **Gestión General del Proyecto** |  | 0d | 2019-03-25 A | 2019-03-26 |  | 50% |  |  |  |
| 241 | 3.4.1.1 | Confirmar el Plan de Entrenamiento |  | 0d | 2019-03-25 A | 2019-03-25 |  | 50% | finish no earlier than 2018-05-16 | Administrador de Contrato - Cliente; Funcionarios Técnicos - Cliente; Gerente de Proyecto PlanERP; Líder del Proyecto/Desarrollo PlanERP |  |
| 242 | 3.4.1.2 | Finalizar plan de Salida a Producción |  | 0d | 2019-03-25 A | 2019-03-26 | 241FS+4h | 50% | finish no earlier than 2018-05-16 | Administrador de Contrato - Cliente; Funcionarios Técnicos - Cliente; Gerente de Proyecto PlanERP; Líder del Proyecto/Desarrollo PlanERP; Analista de Calidad PlanERP |  |
| 243 | 3.4.2 | **Entrenamiento** |  | 0d | 2019-03-26 | 2019-04-02 | 240FS+1.14d |  |  |  |  |
| 244 | 3.4.2.1 | **Entrenamiento de Usuarios Funcionales y Certificación de Procesos** |  | 0d | 2019-03-26 | 2019-03-29 |  |  |  | Líder Funcional - Usuario Experto - Cliente; Usuarios Finales - Cliente; Funcionarios Técnicos - Cliente; Analista Procesos PlanERP; Desarrollador PlanERP; Consultor Especialista en Procesos de GADs PlanERP |  |
| 245 | 3.4.2.1.1 | 2.1 Administración Técnica |  | 0d | 2019-03-26 | 2019-03-26 |  |  |  |  |  |
| 246 | 3.4.2.1.2 | 2.2 Salud Ocupacional y Riesgos |  | 0d | 2019-03-26 | 2019-03-27 | 245FS+4h |  |  |  |  |
| 247 | 3.4.2.1.3 | 3.2 Adquisiciones |  | 0d | 2019-03-27 | 2019-03-27 | 246FS+2h |  |  |  |  |
| 248 | 3.4.2.1.4 | 6.1 Administración de Bienes |  | 0d | 2019-03-27 | 2019-03-27 | 247FS+4h |  |  |  |  |
| 249 | 3.4.2.1.5 | 8.1 Contabilidad |  | 0d | 2019-03-27 | 2019-03-28 | 248FS+2h |  |  |  |  |
| 250 | 3.4.2.1.6 | 8.2 Presupuestos |  | 0d | 2019-03-28 | 2019-03-28 | 249FS+4h |  |  |  |  |
| 251 | 3.4.2.1.7 | 13 CRM para Urbanizaciones |  | 0d | 2019-03-28 | 2019-03-29 | 250FS+4h |  |  |  |  |
| 252 | 3.4.2.1.8 | 14 Dirección de Planificación Institucional (Incluye control de proyectos de Obras Públicas) |  | 0d | 2019-03-29 | 2019-03-29 | 251FS+2h |  |  |  |  |
| 253 | 3.4.2.1.9 | 15.6 BI Servicios Corporativos |  | 0d | 2019-03-29 | 2019-03-29 | 252FS+2h |  |  |  |  |
| 254 | 3.4.2.1.10 | 15.8 BI Planificación Institucional |  | 0d | 2019-03-29 | 2019-03-29 | 253FS+2h |  |  |  |  |
| 255 | 3.4.2.2 | Entrenamiento de Usuario Técnicos |  | 0d | 2019-03-26 | 2019-04-02 |  |  | finish no earlier than 2018-05-21 | Funcionarios Técnicos - Cliente; Desarrollador PlanERP; Especialista Base de Datos PlanERP; Líder del Proyecto/Desarrollo PlanERP |  |
| 256 | 3.4.3 | **Preparación del Sistema** |  | 0d | 2019-04-02 A | 2019-04-03 | 243FS+6d | 50% |  |  |  |
| 257 | 3.4.3.1 | Completar la Administración del Sistema |  | 0d | 2019-04-02 A | 2019-04-03 |  | 50% | finish no earlier than 2018-05-29 | Funcionarios Técnicos - Cliente; Desarrollador PlanERP; Analista Procesos PlanERP |  |
| 258 | 3.4.3.2 | Comprobación de la Puesta a Producción |  | 0d | 2019-04-03 A | 2019-04-03 | 257FS+5h | 50% | finish no earlier than 2018-05-29 | Funcionarios Técnicos - Cliente; Administrador de Contrato - Cliente; Analista de Calidad PlanERP; Líder del Proyecto/Desarrollo PlanERP |  |

| ID | WBS | Task | Type | Duration | Start | Finish | Predecessors | Complete | Constraint | Resources | Porcentage Avance |
| --- | --- | --- | --- | --- | --- | --- | --- | --- | --- | --- | --- |
| 259 | 3.4.4 | **Transición** |  | 0d | 2019-04-03 A | 2019-04-08 | 256FS+1.43d | 50% |  |  |  |
| 260 | 3.4.4.1 | Finalizar Procesamiento de Sistemas Legados |  | 0d | 2019-04-03 A | 2019-04-04 |  | 50% | finish no earlier than 2018-05-30 | Administrador de Contrato - Cliente; Líder Funcional - Usuario Experto - Cliente; Desarrollador PlanERP; Líder del Proyecto/Desarrollo PlanERP; Especialista Base de Datos PlanERP |  |
| 261 | 3.4.4.2 | Realizar la Salida a Producción - Carga Inicial y Configuración Inicial |  | 0d | 2019-04-04 A | 2019-04-08 | 260FS+4h | 50% | finish no earlier than 2018-05-31 | Administrador de Contrato - Cliente; Líder Funcional - Usuario Experto - Cliente; Desarrollador PlanERP; Líder del Proyecto/Desarrollo PlanERP; Especialista Base de Datos PlanERP |  |
| 262 | 3.4.5 | Revisar la ETAPA del Proyecto |  | 0d | 2019-04-08 A | 2019-04-08 A | 259FS+2.57d | 100% | finish no earlier than 2018-06-01 | Administrador de Contrato - Cliente; Gerente de Proyecto PlanERP; Líder del Proyecto/Desarrollo PlanERP; Analista de Calidad PlanERP |  |
| 263 | 3.4.6 | HITO: FINALIZACION ETAPA 4 | milestone | 0d | 2019-04-08 | 2019-04-08 | 262FS+2h |  | finish no earlier than 2018-06-01 |  | 80% |
| 264 | 3.5 | **ETAPA 5: Despliegue en Producción y Soporte Técnico - Módulos PRI** |  | 0d | 2019-04-08 A | 2019-05-14 | 239FS+11.43d | 96% |  |  |  |
| 265 | 3.5.1 | **Soporte en Producción** |  | 0d | 2019-04-08 A | 2019-04-25 |  | 94% |  |  |  |
| 266 | 3.5.1.1 | Soporte durante la Salida a Producción |  | 0d | 2019-04-08 A | 2019-04-25 A |  | 100% | finish no earlier than 2018-06-06 | Funcionarios Técnicos - Cliente; Desarrollador PlanERP; Analista Procesos PlanERP; Especialista Base de Datos PlanERP; Consultor Especialista en Procesos de GADs PlanERP |  |
| 267 | 3.5.1.2 | Resolver incidentes críticos |  | 0d | 2019-04-08 A | 2019-04-25 A | 262FS+2h | 100% | finish no earlier than 2018-06-08 | Funcionarios Técnicos - Cliente; Desarrollador PlanERP; Analista Procesos PlanERP; Especialista Base de Datos PlanERP; Consultor Especialista en Procesos de GADs PlanERP |  |
| 268 | 3.5.1.3 | Entregar el soporte y Administración al cliente |  | 0d | 2019-04-08 | 2019-04-10 | 262FS+2h |  | finish no earlier than 2018-06-01 | Funcionarios Técnicos - Cliente; Desarrollador PlanERP; Analista Procesos PlanERP; Especialista Base de Datos PlanERP; Consultor Especialista en Procesos de GADs PlanERP |  |
| 269 | 3.5.2 | **Mejora Continua** |  | 0d | 2019-04-25 A | 2019-05-14 A | 265FS+15d | 100% |  |  |  |
| 270 | 3.5.2.1 | Monitoreo del Sistema y Acompañamiento ETAPA2 |  | 0d | 2019-04-25 A | 2019-05-14 A | 262FS+2h | 100% | finish no earlier than 2018-06-13 | Administrador de Contrato - Cliente; Funcionarios Técnicos - Cliente; Líder Funcional - Usuario Experto - Cliente; Especialista Base de Datos PlanERP; Líder del Proyecto/Desarrollo PlanERP; Consultor Especialista en Procesos de GADs PlanERP |  |
| 271 | 3.5.2.2 | Ajustes y Configuraciones finales al Software acorde a necesidades Entidad |  | 0d | 2019-04-25 A | 2019-05-14 A | 262FS+2h | 100% | finish no earlier than 2018-06-13 | Administrador de Contrato - Cliente; Funcionarios Técnicos - Cliente; Líder Funcional - Usuario Experto - Cliente; Especialista Base de Datos PlanERP; Líder del Proyecto/Desarrollo PlanERP; Consultor Especialista en Procesos de GADs PlanERP |  |
| 272 | 3.5.3 | **Cierre de la FASE 2** |  | 0d | 2019-05-14 A | 2019-05-14 | 269FS+15d | 50% |  |  |  |
| 273 | 3.5.3.1 | Reunión de Cierre de la FASE 2 |  | 0d | 2019-05-14 A | 2019-05-14 |  | 50% | finish no earlier than 2018-06-14 | Administrador de Contrato - Cliente; Líder Funcional - Usuario Experto - Cliente; Funcionarios Técnicos - Cliente; Gerente de Proyecto PlanERP; Líder del Proyecto/Desarrollo PlanERP; Analista de Calidad PlanERP |  |
| 274 | 3.5.4 | HITO: FIN DE LA FASE 2 | milestone | 0d | 2019-05-14 | 2019-05-14 | 272FS+0.43d |  | finish no earlier than 2018-06-14 |  | 85% |
| 275 | 4 | **FASE 3: Implementación de Módulos de Planificación de Recursos Institucionales - PRI** |  | 0d | 2019-04-08 A | 2019-07-10 |  | 24% |  |  |  |
| 276 | 4.1 | **ETAPA 1: Instalación del SIIM - Módulos PRI** |  | 0d | 2019-04-08 A | 2019-04-12 |  | 99% |  |  |  |
| 277 | 4.1.1 | **Entrega e Instalación del Software** |  | 0d | 2019-04-08 A | 2019-04-11 A |  | 100% |  |  |  |
| 278 | 4.1.1.1 | **Instalar SIIM en Servidor** |  | 0d | 2019-04-08 A | 2019-04-10 A |  | 100% |  | Funcionarios Técnicos - Cliente |  |
| 279 | 4.1.1.1.1 | Instalar Módulos PRI |  | 0d | 2019-04-08 A | 2019-04-10 A | 263 | 100% | finish no earlier than 2018-10-16 | Funcionarios Técnicos - Cliente; Desarrollador PlanERP; Líder del Proyecto/Desarrollo PlanERP |  |
| 280 | 4.1.1.2 | Entrega de Software |  | 0d | 2019-04-10 A | 2019-04-11 A | 278FS+3d | 100% | finish no earlier than 2018-10-17 | Gerente de Proyecto PlanERP; Administrador de Contrato - Cliente |  |
| 281 | 4.1.2 | Revisar la ETAPA del Proyecto |  | 0d | 2019-04-11 A | 2019-04-12 A | 277FS+3.29d | 100% | finish no earlier than 2018-10-17 | Administrador de Contrato - Cliente; Gerente de Proyecto PlanERP; Analista de Calidad PlanERP |  |
| 282 | 4.1.3 | HITO: FINALIZACION ETAPA 1 | milestone | 0d | 2019-04-12 | 2019-04-12 | 281FS+1d |  | finish no earlier than 2018-10-17 |  | 86% |

| ID | WBS | Task | Type | Duration | Start | Finish | Predecessors | Complete | Constraint | Resources | Porcentage Avance |
| --- | --- | --- | --- | --- | --- | --- | --- | --- | --- | --- | --- |
| 283 | 4.2 | **ETAPA 2: Levantamiento de Características Institucionales - Módulos PRI** |  | 0d | 2019-04-12 A | 2019-04-23 | 276FS+4.29d | 99% |  |  |  |
| 284 | 4.2.1 | **Actividades de Gestión del Proyecto** |  | 0d | 2019-04-12 A | 2019-04-12 A |  | 100% |  |  |  |
| 285 | 4.2.1.1 | Revisión del Plan del Proyecto |  | 0d | 2019-04-12 A | 2019-04-12 A |  | 100% | finish no earlier than 2018-10-18 | Administrador de Contrato - Cliente; Gerente de Proyecto PlanERP |  |
| 286 | 4.2.1.2 | Programar talleres de requerimientos de Entidad |  | 0d | 2019-04-12 A | 2019-04-12 A | 285FS+2h | 100% | finish no earlier than 2018-10-18 | Administrador de Contrato - Cliente; Gerente de Proyecto PlanERP |  |
| 287 | 4.2.2 | **Sesiones de Requerimientos del Entidad** |  | 0d | 2019-04-12 A | 2019-04-19 A | 284FS+0.57d | 100% |  |  |  |
| 288 | 4.2.2.1 | Conducir Sesiones de Requerimientos |  | 0d | 2019-04-12 A | 2019-04-17 A |  | 100% | finish no earlier than 2018-11-12 | Funcionarios Técnicos - Cliente; Analista Procesos PlanERP; Consultor Especialista en Procesos de GADs PlanERP |  |
| 289 | 4.2.2.2 | Crear Documento de Características del Entidad |  | 0d | 2019-04-17 A | 2019-04-19 A | 288FS+3d | 100% | finish no earlier than 2018-11-15 | Analista Procesos PlanERP; Funcionarios Técnicos - Cliente; Consultor Especialista en Procesos de GADs PlanERP |  |
| 290 | 4.2.3 | **Revisar el Documento de Características del Entidad** |  | 0d | 2019-04-19 A | 2019-04-22 A | 287FS+6d | 100% |  |  |  |
| 291 | 4.2.3.1 | Revisar el Documento de Características del Entidad |  | 0d | 2019-04-19 A | 2019-04-22 A |  | 100% | finish no earlier than 2018-11-16 | Administrador de Contrato - Cliente; Gerente de Proyecto PlanERP; Analista de Calidad PlanERP; Consultor Especialista en Procesos de GADs PlanERP; Analista Procesos PlanERP |  |
| 292 | 4.2.3.2 | Revisar el Plan del Proyecto |  | 0d | 2019-04-22 A | 2019-04-22 A | 291FS+4h | 100% | finish no earlier than 2018-11-16 | Administrador de Contrato - Cliente; Gerente de Proyecto PlanERP |  |
| 293 | 4.2.4 | Revisar la ETAPA del Proyecto |  | 0d | 2019-04-22 A | 2019-04-23 A | 290FS+1d | 100% | finish no earlier than 2018-11-19 | Administrador de Contrato - Cliente; Gerente de Proyecto PlanERP; Líder del Proyecto/Desarrollo PlanERP; Analista de Calidad PlanERP |  |
| 294 | 4.2.5 | HITO: FINALIZACION ETAPA 2 | milestone | 0d | 2019-04-23 | 2019-04-23 | 293FS+1d |  | finish no earlier than 2018-11-19 |  | 87% |
| 295 | 4.3 | **ETAPA 3: Migración de Datos, Configuración y Pruebas de Operación de Módulos - Módulos PRI** |  | 0d | 2019-04-23 A | 2019-06-03 | 283FS+8.57d | 34% |  |  |  |
| 296 | 4.3.1 | **Gestión General del Proyecto** |  | 0d | 2019-04-23 A | 2019-04-24 A |  | 100% |  |  |  |
| 297 | 4.3.1.1 | Planificar cambio Organizacional |  | 0d | 2019-04-23 A | 2019-04-23 A |  | 100% | finish no earlier than 2018-11-19 | Administrador de Contrato - Cliente; Gerente de Proyecto PlanERP; Líder del Proyecto/Desarrollo PlanERP |  |
| 298 | 4.3.1.2 | Planificar Entrenamiento a Usuarios Finales |  | 0d | 2019-04-23 A | 2019-04-24 A | 297FS+3h | 100% | finish no earlier than 2018-11-20 | Administrador de Contrato - Cliente; Gerente de Proyecto PlanERP; Líder del Proyecto/Desarrollo PlanERP |  |
| 299 | 4.3.1.3 | Definir y Preparar la Migración de Datos |  | 0d | 2019-04-24 A | 2019-04-24 A | 298FS+4h | 100% | finish no earlier than 2018-11-20 | Funcionarios Técnicos - Cliente; Líder del Proyecto/Desarrollo PlanERP; Especialista Base de Datos PlanERP |  |
| 300 | 4.3.2 | **Configuración del Sistema en Producción** |  | 0d | 2019-04-24 A | 2019-05-20 | 296FS+1.57d | 34% |  |  |  |
| 301 | 4.3.2.1 | Instalar el SIIM en Producción |  | 0d | 2019-04-24 A | 2019-04-25 A |  | 100% | finish no earlier than 2018-11-21 | Funcionarios Técnicos - Cliente; Analista Procesos PlanERP; Desarrollador PlanERP; Líder del Proyecto/Desarrollo PlanERP; Especialista Base de Datos PlanERP |  |
| 302 | 4.3.2.2 | Configurar Inicialización del Sistema |  | 0d | 2019-04-25 A | 2019-04-26 A | 301FS+4h | 100% | finish no earlier than 2018-11-23 | Funcionarios Técnicos - Cliente; Analista Procesos PlanERP; Desarrollador PlanERP; Líder del Proyecto/Desarrollo PlanERP; Especialista Base de Datos PlanERP |  |
| 303 | 4.3.2.3 | Realizar la Migración de Datos |  | 0d | 2019-04-26 | 2019-05-09 | 302FS+1d |  | finish no earlier than 2019-03-01 | Funcionarios Técnicos - Cliente; Analista Procesos PlanERP; Desarrollador PlanERP; Líder del Proyecto/Desarrollo PlanERP; Especialista Base de Datos PlanERP |  |
| 304 | 4.3.2.4 | Desarrollar Adaptaciones al Software |  | 0d | 2019-05-09 A | 2019-05-15 | 303FS+10d | 50% | finish no earlier than 2019-03-20 | Funcionarios Técnicos - Cliente; Analista Procesos PlanERP; Desarrollador PlanERP; Líder del Proyecto/Desarrollo PlanERP; Especialista Base de Datos PlanERP |  |
| 305 | 4.3.2.5 | Configuración del Sistema en base al Documento de Características del Entidad |  | 0d | 2019-05-15 A | 2019-05-17 | 304FS+5d | 50% | finish no earlier than 2019-03-27 | Funcionarios Técnicos - Cliente; Analista Procesos PlanERP; Desarrollador PlanERP; Líder del Proyecto/Desarrollo PlanERP; Especialista Base de Datos PlanERP |  |
| 306 | 4.3.2.6 | Configurar Interfaces |  | 0d | 2019-05-17 A | 2019-05-20 A | 305FS+2d | 100% | finish no earlier than 2019-03-29 | Funcionarios Técnicos - Cliente; Analista Procesos PlanERP; Desarrollador PlanERP; Líder del Proyecto/Desarrollo PlanERP; Especialista Base de Datos PlanERP |  |
| 307 | 4.3.2.7 | Configurar Usuarios y Autorizaciones |  | 0d | 2019-05-20 A | 2019-05-20 A | 306FS+1d | 100% | finish no earlier than 2019-04-01 | Funcionarios Técnicos - Cliente; Analista Procesos PlanERP; Desarrollador PlanERP; Líder del Proyecto/Desarrollo PlanERP; Especialista Base de Datos PlanERP |  |

| ID | WBS | Task | Duration | Start | Finish | Predecessors | Complete | Constraint | Resources |
| --- | --- | --- | --- | --- | --- | --- | --- | --- | --- |
| 308 | 4.3.3 | **Gestión del Cambio Organizacional** | 0d | 2019-05-20 A | 2019-05-22 A | 300FS+20.57d | 100% |  |  |
| 309 | 4.3.3.1 | Conducir la comunicación de la Gestión de Cambios (si es aplicable) | 0d | 2019-05-20 A | 2019-05-22 A |  | 100% | finish no earlier than 2019-04-03 | Administrador de Contrato - Cliente; Líder Funcional - Usuario Experto - Cliente; Gerente de Proyecto PlanERP; Consultor Especialista en Procesos de GADs PlanERP |
| 310 | 4.3.4 | **Pruebas de validación/aceptación del Sistema** | 0d | 2019-05-22 A | 2019-05-24 | 308FS+2d | 22% |  |  |
| 311 | 4.3.4.1 | Mantener la Lista Maestra de Procesos de Entidad | 0d | 2019-05-22 A | 2019-05-23 A |  | 100% | finish no earlier than 2019-04-04 | Líder Funcional - Usuario Experto - Cliente; Gerente de Proyecto PlanERP; Líder del Proyecto/Desarrollo PlanERP; Analista Procesos PlanERP; Consultor Especialista en Procesos de GADs PlanERP |
| 312 | 4.3.4.2 | **Conducir Talleres de Validación** | 0d | 2019-05-23 | 2019-05-24 | 311FS+4h |  |  | Líder Funcional - Usuario Experto - Cliente; Analista Procesos PlanERP; Analista de Calidad PlanERP; Consultor Especialista en Procesos de GADs PlanERP |
| 313 | 4.3.4.2.1 | 3.1 Compras Públicas | 0d | 2019-05-23 | 2019-05-23 |  |  |  |  |
| 314 | 4.3.4.2.2 | 6.2 Servicios Generales | 0d | 2019-05-23 | 2019-05-23 | 313FS+2h |  |  |  |
| 315 | 4.3.4.2.3 | 8.5 Gestión Jurídica - Financiera | 0d | 2019-05-23 | 2019-05-23 | 314FS+2h |  |  |  |
| 316 | 4.3.4.2.4 | 15.2 BI Financiero | 0d | 2019-05-23 | 2019-05-24 | 315FS+2h |  |  |  |
| 317 | 4.3.4.2.5 | 15.3 BI Administración del Talento Humano | 0d | 2019-05-24 | 2019-05-24 | 316FS+2h |  |  |  |
| 318 | 4.3.4.2.6 | 15.4 BI Compras Públicas | 0d | 2019-05-24 | 2019-05-24 | 317FS+2h |  |  |  |
| 319 | 4.3.4.2.7 | 15.9 Tablero de Control | 0d | 2019-05-24 | 2019-05-24 | 318FS+2h |  |  |  |
| 320 | 4.3.5 | **Pruebas de aceptacion del Sistema** | 0d | 2019-05-24 | 2019-05-30 | 310FS+2.57d |  |  |  |
| 321 | 4.3.5.1 | Definir casos de prueba y alcance | 0d | 2019-05-24 | 2019-05-27 |  |  | finish no earlier than 2019-04-17 | Líder Funcional - Usuario Experto - Cliente; Líder del Proyecto/Desarrollo PlanERP; Analista de Calidad PlanERP; Funcionarios Técnicos - Cliente |
| 322 | 4.3.5.2 | Preparar ambiente de pruebas | 0d | 2019-05-27 | 2019-05-28 | 321FS+3h |  | finish no earlier than 2019-04-19 | Funcionarios Técnicos - Cliente; Líder Funcional - Usuario Experto - Cliente; Líder del Proyecto/Desarrollo PlanERP; Analista de Calidad PlanERP |
| 323 | 4.3.5.3 | **Ejecutar el plan de pruebas** | 0d | 2019-05-28 | 2019-05-29 | 322FS+1d |  |  | Líder Funcional - Usuario Experto - Cliente; Líder del Proyecto/Desarrollo PlanERP; Analista de Calidad PlanERP; Funcionarios Técnicos - Cliente; Consultor Especialista en Procesos de GADs PlanERP |
| 324 | 4.3.5.3.1 | 3.1 Compras Públicas | 0d | 2019-05-28 | 2019-05-28 |  |  |  |  |
| 325 | 4.3.5.3.2 | 6.2 Servicios Generales | 0d | 2019-05-28 | 2019-05-28 | 324FS+2h |  |  |  |
| 326 | 4.3.5.3.3 | 8.5 Gestión Jurídica - Financiera | 0d | 2019-05-28 | 2019-05-28 | 325FS+2h |  |  |  |
| 327 | 4.3.5.3.4 | 15.2 BI Financiero | 0d | 2019-05-28 | 2019-05-29 | 326FS+2h |  |  |  |
| 328 | 4.3.5.3.5 | 15.3 BI Administración del Talento Humano | 0d | 2019-05-29 | 2019-05-29 | 327FS+2h |  |  |  |
| 329 | 4.3.5.3.6 | 15.4 BI Compras Públicas | 0d | 2019-05-29 | 2019-05-29 | 328FS+2h |  |  |  |
| 330 | 4.3.5.3.7 | 15.9 Tablero de Control | 0d | 2019-05-29 | 2019-05-29 | 329FS+2h |  |  |  |
| 331 | 4.3.5.4 | Revisar los resultados de las pruebas y necesidades de cambios | 0d | 2019-05-29 | 2019-05-30 | 330FS+2h, 319FS+2h |  | finish no earlier than 2019-05-07 | Administrador de Contrato - Cliente; Gerente de Proyecto PlanERP; Analista de Calidad PlanERP; Consultor Especialista en Procesos de GADs PlanERP |

| ID | WBS | Task | Type | Duration | Start | Finish | Predecessors | Constraint | Resources | Porcentage Avance |
| --- | --- | --- | --- | --- | --- | --- | --- | --- | --- | --- |
| 332 | 4.3.6 | **Planificar Salida a Producción y Soporte** |  | 0d | 2019-05-30 | 2019-05-31 | 320FS+4.43d |  |  |  |
| 333 | 4.3.6.1 | Definir Plan de Salida a Producción |  | 0d | 2019-05-30 | 2019-05-31 |  | finish no earlier than 2019-05-07 | Administrador de Contrato - Cliente; Líder Funcional - Usuario Experto - Cliente; Gerente de Proyecto PlanERP; Líder del Proyecto/Desarrollo PlanERP |  |
| 334 | 4.3.6.2 | Planificar Estrategia de Soporte |  | 0d | 2019-05-31 | 2019-05-31 | 333FS+3h | finish no earlier than 2019-05-07 | Administrador de Contrato - Cliente; Líder Funcional - Usuario Experto - Cliente; Gerente de Proyecto PlanERP; Líder del Proyecto/Desarrollo PlanERP |  |
| 335 | 4.3.6.3 | Planificar Administración del Sistema |  | 0d | 2019-05-31 | 2019-05-31 | 334FS+3h | finish no earlier than 2019-05-08 | Administrador de Contrato - Cliente; Líder Funcional - Usuario Experto - Cliente; Gerente de Proyecto PlanERP; Líder del Proyecto/Desarrollo PlanERP |  |
| 336 | 4.3.7 | Revisar la ETAPA del Proyecto |  | 0d | 2019-05-31 | 2019-06-03 | 332FS+1.29d | finish no earlier than 2019-05-09 | Administrador de Contrato - Cliente; Gerente de Proyecto PlanERP; Líder del Proyecto/Desarrollo PlanERP; Analista de Calidad PlanERP |  |
| 337 | 4.3.8 | HITO: FINALIZACION ETAPA 3 | milestone | 0d | 2019-06-03 | 2019-06-03 | 336FS+1d | finish no earlier than 2019-05-09 |  | 95% |
| 338 | 4.4 | **ETAPA 4: Preparación Final previo Despliegue en Producción - Módulos PRI** |  | 0d | 2019-06-03 | 2019-06-18 | 295FS+33.43d |  |  |  |
| 339 | 4.4.1 | **Gestión General del Proyecto** |  | 0d | 2019-06-03 | 2019-06-04 |  |  |  |  |
| 340 | 4.4.1.1 | Confirmar el Plan de Entrenamiento |  | 0d | 2019-06-03 | 2019-06-04 |  | finish no earlier than 2019-05-09 | Administrador de Contrato - Cliente; Funcionarios Técnicos - Cliente; Gerente de Proyecto PlanERP; Líder del Proyecto/Desarrollo PlanERP |  |
| 341 | 4.4.1.2 | Finalizar plan de Salida a Producción |  | 0d | 2019-06-04 | 2019-06-04 | 340FS+4h | finish no earlier than 2019-05-10 | Administrador de Contrato - Cliente; Funcionarios Técnicos - Cliente; Gerente de Proyecto PlanERP; Líder del Proyecto/Desarrollo PlanERP; Analista de Calidad PlanERP |  |
| 342 | 4.4.2 | **Entrenamiento** |  | 0d | 2019-06-04 | 2019-06-12 | 339FS+1.14d |  |  |  |
| 343 | 4.4.2.1 | **Entrenamiento de Usuarios Funcionales y Certificación de Procesos** |  | 0d | 2019-06-04 | 2019-06-10 |  |  | Líder Funcional - Usuario Experto - Cliente; Usuarios Finales - Cliente; Funcionarios Técnicos - Cliente; Analista Procesos PlanERP; Desarrollador PlanERP; Consultor Especialista en Procesos de GADs PlanERP |  |
| 344 | 4.4.2.1.1 | 3.1 Compras Públicas |  | 0d | 2019-06-04 | 2019-06-05 |  |  |  |  |
| 345 | 4.4.2.1.2 | 6.2 Servicios Generales |  | 0d | 2019-06-05 | 2019-06-05 | 344FS+4h |  |  |  |
| 346 | 4.4.2.1.3 | 8.5 Gestión Jurídica - Financiera |  | 0d | 2019-06-05 | 2019-06-06 | 345FS+4h |  |  |  |
| 347 | 4.4.2.1.4 | 15.2 BI Financiero |  | 0d | 2019-06-06 | 2019-06-06 | 346FS+4h |  |  |  |
| 348 | 4.4.2.1.5 | 15.3 BI Administración del Talento Humano |  | 0d | 2019-06-06 | 2019-06-07 | 347FS+4h |  |  |  |
| 349 | 4.4.2.1.6 | 15.4 BI Compras Públicas |  | 0d | 2019-06-07 | 2019-06-07 | 348FS+4h |  |  |  |
| 350 | 4.4.2.1.7 | 15.9 Tablero de Control |  | 0d | 2019-06-07 | 2019-06-10 | 349FS+4h |  |  |  |
| 351 | 4.4.2.2 | Entrenamiento de Usuario Técnicos |  | 0d | 2019-06-10 | 2019-06-12 | 350FS+4h | finish no earlier than 2019-05-31 | Funcionarios Técnicos - Cliente; Desarrollador PlanERP; Especialista Base de Datos PlanERP; Líder del Proyecto/Desarrollo PlanERP |  |
| 352 | 4.4.3 | **Preparación del Sistema** |  | 0d | 2019-06-12 | 2019-06-14 | 342FS+7d |  |  |  |
| 353 | 4.4.3.1 | Completar la Administración del Sistema |  | 0d | 2019-06-12 | 2019-06-13 |  | finish no earlier than 2019-06-03 | Funcionarios Técnicos - Cliente; Desarrollador PlanERP; Analista Procesos PlanERP |  |
| 354 | 4.4.3.2 | Comprobación de la Puesta a Producción |  | 0d | 2019-06-13 | 2019-06-14 | 353FS+5h | finish no earlier than 2019-06-04 | Funcionarios Técnicos - Cliente; Administrador de Contrato - Cliente; Analista de Calidad PlanERP; Líder del Proyecto/Desarrollo PlanERP |  |
| 355 | 4.4.4 | **Transición** |  | 0d | 2019-06-14 | 2019-06-18 | 352FS+1.43d |  |  |  |
| 356 | 4.4.4.1 | Finalizar Procesamiento de Sistemas Legados |  | 0d | 2019-06-14 | 2019-06-14 |  | finish no earlier than 2019-06-04 | Administrador de Contrato - Cliente; Líder Funcional - Usuario Experto - Cliente; Desarrollador PlanERP; Líder del Proyecto/Desarrollo PlanERP; Especialista Base de Datos PlanERP |  |
| 357 | 4.4.4.2 | Realizar la Salida a Producción - Carga Inicial y Configuración Inicial |  | 0d | 2019-06-14 | 2019-06-18 | 356FS+4h | finish no earlier than 2019-06-11 | Administrador de Contrato - Cliente; Líder Funcional - Usuario Experto - Cliente; Desarrollador PlanERP; Líder del Proyecto/Desarrollo PlanERP; Especialista Base de Datos PlanERP |  |
| 358 | 4.4.5 | Revisar la ETAPA del Proyecto |  | 0d | 2019-06-18 | 2019-06-18 | 355FS+2.57d | finish no earlier than 2019-06-11 | Administrador de Contrato - Cliente; Gerente de Proyecto PlanERP; Líder del Proyecto/Desarrollo PlanERP; Analista de Calidad PlanERP |  |
| 359 | 4.4.6 | HITO: FINALIZACION ETAPA 4 | milestone | 0d | 2019-06-18 | 2019-06-18 | 358FS+2h | finish no earlier than 2019-06-11 |  | 98% |

| ID | WBS | Task | Type | Duration | Start | Finish | Predecessors | Constraint | Resources | Porcentage Avance |
| --- | --- | --- | --- | --- | --- | --- | --- | --- | --- | --- |
| 360 | 4.5 | **ETAPA 5: Despliegue en Producción y Soporte Técnico - Módulos PRI** |  | 0d | 2019-06-21 | 2019-07-10 | 338FS+12.43d |  |  |  |
| 361 | 4.5.1 | **Soporte en Producción** |  | 0d | 2019-06-21 | 2019-07-04 |  |  |  |  |
| 362 | 4.5.1.1 | Soporte durante la Salida a Producción |  | 0d | 2019-06-21 | 2019-06-28 |  | finish no earlier than 2019-06-28 | Funcionarios Técnicos - Cliente; Desarrollador PlanERP; Analista Procesos PlanERP; Especialista Base de Datos PlanERP; Consultor Especialista en Procesos de GADs PlanERP |  |
| 363 | 4.5.1.2 | Resolver incidentes críticos |  | 0d | 2019-06-28 | 2019-07-02 | 362FS+5d | finish no earlier than 2019-06-28 | Funcionarios Técnicos - Cliente; Desarrollador PlanERP; Analista Procesos PlanERP; Especialista Base de Datos PlanERP; Consultor Especialista en Procesos de GADs PlanERP |  |
| 364 | 4.5.1.3 | Entregar el soporte y Administración al cliente |  | 0d | 2019-07-02 | 2019-07-04 | 363FS+3d | finish no earlier than 2019-06-13 | Funcionarios Técnicos - Cliente; Desarrollador PlanERP; Analista Procesos PlanERP; Especialista Base de Datos PlanERP; Consultor Especialista en Procesos de GADs PlanERP |  |
| 365 | 4.5.2 | **Mejora Continua** |  | 0d | 2019-06-21 | 2019-07-10 | 338FS+12.43d |  |  |  |
| 366 | 4.5.2.1 | Monitoreo del Sistema y Acompañamiento |  | 0d | 2019-06-21 | 2019-07-10 |  | start no earlier than 2019-06-21 | Administrador de Contrato - Cliente; Funcionarios Técnicos - Cliente; Líder Funcional - Usuario Experto - Cliente; Especialista Base de Datos PlanERP; Líder del Proyecto/Desarrollo PlanERP; Consultor Especialista en Procesos de GADs PlanERP |  |
| 367 | 4.5.2.2 | Ajustes y Configuraciones finales al Software acorde a necesidades Entidad |  | 0d | 2019-06-21 | 2019-07-10 | 338FS+12.43d | start no earlier than 2019-06-21 | Administrador de Contrato - Cliente; Funcionarios Técnicos - Cliente; Líder Funcional - Usuario Experto - Cliente; Especialista Base de Datos PlanERP; Líder del Proyecto/Desarrollo PlanERP; Consultor Especialista en Procesos de GADs PlanERP |  |
| 368 | 4.5.3 | **Cierre de la FASE 3 y Proyecto** |  | 0d | 2019-07-10 | 2019-07-10 | 365FS+15d |  |  |  |
| 369 | 4.5.3.1 | Reunión de Cierre de la FASE 3 y Proyecto |  | 0d | 2019-07-10 | 2019-07-10 |  | start no earlier than 2019-07-10 | Administrador de Contrato - Cliente; Líder Funcional - Usuario Experto - Cliente; Funcionarios Técnicos - Cliente; Gerente de Proyecto PlanERP; Líder del Proyecto/Desarrollo PlanERP; Analista de Calidad PlanERP |  |
| 370 | 4.5.4 | HITO: FIN DE LA FASE 3 y Proyecto | milestone | 0d | 2019-07-10 | 2019-07-10 | 365FS+15d | start no earlier than 2019-07-10 |  | 100% |
