# 010101010010101001010101001010100101

Schedule from MS Project MPX, 2019-08-16 to 2019-08-16.

## Calendars

- Est�ndar: Mon-Fri 08:00 am-12:00 pm, 01:00 pm-05:00 pm; Sat-Sun off.

## Resources

| Resource |
| --- |
| Administrador de Contrato - Cliente |
| L�der T�cnico - Cliente |
| L�der Funcional - Usuario Experto - Cliente |
| Funcionarios T�cnicos - Cliente |
| Usuarios Finales - Cliente |
| Desarrollador PlanERP |
| Gerente de Proyecto PlanERP |
| L�der del Proyecto/Desarrollo PlanERP |
| Analista Procesos PlanERP |
| Analista de Calidad PlanERP |
| Especialista Base de Datos PlanERP |
| Consultor Especialista en Procesos de GADs PlanERP |

## Schedule

| ID | WBS | Task | Duration | Start | Finish | Predecessors | Free slack |
| --- | --- | --- | --- | --- | --- | --- | --- |
| 1 | 0 | 20190122- Plan del Proyecto de Implementacion del SIIM Daule | 0d | 2019-08-16 | 2019-08-16 |  | 0d |
| 2 | 2 | **Programa de Implementaci�n SIIM** |  |  |  |  |  |
| 3 | 2.1 | **FASE 1: Implementaci�n de M�dulos de Servicio al Cliente (SC) y Atenci�n al Ciudadano (AC)** |  |  |  |  |  |
| 4 | 2.1.1 | **ETAPA 1: Preparaci�n del Proyecto e Instalaci�n del SIIM - M�dulos SC y AC** |  |  |  |  |  |
| 5 | 2.1.1.1 | **Actividades de Gesti�n del Proyecto** |  |  |  |  |  |
| 6 | 2.1.1.1.1 | Revisi�n de Informaci�n de Contrato y Anexos |  |  |  |  |  |
| 7 | 2.1.1.1.2 | Definir la Organizaci�n del Proyecto |  |  |  | 6FS+6h |  |
| 8 | 2.1.1.1.3 | Kick-off Interno del Proyecto |  |  |  | 7FS+4h |  |
| 9 | 2.1.1.2 | **Preparaci�n del kick-off del Proyecto** |  |  |  |  |  |
| 10 | 2.1.1.2.1 | Comunicaci�n con el Cliente |  |  |  | 8FS+6h |  |
| 11 | 2.1.1.2.2 | Crear la presentaci�n del kick-off |  |  |  | 10FS+4h |  |
| 12 | 2.1.1.3 | **Reuni�n de Kick-off** |  |  |  |  |  |
| 13 | 2.1.1.3.1 | Realizar la reuni�n de kick-off |  |  |  | 11FS+4h |  |
| 14 | 2.1.1.4 | **Entrega e Instalaci�n del Software** |  |  |  |  |  |
| 15 | 2.1.1.4.1 | **Instalar SIIM en Servidor** |  |  |  | 12FS+0.29d |  |
| 16 | 2.1.1.4.1.1 | 1 Direcci�n de Desarrollo Territorial (No incluye Catastro) |  |  |  |  |  |
| 17 | 2.1.1.4.1.2 | 4 Direcci�n de Justicia y Vigilancia |  |  |  | 16FS+2h |  |
| 18 | 2.1.1.4.1.3 | 5 Direcci�n de Desarrollo Humano y Social |  |  |  | 17FS+2h |  |
| 19 | 2.1.1.4.1.4 | 8.3 Rentas |  |  |  | 18FS+2h |  |
| 20 | 2.1.1.4.1.5 | 8.4 Tesorer�a |  |  |  | 19FS+2h |  |
| 21 | 2.1.1.4.1.6 | 9.1 Mercados |  |  |  | 20FS+2h |  |
| 22 | 2.1.1.4.1.7 | 9.2 Cementerio |  |  |  | 21FS+1h |  |
| 23 | 2.1.1.4.1.8 | 9.3 Camal |  |  |  | 22FS+1h |  |
| 24 | 2.1.1.4.1.9 | 10 Registro de la Propiedad y Mercantil |  |  |  | 23FS+1h |  |
| 25 | 2.1.1.4.1.10 | 11 Administraci�n de bomberos |  |  |  | 24FS+2h |  |
| 26 | 2.1.1.4.1.11 | 12 CRM para ciudadanos. Ventanilla �nica |  |  |  | 25FS+1h |  |
| 27 | 2.1.1.4.1.12 | 15.1 BI Desarrollo Territorial |  |  |  | 26FS+2h |  |
| 28 | 2.1.1.4.1.13 | 15.5 BI Obras P�blicas Municipales |  |  |  | 27FS+2h |  |
| 29 | 2.1.1.4.1.14 | 15.7 BI Registro de la Propiedad y Mercantil |  |  |  | 28FS+2h |  |
| 30 | 2.1.1.4.1.15 | 16.1 Consultas Portal Web |  |  |  | 29FS+2h |  |
| 31 | 2.1.1.4.1.16 | 16.2 Aplicaci�n para m�viles (APP) |  |  |  | 30FS+2h |  |
| 32 | 2.1.1.4.2 | Entrega de Software |  |  |  | 15FS+4d |  |
| 33 | 2.1.1.5 | Revisar la ETAPA del Proyecto |  |  |  | 14FS+4.29d |  |
| 34 | 2.1.1.6 | HITO: FINALIZACION ETAPA 1 |  |  |  | 33FS+1d |  |

| ID | WBS | Task | Predecessors |
| --- | --- | --- | --- |
| 35 | 2.1.2 | **ETAPA 2: Levantamiento de Caracter�sticas Institucionales - M�dulos SC y AC** | 4FS+9d |
| 36 | 2.1.2.1 | **Actividades de Gesti�n del Proyecto** |  |
| 37 | 2.1.2.1.1 | Revisi�n del Plan del Proyecto | 33FS+1d |
| 38 | 2.1.2.1.2 | Programar talleres de requerimientos de Entidad | 37FS+4h |
| 39 | 2.1.2.2 | **Sesiones de Requerimientos del Entidad** |  |
| 40 | 2.1.2.2.1 | Conducir Sesiones de Requerimientos | 38FS+4h |
| 41 | 2.1.2.2.2 | Crear Documento de Caracter�sticas del Entidad | 40FS+10d |
| 42 | 2.1.2.3 | **Revisar el Documento de Caracter�sticas del Entidad** |  |
| 43 | 2.1.2.3.1 | Revisar el Documento de Caracter�sticas del Entidad | 41FS+2d |
| 44 | 2.1.2.3.2 | Revisar el Plan del Proyecto | 43FS+2h |
| 45 | 2.1.2.4 | Revisar la ETAPA del Proyecto | 42FS+0.57d |
| 46 | 2.1.2.5 | HITO: FINALIZACION ETAPA 2 | 45FS+1d |
| 47 | 2.1.3 | **ETAPA 3: Migraci�n de Datos, Configuraci�n y Pruebas de Operaci�n - M�dulos SC y AC** | 35FS+14.71d |
| 48 | 2.1.3.1 | **Gesti�n General del Proyecto** |  |
| 49 | 2.1.3.1.1 | Planificar cambio Organizacional | 45FS+1d |
| 50 | 2.1.3.1.2 | Planificar Entrenamiento a Usuarios Finales | 49FS+2h |
| 51 | 2.1.3.1.3 | Definir y Preparar la Migraci�n de Datos | 49FS+2h |
| 52 | 2.1.3.2 | **Configuraci�n del Sistema en Producci�n** |  |
| 53 | 2.1.3.2.1 | Instalar el SIIM en Producci�n | 51FS+2h |
| 54 | 2.1.3.2.2 | Configurar Inicializaci�n del Sistema | 53FS+1d |
| 55 | 2.1.3.2.3 | Realizar la Migraci�n de Datos | 54FS+1d |
| 56 | 2.1.3.2.4 | Desarrollar Adaptaciones al Software | 54FS+1d |
| 57 | 2.1.3.2.5 | Configuraci�n del Sistema en base al Documento de Caracter�sticas del Entidad | 56FS+10d |
| 58 | 2.1.3.2.6 | Configurar Interfaces | 57FS+3d |
| 59 | 2.1.3.2.7 | Configurar Usuarios y Autorizaciones | 58FS+1d |

| ID | WBS | Task | Predecessors |
| --- | --- | --- | --- |
| 60 | 2.1.3.3 | **Gesti�n del Cambio Organizacional** |  |
| 61 | 2.1.3.3.1 | Conducir la comunicaci�n de la Gesti�n de Cambios (si es aplicable) | 59FS+1d |
| 62 | 2.1.3.4 | **Pruebas de validaci�n/aceptaci�n del Sistema** |  |
| 63 | 2.1.3.4.1 | Mantener la Lista Maestra de Procesos de Entidad | 61FS+1d |
| 64 | 2.1.3.4.2 | **Conducir Talleres de Validaci�n** | 63FS+2h |
| 65 | 2.1.3.4.2.1 | 1 Direcci�n de Desarrollo Territorial (No incluye Catastro) |  |
| 66 | 2.1.3.4.2.2 | 4 Direcci�n de Justicia y Vigilancia | 65FS+2h |
| 67 | 2.1.3.4.2.3 | 5 Direcci�n de Desarrollo Humano y Social | 66FS+2h |
| 68 | 2.1.3.4.2.4 | 8.3 Rentas | 67FS+1h |
| 69 | 2.1.3.4.2.5 | 8.4 Tesorer�a | 68FS+2h |
| 70 | 2.1.3.4.2.6 | 9.1 Mercados | 69FS+2h |
| 71 | 2.1.3.4.2.7 | 9.2 Cementerio | 70FS+1h |
| 72 | 2.1.3.4.2.8 | 9.3 Camal | 71FS+1h |
| 73 | 2.1.3.4.2.9 | 10 Registro de la Propiedad y Mercantil | 72FS+1h |
| 74 | 2.1.3.4.2.10 | 11 Administraci�n de bomberos | 73FS+2h |
| 75 | 2.1.3.4.2.11 | 12 CRM para ciudadanos. Ventanilla �nica | 74FS+1h |
| 76 | 2.1.3.4.2.12 | 15.1 BI Desarrollo Territorial | 75FS+2h |
| 77 | 2.1.3.4.2.13 | 15.5 BI Obras P�blicas Municipales | 76FS+1h |
| 78 | 2.1.3.4.2.14 | 15.7 BI Registro de la Propiedad y Mercantil | 77FS+1h |
| 79 | 2.1.3.4.2.15 | 16.1 Consultas Portal Web | 78FS+1h |
| 80 | 2.1.3.4.2.16 | 16.2 Aplicaci�n para m�viles (APP) | 79FS+1h |
| 81 | 2.1.3.5 | **Pruebas de Aceptacion Sistema** |  |
| 82 | 2.1.3.5.1 | Definir casos de prueba y alcance | 80FS+1h, 31FS+2h |
| 83 | 2.1.3.5.2 | Preparar ambiente de pruebas | 82FS+2h |

| ID | WBS | Task | Predecessors |
| --- | --- | --- | --- |
| 84 | 2.1.3.5.3 | **Ejecutar el plan de pruebas de Aceptacion del Sistema** | 83FS+1d |
| 85 | 2.1.3.5.3.1 | 1 Direcci�n de Desarrollo Territorial (No incluye Catastro) |  |
| 86 | 2.1.3.5.3.2 | 4 Direcci�n de Justicia y Vigilancia | 85FS+2h |
| 87 | 2.1.3.5.3.3 | 5 Direcci�n de Desarrollo Humano y Social | 86FS+2h |
| 88 | 2.1.3.5.3.4 | 8.3 Rentas | 87FS+1h |
| 89 | 2.1.3.5.3.5 | 8.4 Tesorer�a | 88FS+2h |
| 90 | 2.1.3.5.3.6 | 9.1 Mercados | 89FS+2h |
| 91 | 2.1.3.5.3.7 | 9.2 Cementerio | 90FS+1h |
| 92 | 2.1.3.5.3.8 | 9.3 Camal | 91FS+1h |
| 93 | 2.1.3.5.3.9 | 10 Registro de la Propiedad y Mercantil | 92FS+1h |
| 94 | 2.1.3.5.3.10 | 11 Administraci�n de bomberos | 93FS+2h |
| 95 | 2.1.3.5.3.11 | 12 CRM para ciudadanos. Ventanilla �nica | 94FS+1h |
| 96 | 2.1.3.5.3.12 | 15.1 BI Desarrollo Territorial | 95FS+2h |
| 97 | 2.1.3.5.3.13 | 15.5 BI Obras P�blicas Municipales | 96FS+1h |
| 98 | 2.1.3.5.3.14 | 15.7 BI Registro de la Propiedad y Mercantil | 97FS+1h |
| 99 | 2.1.3.5.3.15 | 16.1 Consultas Portal Web | 98FS+1h |
| 100 | 2.1.3.5.3.16 | 16.2 Aplicaci�n para m�viles (APP) | 99FS+1h |
| 101 | 2.1.3.5.4 | Revisar los resultados de las pruebas y necesidades de cambios | 100FS+1h, 80FS+1h, 31FS+2h |
| 102 | 2.1.3.6 | **Planificar Salida a Producci�n y Soporte** |  |
| 103 | 2.1.3.6.1 | Definir Plan de Salida a Producci�n | 101FS+1d |
| 104 | 2.1.3.6.2 | Planificar Estrategia de Soporte | 101FS+1d |
| 105 | 2.1.3.6.3 | Planificar Administraci�n del Sistema | 101FS+1d |
| 106 | 2.1.3.7 | Revisar la ETAPA del Proyecto | 102FS+0.29d |
| 107 | 2.1.3.8 | HITO: FINALIZACION ETAPA 3 | 106FS+1d |

| ID | WBS | Task | Predecessors |
| --- | --- | --- | --- |
| 108 | 2.1.4 | **ETAPA 4: Preparaci�n Final previo Despliegue en Producci�n - M�dulos SC y AC** |  |
| 109 | 2.1.4.1 | **Gesti�n General del Proyecto** |  |
| 110 | 2.1.4.1.1 | Confirmar el Plan de Entrenamiento | 106FS+1d |
| 111 | 2.1.4.1.2 | Finalizar plan de Salida a Producci�n | 110FS+2h |
| 112 | 2.1.4.2 | **Entrenamiento en Modulos de Areas Funcionales Fase 1** | 109FS+0.57d |
| 113 | 2.1.4.2.1 | **Entrenamiento de Usuarios Funcionales y Certificaci�n de Procesos** | 111FS+2h |
| 114 | 2.1.4.2.1.1 | 1 Direcci�n de Desarrollo Territorial (No incluye Catastro) |  |
| 115 | 2.1.4.2.1.2 | 4 Direcci�n de Justicia y Vigilancia | 114FS+1d |
| 116 | 2.1.4.2.1.3 | 5 Direcci�n de Desarrollo Humano y Social | 115FS+1d |
| 117 | 2.1.4.2.1.4 | 8.3 Rentas | 116FS+1d |
| 118 | 2.1.4.2.1.5 | 8.4 Tesorer�a | 117FS+1d |
| 119 | 2.1.4.2.1.6 | 9.1 Mercados | 118FS+1d |
| 120 | 2.1.4.2.1.7 | 9.2 Cementerio | 119FS+0.5d |
| 121 | 2.1.4.2.1.8 | 9.3 Camal | 120FS+0.5d |
| 122 | 2.1.4.2.1.9 | 10 Registro de la Propiedad y Mercantil | 121FS+0.5d |
| 123 | 2.1.4.2.1.10 | 11 Administraci�n de bomberos | 122FS+1d |
| 124 | 2.1.4.2.1.11 | 12 CRM para ciudadanos. Ventanilla �nica | 123FS+0.5d |
| 125 | 2.1.4.2.1.12 | 15.1 BI Desarrollo Territorial | 124FS+1d |
| 126 | 2.1.4.2.1.13 | 15.5 BI Obras P�blicas Municipales | 125FS+0.5d |
| 127 | 2.1.4.2.1.14 | 15.7 BI Registro de la Propiedad y Mercantil | 126FS+0.5d |
| 128 | 2.1.4.2.1.15 | 16.1 Consultas Portal Web | 127FS+0.5d |
| 129 | 2.1.4.2.1.16 | 16.2 Aplicaci�n para m�viles (APP) | 128FS+1d |
| 130 | 2.1.4.2.2 | Entrenamiento de Usuario T�cnicos | 129FS+0.5d, 100FS+1h, 80FS+1h, 31FS+2h |
| 131 | 2.1.4.3 | **Preparaci�n del Sistema** | 112FS+16d |
| 132 | 2.1.4.3.1 | Completar la Administraci�n del Sistema |  |
| 133 | 2.1.4.3.2 | Comprobaci�n de la Puesta a Producci�n | 132FS+3h |

| ID | WBS | Task | Predecessors |
| --- | --- | --- | --- |
| 134 | 2.1.4.4 | **Transici�n** | 131FS+0.86d |
| 135 | 2.1.4.4.1 | Finalizar Procesamiento de Sistemas Legados |  |
| 136 | 2.1.4.4.2 | Realizar la Salida a Producci�n - Carga Inicial y Configuraci�n Inicial | 135FS+1h |
| 137 | 2.1.4.5 | Revisar la ETAPA del Proyecto | 134FS+2.14d |
| 138 | 2.1.4.6 | HITO: FINALIZACION ETAPA 4 | 137FS+2h |
| 139 | 2.1.5 | **ETAPA 5: Despliegue en Producci�n y Soporte T�cnico - M�dulos SC y AC** | 108FS+19.86d |
| 140 | 2.1.5.1 | **Soporte en Producci�n** |  |
| 141 | 2.1.5.1.1 | Soporte durante la Salida a Producci�n | 137FS+2h |
| 142 | 2.1.5.1.2 | Resolver incidentes cr�ticos | 137FS+2h |
| 143 | 2.1.5.1.3 | Entregar el soporte y Administraci�n al cliente |  |
| 144 | 2.1.5.2 | **Mejora Continua** |  |
| 145 | 2.1.5.2.1 | Monitoreo del Sistema y Acompa�amiento ETAPA1 | 137FS+2h |
| 146 | 2.1.5.2.2 | Ajustes y Configuraciones finales al Software acorde a necesidades Entidad | 137FS+2h |
| 147 | 2.1.5.3 | **Cierre de la ETAPA 5** |  |
| 148 | 2.1.5.3.1 | Reuni�n de Cierre de la ETAPA 5 | 144FS+10d |
| 149 | 2.1.5.4 | HITO: FIN DE LA ETAPA 5 | 148FS+2h |
| 150 | 2.1.6 | **ETAPA 6: Estabilizaci�n, Apoyo Emisi�n 2019 y Desarrollo de funcionalidades no establecidas en el Alcance Contractual** |  |
| 151 | 2.1.6.1 | Depuraci�n de Errores de Calidad de Informaci�n fuente migrada (Base Oracle) | 139FS+30d |
| 152 | 2.1.6.2 | Soporte y Mantenimiento de M�dulos de la Fase 1 | 139FS+30d |
| 153 | 2.1.6.3 | Adaptaciones a Software para incluir Nuevas funcionalidades no contempladas en alcance proyecto | 139FS+30d |
| 154 | 2.1.6.4 | Implementaci�n de Licencia temporal de Modulo de Catastro Urbano SIIM |  |
| 155 | 2.1.6.5 | Migraci�n de informaci�n de Emisi�n de Impuestos de Catastro Urbano 2019 |  |
| 156 | 2.1.6.6 | Creaci�n de interfaces mediante ETLs para integraci�n entre Sistema Oracle y SIIM para la recaudaci�n de Impuestos 2019 de Catastro Urbano |  |
| 157 | 2.1.6.7 | Soporte en Recaudaci�n de Impuestos de Catastro urbano y mejoras 2019 | 156FS+20d |

| ID | WBS | Task | Predecessors |
| --- | --- | --- | --- |
| 158 | 2.1.6.8 | **Cierre de la FASE 1** |  |
| 159 | 2.1.6.8.1 | Reuni�n de Cierre de la FASE 1 | 157FS+25d |
| 160 | 2.1.6.8.2 | HITO: FIN DE LA FASE 1 | 159FS+2h |
| 161 | 2.2 | **FASE 2: Implementaci�n de M�dulos de Planificaci�n de Recursos Institucionales - PRI** |  |
| 162 | 2.2.1 | **ETAPA 1: Instalaci�n del SIIM - M�dulos PRI** |  |
| 163 | 2.2.1.1 | **Entrega e Instalaci�n del Software** |  |
| 164 | 2.2.1.1.1 | **Instalar SIIM en Servidor** |  |
| 165 | 2.2.1.1.1.1 | **Instalar M�dulos PRI** | 150FS+57.29d |
| 166 | 2.2.1.1.1.1.1 | 2.1 Administraci�n T�cnica |  |
| 167 | 2.2.1.1.1.1.2 | 2.2 Salud Ocupacional y Riesgos | 166FS+2h |
| 168 | 2.2.1.1.1.1.3 | 3.2 Adquisiciones | 167FS+2h |
| 169 | 2.2.1.1.1.1.4 | 6.1 Administraci�n de Bienes | 168FS+2h |
| 170 | 2.2.1.1.1.1.5 | 8.1 Contabilidad | 169FS+2h |
| 171 | 2.2.1.1.1.1.6 | 8.2 Presupuestos | 170FS+2h |
| 172 | 2.2.1.1.1.1.7 | 13 CRM para Urbanizaciones | 171FS+2h |
| 173 | 2.2.1.1.1.1.8 | 14 Direcci�n de Planificaci�n Institucional (Incluye control de proyectos de Obras P�blicas | 172FS+2h |
| 174 | 2.2.1.1.1.1.9 | 15.6 Servicios Corporativos | 173FS+2h |
| 175 | 2.2.1.1.1.1.10 | 15.8 BI Planificaci�n Institucional | 174FS+2h |
| 176 | 2.2.1.1.2 | Entrega de Software | 164FS+2.86d |
| 177 | 2.2.1.2 | Revisar la ETAPA del Proyecto | 163FS+3.14d |
| 178 | 2.2.1.3 | HITO: FINALIZACION ETAPA 1 | 177FS+1d |
| 179 | 2.2.2 | **ETAPA 2: Levantamiento de Caracter�sticas Institucionales - M�dulos PRI** | 162FS+4.14d |
| 180 | 2.2.2.1 | **Actividades de Gesti�n del Proyecto** |  |
| 181 | 2.2.2.1.1 | Revisi�n del Plan del Proyecto |  |
| 182 | 2.2.2.1.2 | Programar talleres de requerimientos de Entidad | 181FS+2h |

| ID | WBS | Task | Predecessors |
| --- | --- | --- | --- |
| 183 | 2.2.2.2 | **Sesiones de Requerimientos del Entidad** | 180FS+0.57d |
| 184 | 2.2.2.2.1 | Conducir Sesiones de Requerimientos |  |
| 185 | 2.2.2.2.2 | Crear Documento de Caracter�sticas del Entidad | 184FS+5d |
| 186 | 2.2.2.3 | **Revisar el Documento de Caracter�sticas del Entidad** | 183FS+6d |
| 187 | 2.2.2.3.1 | Revisar el Documento de Caracter�sticas del Entidad |  |
| 188 | 2.2.2.3.2 | Revisar el Plan del Proyecto | 187FS+4h |
| 189 | 2.2.2.4 | Revisar la ETAPA del Proyecto | 186FS+1d |
| 190 | 2.2.2.5 | HITO: FINALIZACION ETAPA 2 | 189FS+1d |
| 191 | 2.2.3 | **ETAPA 3: Migraci�n de Datos, Configuraci�n y Pruebas de Operaci�n de M�dulos - M�dulos PRI** | 179FS+8.57d |
| 192 | 2.2.3.1 | **Gesti�n General del Proyecto** |  |
| 193 | 2.2.3.1.1 | Planificar cambio Organizacional |  |
| 194 | 2.2.3.1.2 | Planificar Entrenamiento a Usuarios Finales | 193FS+3h |
| 195 | 2.2.3.1.3 | Definir y Preparar la Migraci�n de Datos | 194FS+4h |
| 196 | 2.2.3.2 | **Configuraci�n del Sistema en Producci�n** | 192FS+1.57d |
| 197 | 2.2.3.2.1 | Instalar el SIIM en Producci�n |  |
| 198 | 2.2.3.2.2 | Configurar Inicializaci�n del Sistema | 197FS+4h |
| 199 | 2.2.3.2.3 | Realizar la Migraci�n de Datos | 198FS+1d |
| 200 | 2.2.3.2.4 | Desarrollar Adaptaciones al Software | 199FS+13d |
| 201 | 2.2.3.2.5 | Configuraci�n del Sistema en base al Documento de Caracter�sticas del Entidad | 200FS+2d |
| 202 | 2.2.3.2.6 | Configurar Interfaces | 201FS+1d |
| 203 | 2.2.3.2.7 | Configurar Usuarios y Autorizaciones | 202FS+1d |
| 204 | 2.2.3.3 | **Gesti�n del Cambio Organizacional** | 196FS+19.57d |
| 205 | 2.2.3.3.1 | Conducir la comunicaci�n de la Gesti�n de Cambios (si es aplicable) |  |
| 206 | 2.2.3.4 | **Pruebas de validaci�n del Sistema** | 204FS+0.29d |
| 207 | 2.2.3.4.1 | Mantener la Lista Maestra de Procesos de Entidad |  |

| ID | WBS | Task | Predecessors |
| --- | --- | --- | --- |
| 208 | 2.2.3.4.2 | **Conducir Talleres de Validaci�n** | 207FS+4h |
| 209 | 2.2.3.4.2.1 | 2.1 Administraci�n T�cnica |  |
| 210 | 2.2.3.4.2.2 | 2.2 Salud Ocupacional y Riesgos | 209FS+4h |
| 211 | 2.2.3.4.2.3 | 3.2 Adquisiciones | 210FS+2h |
| 212 | 2.2.3.4.2.4 | 6.1 Administraci�n de Bienes | 211FS+4h |
| 213 | 2.2.3.4.2.5 | 8.1 Contabilidad | 212FS+2h |
| 214 | 2.2.3.4.2.6 | 8.2 Presupuestos | 213FS+4h |
| 215 | 2.2.3.4.2.7 | 13 CRM para Urbanizaciones | 214FS+4h |
| 216 | 2.2.3.4.2.8 | 14 Direcci�n de Planificaci�n Institucional (Incluye control de proyectos de Obras P�blicas) | 215FS+2h |
| 217 | 2.2.3.4.2.9 | 15.6 BI Servicios Corporativos | 216FS+2h |
| 218 | 2.2.3.4.2.10 | 15.8 BI Planificaci�n Institucional | 217FS+2h |
| 219 | 2.2.3.5 | **Pruebas de aceptacion del Sistema** | 206FS+4.57d |
| 220 | 2.2.3.5.1 | Definir casos de prueba y alcance |  |
| 221 | 2.2.3.5.2 | Preparar ambiente de pruebas | 220FS+3h |
| 222 | 2.2.3.5.3 | **Ejecutar el plan de pruebas** | 221FS+1d |
| 223 | 2.2.3.5.3.1 | 2.1 Administraci�n T�cnica |  |
| 224 | 2.2.3.5.3.2 | 2.2 Salud Ocupacional y Riesgos | 223FS+4h |
| 225 | 2.2.3.5.3.3 | 3.2 Adquisiciones | 224FS+2h |
| 226 | 2.2.3.5.3.4 | 6.1 Administraci�n de Bienes | 225FS+4h |
| 227 | 2.2.3.5.3.5 | 8.1 Contabilidad | 226FS+2h |
| 228 | 2.2.3.5.3.6 | 8.2 Presupuestos | 227FS+4h |
| 229 | 2.2.3.5.3.7 | 13 CRM para Urbanizaciones | 228FS+4h |
| 230 | 2.2.3.5.3.8 | 14 Direcci�n de Planificaci�n Institucional (Incluye control de proyectos de Obras P�blicas) | 229FS+2h |
| 231 | 2.2.3.5.3.9 | 15.6 BI Servicios Corporativos | 230FS+2h |
| 232 | 2.2.3.5.3.10 | 15.8 BI Planificaci�n Institucional | 231FS+2h |
| 233 | 2.2.3.5.4 | Revisar los resultados de las pruebas y necesidades de cambios |  |

| ID | WBS | Task | Predecessors |
| --- | --- | --- | --- |
| 234 | 2.2.3.6 | **Planificar Salida a Producci�n y Soporte** | 219FS+5.43d |
| 235 | 2.2.3.6.1 | Definir Plan de Salida a Producci�n |  |
| 236 | 2.2.3.6.2 | Planificar Estrategia de Soporte | 235FS+3h |
| 237 | 2.2.3.6.3 | Planificar Administraci�n del Sistema | 236FS+3h |
| 238 | 2.2.3.7 | Revisar la ETAPA del Proyecto | 234FS+1.29d |
| 239 | 2.2.3.8 | HITO: FINALIZACION ETAPA 3 | 238FS+1d |
| 240 | 2.2.4 | **ETAPA 4: Preparaci�n Final previo Despliegue en Producci�n - M�dulos PRI** | 191FS+33.71d |
| 241 | 2.2.4.1 | **Gesti�n General del Proyecto** |  |
| 242 | 2.2.4.1.1 | Confirmar el Plan de Entrenamiento |  |
| 243 | 2.2.4.1.2 | Finalizar plan de Salida a Producci�n | 242FS+4h |
| 244 | 2.2.4.2 | **Entrenamiento** | 241FS+1.14d |
| 245 | 2.2.4.2.1 | **Entrenamiento de Usuarios Funcionales y Certificaci�n de Procesos** |  |
| 246 | 2.2.4.2.1.1 | 2.1 Administraci�n T�cnica |  |
| 247 | 2.2.4.2.1.2 | 2.2 Salud Ocupacional y Riesgos | 246FS+4h |
| 248 | 2.2.4.2.1.3 | 3.2 Adquisiciones | 247FS+2h |
| 249 | 2.2.4.2.1.4 | 6.1 Administraci�n de Bienes | 248FS+4h |
| 250 | 2.2.4.2.1.5 | 8.1 Contabilidad | 249FS+2h |
| 251 | 2.2.4.2.1.6 | 8.2 Presupuestos | 250FS+4h |
| 252 | 2.2.4.2.1.7 | 13 CRM para Urbanizaciones | 251FS+4h |
| 253 | 2.2.4.2.1.8 | 14 Direcci�n de Planificaci�n Institucional (Incluye control de proyectos de Obras P�blicas) | 252FS+2h |
| 254 | 2.2.4.2.1.9 | 15.6 BI Servicios Corporativos | 253FS+2h |
| 255 | 2.2.4.2.1.10 | 15.8 BI Planificaci�n Institucional | 254FS+2h |
| 256 | 2.2.4.2.2 | Entrenamiento de Usuario T�cnicos |  |
| 257 | 2.2.4.3 | **Preparaci�n del Sistema** | 244FS+6d |
| 258 | 2.2.4.3.1 | Completar la Administraci�n del Sistema |  |
| 259 | 2.2.4.3.2 | Comprobaci�n de la Puesta a Producci�n | 258FS+5h |

| ID | WBS | Task | Predecessors |
| --- | --- | --- | --- |
| 260 | 2.2.4.4 | **Transici�n** | 257FS+1.43d |
| 261 | 2.2.4.4.1 | Finalizar Procesamiento de Sistemas Legados |  |
| 262 | 2.2.4.4.2 | Realizar la Salida a Producci�n - Carga Inicial y Configuraci�n Inicial | 261FS+4h |
| 263 | 2.2.4.5 | Revisar la ETAPA del Proyecto | 260FS+2.57d |
| 264 | 2.2.4.6 | HITO: FINALIZACION ETAPA 4 | 263FS+2h |
| 265 | 2.2.5 | **ETAPA 5: Despliegue en Producci�n y Soporte T�cnico - M�dulos PRI** | 240FS+11.43d |
| 266 | 2.2.5.1 | **Soporte en Producci�n** |  |
| 267 | 2.2.5.1.1 | Soporte durante la Salida a Producci�n |  |
| 268 | 2.2.5.1.2 | Resolver incidentes cr�ticos | 263FS+2h |
| 269 | 2.2.5.1.3 | Entregar el soporte y Administraci�n al cliente | 263FS+2h |
| 270 | 2.2.5.2 | **Mejora Continua** | 266FS+15d |
| 271 | 2.2.5.2.1 | Monitoreo del Sistema y Acompa�amiento ETAPA2 | 263FS+2h |
| 272 | 2.2.5.2.2 | Ajustes y Configuraciones finales al Software acorde a necesidades Entidad | 263FS+2h |
| 273 | 2.2.5.3 | **Cierre de la FASE 2** | 270FS+15d |
| 274 | 2.2.5.3.1 | Reuni�n de Cierre de la FASE 2 |  |
| 275 | 2.2.5.4 | HITO: FIN DE LA FASE 2 | 273FS+0.43d |
| 276 | 2.3 | **FASE 3: Implementaci�n de M�dulos de Planificaci�n de Recursos Institucionales - PRI** |  |
| 277 | 2.3.1 | **ETAPA 1: Instalaci�n del SIIM - M�dulos PRI** |  |
| 278 | 2.3.1.1 | **Entrega e Instalaci�n del Software** |  |
| 279 | 2.3.1.1.1 | **Instalar SIIM en Servidor** |  |
| 280 | 2.3.1.1.1.1 | Instalar M�dulos PRI | 264 |
| 281 | 2.3.1.1.2 | Entrega de Software | 279FS+3d |
| 282 | 2.3.1.2 | Revisar la ETAPA del Proyecto | 278FS+3.29d |
| 283 | 2.3.1.3 | HITO: FINALIZACION ETAPA 1 | 282FS+1d |

| ID | WBS | Task | Predecessors |
| --- | --- | --- | --- |
| 284 | 2.3.2 | **ETAPA 2: Levantamiento de Caracter�sticas Institucionales - M�dulos PRI** | 277FS+4.29d |
| 285 | 2.3.2.1 | **Actividades de Gesti�n del Proyecto** |  |
| 286 | 2.3.2.1.1 | Revisi�n del Plan del Proyecto |  |
| 287 | 2.3.2.1.2 | Programar talleres de requerimientos de Entidad | 286FS+2h |
| 288 | 2.3.2.2 | **Sesiones de Requerimientos del Entidad** | 285FS+0.57d |
| 289 | 2.3.2.2.1 | Conducir Sesiones de Requerimientos |  |
| 290 | 2.3.2.2.2 | Crear Documento de Caracter�sticas del Entidad | 289FS+3d |
| 291 | 2.3.2.3 | **Revisar el Documento de Caracter�sticas del Entidad** | 288FS+6d |
| 292 | 2.3.2.3.1 | Revisar el Documento de Caracter�sticas del Entidad |  |
| 293 | 2.3.2.3.2 | Revisar el Plan del Proyecto | 292FS+4h |
| 294 | 2.3.2.4 | Revisar la ETAPA del Proyecto | 291FS+1d |
| 295 | 2.3.2.5 | HITO: FINALIZACION ETAPA 2 | 294FS+1d |
| 296 | 2.3.3 | **ETAPA 3: Migraci�n de Datos, Configuraci�n y Pruebas de Operaci�n de M�dulos - M�dulos PRI** | 284FS+8.57d |
| 297 | 2.3.3.1 | **Gesti�n General del Proyecto** |  |
| 298 | 2.3.3.1.1 | Planificar cambio Organizacional |  |
| 299 | 2.3.3.1.2 | Planificar Entrenamiento a Usuarios Finales | 298FS+3h |
| 300 | 2.3.3.1.3 | Definir y Preparar la Migraci�n de Datos | 299FS+4h |
| 301 | 2.3.3.2 | **Configuraci�n del Sistema en Producci�n** | 297FS+1.57d |
| 302 | 2.3.3.2.1 | Instalar el SIIM en Producci�n |  |
| 303 | 2.3.3.2.2 | Configurar Inicializaci�n del Sistema | 302FS+4h |
| 304 | 2.3.3.2.3 | Realizar la Migraci�n de Datos | 303FS+1d |
| 305 | 2.3.3.2.4 | Desarrollar Adaptaciones al Software | 304FS+10d |
| 306 | 2.3.3.2.5 | Configuraci�n del Sistema en base al Documento de Caracter�sticas del Entidad | 305FS+5d |
| 307 | 2.3.3.2.6 | Configurar Interfaces | 306FS+2d |
| 308 | 2.3.3.2.7 | Configurar Usuarios y Autorizaciones | 307FS+1d |

| ID | WBS | Task | Predecessors |
| --- | --- | --- | --- |
| 309 | 2.3.3.3 | **Gesti�n del Cambio Organizacional** | 301FS+20.57d |
| 310 | 2.3.3.3.1 | Conducir la comunicaci�n de la Gesti�n de Cambios (si es aplicable) |  |
| 311 | 2.3.3.4 | **Pruebas de validaci�n/aceptaci�n del Sistema** | 309FS+2d |
| 312 | 2.3.3.4.1 | Mantener la Lista Maestra de Procesos de Entidad |  |
| 313 | 2.3.3.4.2 | **Conducir Talleres de Validaci�n** | 312FS+4h |
| 314 | 2.3.3.4.2.1 | 3.1 Compras P�blicas |  |
| 315 | 2.3.3.4.2.2 | 6.2 Servicios Generales | 314FS+2h |
| 316 | 2.3.3.4.2.3 | 8.5 Gesti�n Jur�dica - Financiera | 315FS+2h |
| 317 | 2.3.3.4.2.4 | 15.2 BI Financiero | 316FS+2h |
| 318 | 2.3.3.4.2.5 | 15.3 BI Administraci�n del Talento Humano | 317FS+2h |
| 319 | 2.3.3.4.2.6 | 15.4 BI Compras P�blicas | 318FS+2h |
| 320 | 2.3.3.4.2.7 | 15.9 Tablero de Control | 319FS+2h |
| 321 | 2.3.3.5 | **Pruebas de aceptacion del Sistema** | 311FS+2.57d |
| 322 | 2.3.3.5.1 | Definir casos de prueba y alcance |  |
| 323 | 2.3.3.5.2 | Preparar ambiente de pruebas | 322FS+3h |
| 324 | 2.3.3.5.3 | **Ejecutar el plan de pruebas** | 323FS+1d |
| 325 | 2.3.3.5.3.1 | 3.1 Compras P�blicas |  |
| 326 | 2.3.3.5.3.2 | 6.2 Servicios Generales | 325FS+2h |
| 327 | 2.3.3.5.3.3 | 8.5 Gesti�n Jur�dica - Financiera | 326FS+2h |
| 328 | 2.3.3.5.3.4 | 15.2 BI Financiero | 327FS+2h |
| 329 | 2.3.3.5.3.5 | 15.3 BI Administraci�n del Talento Humano | 328FS+2h |
| 330 | 2.3.3.5.3.6 | 15.4 BI Compras P�blicas | 329FS+2h |
| 331 | 2.3.3.5.3.7 | 15.9 Tablero de Control | 330FS+2h |
| 332 | 2.3.3.5.4 | Revisar los resultados de las pruebas y necesidades de cambios | 331FS+2h, 320FS+2h |

| ID | WBS | Task | Predecessors |
| --- | --- | --- | --- |
| 333 | 2.3.3.6 | **Planificar Salida a Producci�n y Soporte** | 321FS+4.43d |
| 334 | 2.3.3.6.1 | Definir Plan de Salida a Producci�n |  |
| 335 | 2.3.3.6.2 | Planificar Estrategia de Soporte | 334FS+3h |
| 336 | 2.3.3.6.3 | Planificar Administraci�n del Sistema | 335FS+3h |
| 337 | 2.3.3.7 | Revisar la ETAPA del Proyecto | 333FS+1.29d |
| 338 | 2.3.3.8 | HITO: FINALIZACION ETAPA 3 | 337FS+1d |
| 339 | 2.3.4 | **ETAPA 4: Preparaci�n Final previo Despliegue en Producci�n - M�dulos PRI** | 296FS+33.43d |
| 340 | 2.3.4.1 | **Gesti�n General del Proyecto** |  |
| 341 | 2.3.4.1.1 | Confirmar el Plan de Entrenamiento |  |
| 342 | 2.3.4.1.2 | Finalizar plan de Salida a Producci�n | 341FS+4h |
| 343 | 2.3.4.2 | **Entrenamiento** | 340FS+1.14d |
| 344 | 2.3.4.2.1 | **Entrenamiento de Usuarios Funcionales y Certificaci�n de Procesos** |  |
| 345 | 2.3.4.2.1.1 | 3.1 Compras P�blicas |  |
| 346 | 2.3.4.2.1.2 | 6.2 Servicios Generales | 345FS+4h |
| 347 | 2.3.4.2.1.3 | 8.5 Gesti�n Jur�dica - Financiera | 346FS+4h |
| 348 | 2.3.4.2.1.4 | 15.2 BI Financiero | 347FS+4h |
| 349 | 2.3.4.2.1.5 | 15.3 BI Administraci�n del Talento Humano | 348FS+4h |
| 350 | 2.3.4.2.1.6 | 15.4 BI Compras P�blicas | 349FS+4h |
| 351 | 2.3.4.2.1.7 | 15.9 Tablero de Control | 350FS+4h |
| 352 | 2.3.4.2.2 | Entrenamiento de Usuario T�cnicos | 351FS+4h |
| 353 | 2.3.4.3 | **Preparaci�n del Sistema** | 343FS+7d |
| 354 | 2.3.4.3.1 | Completar la Administraci�n del Sistema |  |
| 355 | 2.3.4.3.2 | Comprobaci�n de la Puesta a Producci�n | 354FS+5h |
| 356 | 2.3.4.4 | **Transici�n** | 353FS+1.43d |
| 357 | 2.3.4.4.1 | Finalizar Procesamiento de Sistemas Legados |  |
| 358 | 2.3.4.4.2 | Realizar la Salida a Producci�n - Carga Inicial y Configuraci�n Inicial | 357FS+4h |
| 359 | 2.3.4.5 | Revisar la ETAPA del Proyecto | 356FS+2.57d |
| 360 | 2.3.4.6 | HITO: FINALIZACION ETAPA 4 | 359FS+2h |

| ID | WBS | Task | Predecessors |
| --- | --- | --- | --- |
| 361 | 2.3.5 | **ETAPA 5: Despliegue en Producci�n y Soporte T�cnico - M�dulos PRI** | 339FS+12.43d |
| 362 | 2.3.5.1 | **Soporte en Producci�n** |  |
| 363 | 2.3.5.1.1 | Soporte durante la Salida a Producci�n |  |
| 364 | 2.3.5.1.2 | Resolver incidentes cr�ticos | 363FS+5d |
| 365 | 2.3.5.1.3 | Entregar el soporte y Administraci�n al cliente | 364FS+3d |
| 366 | 2.3.5.2 | **Mejora Continua** | 339FS+12.43d |
| 367 | 2.3.5.2.1 | Monitoreo del Sistema y Acompa�amiento |  |
| 368 | 2.3.5.2.2 | Ajustes y Configuraciones finales al Software acorde a necesidades Entidad | 339FS+12.43d |
| 369 | 2.3.5.3 | **Cierre de la FASE 3 y Proyecto** | 366FS+15d |
| 370 | 2.3.5.3.1 | Reuni�n de Cierre de la FASE 3 y Proyecto |  |
| 371 | 2.3.5.4 | HITO: FIN DE LA FASE 3 y Proyecto | 366FS+15d |
