# 20190122- Plan del Proyecto de Implementacion del SIIM Daule

Schedule from MS Project XML, 2018-07-16 to 2019-07-10, A marks actual dates.
PlanERP

## Calendars

- Estándar: Mon-Fri 08:00-12:00, 13:00-17:00; Sat-Sun off.

## Resources

| Resource |
| --- |
| Administrador de Contrato - Cliente |
| Líder Técnico - Cliente |
| Líder Funcional - Usuario Experto - Cliente |
| Funcionarios Técnicos - Cliente |
| Usuarios Finales - Cliente |
| Desarrollador PlanERP |
| Gerente de Proyecto PlanERP |
| Líder del Proyecto/Desarrollo PlanERP |
| Analista Procesos PlanERP |
| Analista de Calidad PlanERP |
| Especialista Base de Datos PlanERP |
| Consultor Especialista en Procesos de GADs PlanERP |

## Schedule

| ID | WBS | Task | Duration | Start | Finish | Predecessors | Resources | Porcentage Avance |
| --- | --- | --- | --- | --- | --- | --- | --- | --- |
| 1 | 0 | 20190122- Plan del Proyecto de Implementacion del SIIM Daule | 0d? | 2018-07-16 A | 2019-07-10 |  |  |  |
| 2 | 2 | **Programa de Implementación SIIM** | 0d | 2018-07-16 A | 2019-07-10 |  |  |  |
| 3 | 2.1 | **FASE 1: Implementación de Módulos de Servicio al Cliente (SC) y Atención al Ciudadano (AC)** | 0d | 2018-07-16 A | 2019-01-25 A |  |  |  |
| 4 | 2.1.1 | **ETAPA 1: Preparación del Proyecto e Instalación del SIIM - Módulos SC y AC** | 0d | 2018-07-16 A | 2018-07-25 A |  |  |  |
| 5 | 2.1.1.1 | **Actividades de Gestión del Proyecto** | 0d | 2018-07-16 A | 2018-07-18 A |  |  |  |
| 6 | 2.1.1.1.1 | Revisión de Información de Contrato y Anexos | 0d | 2018-07-16 A | 2018-07-16 A |  | Gerente de Proyecto PlanERP; Líder del Proyecto/Desarrollo PlanERP |  |
| 7 | 2.1.1.1.2 | Definir la Organización del Proyecto | 0d | 2018-07-16 A | 2018-07-17 A | 6FS+6h | Gerente de Proyecto PlanERP; Líder del Proyecto/Desarrollo PlanERP |  |
| 8 | 2.1.1.1.3 | Kick-off Interno del Proyecto | 0d | 2018-07-17 A | 2018-07-18 A | 7FS+4h | Gerente de Proyecto PlanERP; Líder del Proyecto/Desarrollo PlanERP |  |
| 9 | 2.1.1.2 | **Preparación del kick-off del Proyecto** | 0d | 2018-07-18 A | 2018-07-19 A |  |  |  |
| 10 | 2.1.1.2.1 | Comunicación con el Cliente | 0d | 2018-07-18 A | 2018-07-18 A | 8FS+6h | Administrador de Contrato - Cliente; Gerente de Proyecto PlanERP |  |
| 11 | 2.1.1.2.2 | Crear la presentación del kick-off | 0d | 2018-07-18 A | 2018-07-19 A | 10FS+4h | Gerente de Proyecto PlanERP; Líder del Proyecto/Desarrollo PlanERP |  |
| 12 | 2.1.1.3 | **Reunión de Kick-off** | 0d | 2018-07-19 A | 2018-07-19 A |  |  |  |
| 13 | 2.1.1.3.1 | Realizar la reunión de kick-off | 0d | 2018-07-19 A | 2018-07-19 A | 11FS+4h | Administrador de Contrato - Cliente; Líder Funcional - Usuario Experto - Cliente; Gerente de Proyecto PlanERP; Líder Técnico - Cliente; Líder del Proyecto/Desarrollo PlanERP |  |
| 14 | 2.1.1.4 | **Entrega e Instalación del Software** | 0d | 2018-07-19 A | 2018-07-25 A |  |  |  |
| 15 | 2.1.1.4.1 | **Instalar SIIM en Servidor** | 0d | 2018-07-19 A | 2018-07-24 A | 12FS+0.29d | Funcionarios Técnicos - Cliente |  |
| 16 | 2.1.1.4.1.1 | 1 Dirección de Desarrollo Territorial (No incluye Catastro) | 0d | 2018-07-19 A | 2018-07-19 A |  |  |  |
| 17 | 2.1.1.4.1.2 | 4 Dirección de Justicia y Vigilancia | 0d | 2018-07-19 A | 2018-07-19 A | 16FS+2h |  |  |
| 18 | 2.1.1.4.1.3 | 5 Dirección de Desarrollo Humano y Social | 0d | 2018-07-19 A | 2018-07-20 A | 17FS+2h |  |  |
| 19 | 2.1.1.4.1.4 | 8.3 Rentas | 0d | 2018-07-20 A | 2018-07-20 A | 18FS+2h |  |  |
| 20 | 2.1.1.4.1.5 | 8.4 Tesorería | 0d | 2018-07-20 A | 2018-07-20 A | 19FS+2h |  |  |
| 21 | 2.1.1.4.1.6 | 9.1 Mercados | 0d | 2018-07-20 A | 2018-07-20 A | 20FS+2h |  |  |
| 22 | 2.1.1.4.1.7 | 9.2 Cementerio | 0d | 2018-07-20 A | 2018-07-20 A | 21FS+1h |  |  |
| 23 | 2.1.1.4.1.8 | 9.3 Camal | 0d | 2018-07-20 A | 2018-07-20 A | 22FS+1h |  |  |
| 24 | 2.1.1.4.1.9 | 10 Registro de la Propiedad y Mercantil | 0d | 2018-07-20 A | 2018-07-23 A | 23FS+1h |  |  |
| 25 | 2.1.1.4.1.10 | 11 Administración de bomberos | 0d | 2018-07-23 A | 2018-07-23 A | 24FS+2h |  |  |
| 26 | 2.1.1.4.1.11 | 12 CRM para ciudadanos. Ventanilla Única | 0d | 2018-07-23 A | 2018-07-23 A | 25FS+1h |  |  |
| 27 | 2.1.1.4.1.12 | 15.1 BI Desarrollo Territorial | 0d | 2018-07-23 A | 2018-07-23 A | 26FS+2h |  |  |
| 28 | 2.1.1.4.1.13 | 15.5 BI Obras Públicas Municipales | 0d | 2018-07-23 A | 2018-07-24 A | 27FS+2h |  |  |
| 29 | 2.1.1.4.1.14 | 15.7 BI Registro de la Propiedad y Mercantil | 0d | 2018-07-24 A | 2018-07-24 A | 28FS+2h |  |  |
| 30 | 2.1.1.4.1.15 | 16.1 Consultas Portal Web | 0d | 2018-07-24 A | 2018-07-24 A | 29FS+2h |  |  |
| 31 | 2.1.1.4.1.16 | 16.2 Aplicación para móviles (APP) | 0d | 2018-07-24 A | 2018-07-24 A | 30FS+2h |  |  |
| 32 | 2.1.1.4.2 | Entrega de Software | 0d | 2018-07-24 A | 2018-07-25 A | 15FS+4d | Gerente de Proyecto PlanERP; Administrador de Contrato - Cliente |  |
| 33 | 2.1.1.5 | Revisar la ETAPA del Proyecto | 0d | 2018-07-25 A | 2018-07-25 A | 14FS+4.29d | Administrador de Contrato - Cliente; Gerente de Proyecto PlanERP; Analista de Calidad PlanERP |  |
| 34 | 2.1.1.6 | HITO: FINALIZACION ETAPA 1 | 0d | 2018-07-25 A | 2018-07-25 A | 33FS+1d |  | 5% |

| ID | WBS | Task | Duration | Start | Finish | Predecessors | Resources | Porcentage Avance |
| --- | --- | --- | --- | --- | --- | --- | --- | --- |
| 35 | 2.1.2 | **ETAPA 2: Levantamiento de Características Institucionales - Módulos SC y AC** | 0d | 2018-07-25 A | 2018-08-13 A | 4FS+9d |  |  |
| 36 | 2.1.2.1 | **Actividades de Gestión del Proyecto** | 0d | 2018-07-25 A | 2018-07-26 A |  |  |  |
| 37 | 2.1.2.1.1 | Revisión del Plan del Proyecto | 0d | 2018-07-25 A | 2018-07-26 A | 33FS+1d | Administrador de Contrato - Cliente; Gerente de Proyecto PlanERP |  |
| 38 | 2.1.2.1.2 | Programar talleres de requerimientos de Entidad | 0d | 2018-07-26 A | 2018-07-26 A | 37FS+4h | Administrador de Contrato - Cliente; Gerente de Proyecto PlanERP |  |
| 39 | 2.1.2.2 | **Sesiones de Requerimientos del Entidad** | 0d | 2018-07-26 A | 2018-08-10 A |  |  |  |
| 40 | 2.1.2.2.1 | Conducir Sesiones de Requerimientos | 0d | 2018-07-26 A | 2018-08-08 A | 38FS+4h | Funcionarios Técnicos - Cliente; Analista Procesos PlanERP; Consultor Especialista en Procesos de GADs PlanERP |  |
| 41 | 2.1.2.2.2 | Crear Documento de Características del Entidad | 0d | 2018-08-08 A | 2018-08-10 A | 40FS+10d | Analista Procesos PlanERP; Funcionarios Técnicos - Cliente; Consultor Especialista en Procesos de GADs PlanERP |  |
| 42 | 2.1.2.3 | **Revisar el Documento de Características del Entidad** | 0d | 2018-08-10 A | 2018-08-10 A |  |  |  |
| 43 | 2.1.2.3.1 | Revisar el Documento de Características del Entidad | 0d | 2018-08-10 A | 2018-08-10 A | 41FS+2d | Administrador de Contrato - Cliente; Gerente de Proyecto PlanERP; Analista de Calidad PlanERP; Consultor Especialista en Procesos de GADs PlanERP; Analista Procesos PlanERP |  |
| 44 | 2.1.2.3.2 | Revisar el Plan del Proyecto | 0d | 2018-08-10 A | 2018-08-10 A | 43FS+2h | Administrador de Contrato - Cliente; Gerente de Proyecto PlanERP |  |
| 45 | 2.1.2.4 | Revisar la ETAPA del Proyecto | 0d | 2018-08-10 A | 2018-08-13 A | 42FS+0.57d | Administrador de Contrato - Cliente; Gerente de Proyecto PlanERP; Líder del Proyecto/Desarrollo PlanERP; Analista de Calidad PlanERP |  |
| 46 | 2.1.2.5 | HITO: FINALIZACION ETAPA 2 | 0d | 2018-08-13 A | 2018-08-13 A | 45FS+1d |  | 10% |
| 47 | 2.1.3 | **ETAPA 3: Migración de Datos, Configuración y Pruebas de Operación - Módulos SC y AC** | 0d | 2018-08-13 A | 2018-10-22 A | 35FS+14.71d |  |  |
| 48 | 2.1.3.1 | **Gestión General del Proyecto** | 0d | 2018-08-13 A | 2018-08-14 A |  |  |  |
| 49 | 2.1.3.1.1 | Planificar cambio Organizacional | 0d | 2018-08-13 A | 2018-08-14 A | 45FS+1d | Administrador de Contrato - Cliente; Gerente de Proyecto PlanERP; Líder del Proyecto/Desarrollo PlanERP |  |
| 50 | 2.1.3.1.2 | Planificar Entrenamiento a Usuarios Finales | 0d | 2018-08-14 A | 2018-08-14 A | 49FS+2h | Administrador de Contrato - Cliente; Gerente de Proyecto PlanERP; Líder del Proyecto/Desarrollo PlanERP |  |
| 51 | 2.1.3.1.3 | Definir y Preparar la Migración de Datos | 0d | 2018-08-14 A | 2018-08-14 A | 49FS+2h | Funcionarios Técnicos - Cliente; Líder del Proyecto/Desarrollo PlanERP; Especialista Base de Datos PlanERP |  |
| 52 | 2.1.3.2 | **Configuración del Sistema en Producción** | 0d | 2018-08-14 A | 2018-10-22 A |  |  |  |
| 53 | 2.1.3.2.1 | Instalar el SIIM en Producción | 0d | 2018-08-14 A | 2018-08-15 A | 51FS+2h | Funcionarios Técnicos - Cliente; Analista Procesos PlanERP; Desarrollador PlanERP; Líder del Proyecto/Desarrollo PlanERP; Especialista Base de Datos PlanERP |  |
| 54 | 2.1.3.2.2 | Configurar Inicialización del Sistema | 0d | 2018-08-15 A | 2018-08-16 A | 53FS+1d | Funcionarios Técnicos - Cliente; Analista Procesos PlanERP; Desarrollador PlanERP; Líder del Proyecto/Desarrollo PlanERP; Especialista Base de Datos PlanERP |  |
| 55 | 2.1.3.2.3 | Realizar la Migración de Datos | 0d | 2018-08-16 A | 2018-10-22 A | 54FS+1d | Funcionarios Técnicos - Cliente; Analista Procesos PlanERP; Desarrollador PlanERP; Líder del Proyecto/Desarrollo PlanERP; Especialista Base de Datos PlanERP |  |
| 56 | 2.1.3.2.4 | Desarrollar Adaptaciones al Software | 0d | 2018-08-16 A | 2018-08-28 A | 54FS+1d | Funcionarios Técnicos - Cliente; Analista Procesos PlanERP; Desarrollador PlanERP; Líder del Proyecto/Desarrollo PlanERP; Especialista Base de Datos PlanERP |  |
| 57 | 2.1.3.2.5 | Configuración del Sistema en base al Documento de Características del Entidad | 0d | 2018-08-28 A | 2018-08-31 A | 56FS+10d | Funcionarios Técnicos - Cliente; Analista Procesos PlanERP; Desarrollador PlanERP; Líder del Proyecto/Desarrollo PlanERP; Especialista Base de Datos PlanERP |  |
| 58 | 2.1.3.2.6 | Configurar Interfaces | 0d | 2018-08-31 A | 2018-09-03 A | 57FS+3d | Funcionarios Técnicos - Cliente; Analista Procesos PlanERP; Desarrollador PlanERP; Líder del Proyecto/Desarrollo PlanERP; Especialista Base de Datos PlanERP |  |
| 59 | 2.1.3.2.7 | Configurar Usuarios y Autorizaciones | 0d | 2018-09-03 A | 2018-09-04 A | 58FS+1d | Funcionarios Técnicos - Cliente; Analista Procesos PlanERP; Desarrollador PlanERP; Líder del Proyecto/Desarrollo PlanERP; Especialista Base de Datos PlanERP |  |

| ID | WBS | Task | Duration | Start | Finish | Predecessors | Resources |
| --- | --- | --- | --- | --- | --- | --- | --- |
| 60 | 2.1.3.3 | **Gestión del Cambio Organizacional** | 0d | 2018-09-04 A | 2018-09-05 A |  |  |
| 61 | 2.1.3.3.1 | Conducir la comunicación de la Gestión de Cambios (si es aplicable) | 0d | 2018-09-04 A | 2018-09-05 A | 59FS+1d | Administrador de Contrato - Cliente; Líder Funcional - Usuario Experto - Cliente; Gerente de Proyecto PlanERP; Consultor Especialista en Procesos de GADs PlanERP |
| 62 | 2.1.3.4 | **Pruebas de validación/aceptación del Sistema** | 0d | 2018-09-05 A | 2018-09-10 A |  |  |
| 63 | 2.1.3.4.1 | Mantener la Lista Maestra de Procesos de Entidad | 0d | 2018-09-05 A | 2018-09-05 A | 61FS+1d | Líder Funcional - Usuario Experto - Cliente; Gerente de Proyecto PlanERP; Líder del Proyecto/Desarrollo PlanERP; Analista Procesos PlanERP; Consultor Especialista en Procesos de GADs PlanERP |
| 64 | 2.1.3.4.2 | **Conducir Talleres de Validación** | 0d | 2018-09-05 A | 2018-09-10 A | 63FS+2h | Líder Funcional - Usuario Experto - Cliente; Analista Procesos PlanERP; Analista de Calidad PlanERP; Consultor Especialista en Procesos de GADs PlanERP |
| 65 | 2.1.3.4.2.1 | 1 Dirección de Desarrollo Territorial (No incluye Catastro) | 0d | 2018-09-05 A | 2018-09-05 A |  |  |
| 66 | 2.1.3.4.2.2 | 4 Dirección de Justicia y Vigilancia | 0d | 2018-09-05 A | 2018-09-05 A | 65FS+2h |  |
| 67 | 2.1.3.4.2.3 | 5 Dirección de Desarrollo Humano y Social | 0d | 2018-09-05 A | 2018-09-05 A | 66FS+2h |  |
| 68 | 2.1.3.4.2.4 | 8.3 Rentas | 0d | 2018-09-05 A | 2018-09-06 A | 67FS+1h |  |
| 69 | 2.1.3.4.2.5 | 8.4 Tesorería | 0d | 2018-09-06 A | 2018-09-06 A | 68FS+2h |  |
| 70 | 2.1.3.4.2.6 | 9.1 Mercados | 0d | 2018-09-06 A | 2018-09-06 A | 69FS+2h |  |
| 71 | 2.1.3.4.2.7 | 9.2 Cementerio | 0d | 2018-09-06 A | 2018-09-06 A | 70FS+1h |  |
| 72 | 2.1.3.4.2.8 | 9.3 Camal | 0d | 2018-09-06 A | 2018-09-06 A | 71FS+1h |  |
| 73 | 2.1.3.4.2.9 | 10 Registro de la Propiedad y Mercantil | 0d | 2018-09-06 A | 2018-09-07 A | 72FS+1h |  |
| 74 | 2.1.3.4.2.10 | 11 Administración de bomberos | 0d | 2018-09-07 A | 2018-09-07 A | 73FS+2h |  |
| 75 | 2.1.3.4.2.11 | 12 CRM para ciudadanos. Ventanilla Única | 0d | 2018-09-07 A | 2018-09-07 A | 74FS+1h |  |
| 76 | 2.1.3.4.2.12 | 15.1 BI Desarrollo Territorial | 0d | 2018-09-07 A | 2018-09-07 A | 75FS+2h |  |
| 77 | 2.1.3.4.2.13 | 15.5 BI Obras Públicas Municipales | 0d | 2018-09-07 A | 2018-09-07 A | 76FS+1h |  |
| 78 | 2.1.3.4.2.14 | 15.7 BI Registro de la Propiedad y Mercantil | 0d | 2018-09-07 A | 2018-09-07 A | 77FS+1h |  |
| 79 | 2.1.3.4.2.15 | 16.1 Consultas Portal Web | 0d | 2018-09-07 A | 2018-09-07 A | 78FS+1h |  |
| 80 | 2.1.3.4.2.16 | 16.2 Aplicación para móviles (APP) | 0d | 2018-09-07 A | 2018-09-10 A | 79FS+1h |  |
| 81 | 2.1.3.5 | **Pruebas de Aceptacion Sistema** | 0d | 2018-09-10 A | 2018-09-14 A |  |  |
| 82 | 2.1.3.5.1 | Definir casos de prueba y alcance | 0d | 2018-09-10 A | 2018-09-10 A | 80FS+1h, 31FS+2h | Líder Funcional - Usuario Experto - Cliente; Líder del Proyecto/Desarrollo PlanERP; Analista de Calidad PlanERP; Funcionarios Técnicos - Cliente |
| 83 | 2.1.3.5.2 | Preparar ambiente de pruebas | 0d | 2018-09-10 A | 2018-09-11 A | 82FS+2h | Funcionarios Técnicos - Cliente; Líder Funcional - Usuario Experto - Cliente; Líder del Proyecto/Desarrollo PlanERP; Analista de Calidad PlanERP |

| ID | WBS | Task | Duration | Start | Finish | Predecessors | Resources | Porcentage Avance |
| --- | --- | --- | --- | --- | --- | --- | --- | --- |
| 84 | 2.1.3.5.3 | **Ejecutar el plan de pruebas de Aceptacion del Sistema** | 0d | 2018-09-11 A | 2018-09-13 A | 83FS+1d | Líder Funcional - Usuario Experto - Cliente; Líder del Proyecto/Desarrollo PlanERP; Analista de Calidad PlanERP; Funcionarios Técnicos - Cliente; Consultor Especialista en Procesos de GADs PlanERP |  |
| 85 | 2.1.3.5.3.1 | 1 Dirección de Desarrollo Territorial (No incluye Catastro) | 0d | 2018-09-11 A | 2018-09-11 A |  |  |  |
| 86 | 2.1.3.5.3.2 | 4 Dirección de Justicia y Vigilancia | 0d | 2018-09-11 A | 2018-09-11 A | 85FS+2h |  |  |
| 87 | 2.1.3.5.3.3 | 5 Dirección de Desarrollo Humano y Social | 0d | 2018-09-11 A | 2018-09-11 A | 86FS+2h |  |  |
| 88 | 2.1.3.5.3.4 | 8.3 Rentas | 0d | 2018-09-11 A | 2018-09-12 A | 87FS+1h |  |  |
| 89 | 2.1.3.5.3.5 | 8.4 Tesorería | 0d | 2018-09-12 A | 2018-09-12 A | 88FS+2h |  |  |
| 90 | 2.1.3.5.3.6 | 9.1 Mercados | 0d | 2018-09-12 A | 2018-09-12 A | 89FS+2h |  |  |
| 91 | 2.1.3.5.3.7 | 9.2 Cementerio | 0d | 2018-09-12 A | 2018-09-12 A | 90FS+1h |  |  |
| 92 | 2.1.3.5.3.8 | 9.3 Camal | 0d | 2018-09-12 A | 2018-09-12 A | 91FS+1h |  |  |
| 93 | 2.1.3.5.3.9 | 10 Registro de la Propiedad y Mercantil | 0d | 2018-09-12 A | 2018-09-12 A | 92FS+1h |  |  |
| 94 | 2.1.3.5.3.10 | 11 Administración de bomberos | 0d | 2018-09-12 A | 2018-09-13 A | 93FS+2h |  |  |
| 95 | 2.1.3.5.3.11 | 12 CRM para ciudadanos. Ventanilla Única | 0d | 2018-09-13 A | 2018-09-13 A | 94FS+1h |  |  |
| 96 | 2.1.3.5.3.12 | 15.1 BI Desarrollo Territorial | 0d | 2018-09-13 A | 2018-09-13 A | 95FS+2h |  |  |
| 97 | 2.1.3.5.3.13 | 15.5 BI Obras Públicas Municipales | 0d | 2018-09-13 A | 2018-09-13 A | 96FS+1h |  |  |
| 98 | 2.1.3.5.3.14 | 15.7 BI Registro de la Propiedad y Mercantil | 0d | 2018-09-13 A | 2018-09-13 A | 97FS+1h |  |  |
| 99 | 2.1.3.5.3.15 | 16.1 Consultas Portal Web | 0d | 2018-09-13 A | 2018-09-13 A | 98FS+1h |  |  |
| 100 | 2.1.3.5.3.16 | 16.2 Aplicación para móviles (APP) | 0d | 2018-09-13 A | 2018-09-13 A | 99FS+1h |  |  |
| 101 | 2.1.3.5.4 | Revisar los resultados de las pruebas y necesidades de cambios | 0d | 2018-09-13 A | 2018-09-14 A | 100FS+1h, 80FS+1h, 31FS+2h | Administrador de Contrato - Cliente; Gerente de Proyecto PlanERP; Analista de Calidad PlanERP; Consultor Especialista en Procesos de GADs PlanERP |  |
| 102 | 2.1.3.6 | **Planificar Salida a Producción y Soporte** | 0d | 2018-09-14 A | 2018-09-17 A |  |  |  |
| 103 | 2.1.3.6.1 | Definir Plan de Salida a Producción | 0d | 2018-09-14 A | 2018-09-17 A | 101FS+1d | Administrador de Contrato - Cliente; Líder Funcional - Usuario Experto - Cliente; Gerente de Proyecto PlanERP; Líder del Proyecto/Desarrollo PlanERP |  |
| 104 | 2.1.3.6.2 | Planificar Estrategia de Soporte | 0d | 2018-09-14 A | 2018-09-17 A | 101FS+1d | Administrador de Contrato - Cliente; Líder Funcional - Usuario Experto - Cliente; Gerente de Proyecto PlanERP; Líder del Proyecto/Desarrollo PlanERP |  |
| 105 | 2.1.3.6.3 | Planificar Administración del Sistema | 0d | 2018-09-14 A | 2018-09-17 A | 101FS+1d | Administrador de Contrato - Cliente; Líder Funcional - Usuario Experto - Cliente; Gerente de Proyecto PlanERP; Líder del Proyecto/Desarrollo PlanERP |  |
| 106 | 2.1.3.7 | Revisar la ETAPA del Proyecto | 0d | 2018-09-17 A | 2018-09-17 A | 102FS+0.29d | Administrador de Contrato - Cliente; Gerente de Proyecto PlanERP; Líder del Proyecto/Desarrollo PlanERP; Analista de Calidad PlanERP |  |
| 107 | 2.1.3.8 | HITO: FINALIZACION ETAPA 3 | 0d | 2018-09-17 A | 2018-09-17 A | 106FS+1d |  | 25% |

| ID | WBS | Task | Duration | Start | Finish | Predecessors | Resources |
| --- | --- | --- | --- | --- | --- | --- | --- |
| 108 | 2.1.4 | **ETAPA 4: Preparación Final previo Despliegue en Producción - Módulos SC y AC** | 0d | 2018-09-17 A | 2018-10-11 A |  |  |
| 109 | 2.1.4.1 | **Gestión General del Proyecto** | 0d | 2018-09-17 A | 2018-09-18 A |  |  |
| 110 | 2.1.4.1.1 | Confirmar el Plan de Entrenamiento | 0d | 2018-09-17 A | 2018-09-18 A | 106FS+1d | Administrador de Contrato - Cliente; Funcionarios Técnicos - Cliente; Gerente de Proyecto PlanERP; Líder del Proyecto/Desarrollo PlanERP |
| 111 | 2.1.4.1.2 | Finalizar plan de Salida a Producción | 0d | 2018-09-18 A | 2018-09-18 A | 110FS+2h | Administrador de Contrato - Cliente; Funcionarios Técnicos - Cliente; Gerente de Proyecto PlanERP; Líder del Proyecto/Desarrollo PlanERP; Analista de Calidad PlanERP |
| 112 | 2.1.4.2 | **Entrenamiento en Modulos de Areas Funcionales Fase 1** | 0d | 2018-09-18 A | 2018-10-08 A | 109FS+0.57d |  |
| 113 | 2.1.4.2.1 | **Entrenamiento de Usuarios Funcionales y Certificación de Procesos** | 0d | 2018-09-18 A | 2018-10-02 A | 111FS+2h | Líder Funcional - Usuario Experto - Cliente; Usuarios Finales - Cliente; Funcionarios Técnicos - Cliente; Analista Procesos PlanERP; Desarrollador PlanERP; Consultor Especialista en Procesos de GADs PlanERP |
| 114 | 2.1.4.2.1.1 | 1 Dirección de Desarrollo Territorial (No incluye Catastro) | 0d | 2018-09-18 A | 2018-09-19 A |  |  |
| 115 | 2.1.4.2.1.2 | 4 Dirección de Justicia y Vigilancia | 0d | 2018-09-19 A | 2018-09-20 A | 114FS+1d |  |
| 116 | 2.1.4.2.1.3 | 5 Dirección de Desarrollo Humano y Social | 0d | 2018-09-20 A | 2018-09-21 A | 115FS+1d |  |
| 117 | 2.1.4.2.1.4 | 8.3 Rentas | 0d | 2018-09-21 A | 2018-09-21 A | 116FS+1d |  |
| 118 | 2.1.4.2.1.5 | 8.4 Tesorería | 0d | 2018-09-21 A | 2018-09-24 A | 117FS+1d |  |
| 119 | 2.1.4.2.1.6 | 9.1 Mercados | 0d | 2018-09-24 A | 2018-09-25 A | 118FS+1d |  |
| 120 | 2.1.4.2.1.7 | 9.2 Cementerio | 0d | 2018-09-25 A | 2018-09-25 A | 119FS+0.5d |  |
| 121 | 2.1.4.2.1.8 | 9.3 Camal | 0d | 2018-09-25 A | 2018-09-26 A | 120FS+0.5d |  |
| 122 | 2.1.4.2.1.9 | 10 Registro de la Propiedad y Mercantil | 0d | 2018-09-26 A | 2018-09-26 A | 121FS+0.5d |  |
| 123 | 2.1.4.2.1.10 | 11 Administración de bomberos | 0d | 2018-09-27 A | 2018-09-27 A | 122FS+1d |  |
| 124 | 2.1.4.2.1.11 | 12 CRM para ciudadanos. Ventanilla Única | 0d | 2018-09-27 A | 2018-09-28 A | 123FS+0.5d |  |
| 125 | 2.1.4.2.1.12 | 15.1 BI Desarrollo Territorial | 0d | 2018-09-28 A | 2018-09-28 A | 124FS+1d |  |
| 126 | 2.1.4.2.1.13 | 15.5 BI Obras Públicas Municipales | 0d | 2018-09-28 A | 2018-10-01 A | 125FS+0.5d |  |
| 127 | 2.1.4.2.1.14 | 15.7 BI Registro de la Propiedad y Mercantil | 0d | 2018-10-01 A | 2018-10-01 A | 126FS+0.5d |  |
| 128 | 2.1.4.2.1.15 | 16.1 Consultas Portal Web | 0d | 2018-10-01 A | 2018-10-02 A | 127FS+0.5d |  |
| 129 | 2.1.4.2.1.16 | 16.2 Aplicación para móviles (APP) | 0d | 2018-10-02 A | 2018-10-02 A | 128FS+1d |  |
| 130 | 2.1.4.2.2 | Entrenamiento de Usuario Técnicos | 0d | 2018-10-02 A | 2018-10-08 A | 129FS+0.5d, 100FS+1h, 80FS+1h, 31FS+2h | Funcionarios Técnicos - Cliente; Desarrollador PlanERP; Especialista Base de Datos PlanERP; Líder del Proyecto/Desarrollo PlanERP |
| 131 | 2.1.4.3 | **Preparación del Sistema** | 0d | 2018-10-08 A | 2018-10-09 A | 112FS+16d |  |
| 132 | 2.1.4.3.1 | Completar la Administración del Sistema | 0d | 2018-10-08 A | 2018-10-08 A |  | Funcionarios Técnicos - Cliente; Desarrollador PlanERP; Analista Procesos PlanERP |
| 133 | 2.1.4.3.2 | Comprobación de la Puesta a Producción | 0d | 2018-10-08 A | 2018-10-09 A | 132FS+3h | Funcionarios Técnicos - Cliente; Administrador de Contrato - Cliente; Analista de Calidad PlanERP; Líder del Proyecto/Desarrollo PlanERP |

| ID | WBS | Task | Duration | Start | Finish | Predecessors | Resources | Porcentage Avance |
| --- | --- | --- | --- | --- | --- | --- | --- | --- |
| 134 | 2.1.4.4 | **Transición** | 0d | 2018-10-09 A | 2018-10-11 A | 131FS+0.86d |  |  |
| 135 | 2.1.4.4.1 | Finalizar Procesamiento de Sistemas Legados | 0d | 2018-10-09 A | 2018-10-09 A |  | Administrador de Contrato - Cliente; Líder Funcional - Usuario Experto - Cliente; Desarrollador PlanERP; Líder del Proyecto/Desarrollo PlanERP; Especialista Base de Datos PlanERP |  |
| 136 | 2.1.4.4.2 | Realizar la Salida a Producción - Carga Inicial y Configuración Inicial | 0d | 2018-10-09 A | 2018-10-11 A | 135FS+1h | Administrador de Contrato - Cliente; Líder Funcional - Usuario Experto - Cliente; Desarrollador PlanERP; Líder del Proyecto/Desarrollo PlanERP; Especialista Base de Datos PlanERP |  |
| 137 | 2.1.4.5 | Revisar la ETAPA del Proyecto | 0d | 2018-10-11 A | 2018-10-11 A | 134FS+2.14d | Administrador de Contrato - Cliente; Gerente de Proyecto PlanERP; Líder del Proyecto/Desarrollo PlanERP; Analista de Calidad PlanERP |  |
| 138 | 2.1.4.6 | HITO: FINALIZACION ETAPA 4 | 0d | 2018-10-11 A | 2018-10-11 A | 137FS+2h |  | 35% |
| 139 | 2.1.5 | **ETAPA 5: Despliegue en Producción y Soporte Técnico - Módulos SC y AC** | 0d | 2018-10-11 A | 2018-11-16 A | 108FS+19.86d |  |  |
| 140 | 2.1.5.1 | **Soporte en Producción** | 0d | 2018-10-11 A | 2018-11-16 A |  |  |  |
| 141 | 2.1.5.1.1 | Soporte durante la Salida a Producción | 0d | 2018-10-11 A | 2018-11-16 A | 137FS+2h | Funcionarios Técnicos - Cliente; Desarrollador PlanERP; Analista Procesos PlanERP; Especialista Base de Datos PlanERP; Consultor Especialista en Procesos de GADs PlanERP |  |
| 142 | 2.1.5.1.2 | Resolver incidentes críticos | 0d | 2018-10-11 A | 2018-11-05 A | 137FS+2h | Funcionarios Técnicos - Cliente; Desarrollador PlanERP; Analista Procesos PlanERP; Especialista Base de Datos PlanERP; Consultor Especialista en Procesos de GADs PlanERP |  |
| 143 | 2.1.5.1.3 | Entregar el soporte y Administración al cliente | 0d | 2018-10-11 A | 2018-10-12 A |  | Funcionarios Técnicos - Cliente; Desarrollador PlanERP; Analista Procesos PlanERP; Especialista Base de Datos PlanERP; Consultor Especialista en Procesos de GADs PlanERP |  |
| 144 | 2.1.5.2 | **Mejora Continua** | 0d | 2018-10-11 A | 2018-10-24 A |  |  |  |
| 145 | 2.1.5.2.1 | Monitoreo del Sistema y Acompañamiento ETAPA1 | 0d | 2018-10-11 A | 2018-10-24 A | 137FS+2h | Administrador de Contrato - Cliente; Funcionarios Técnicos - Cliente; Líder Funcional - Usuario Experto - Cliente; Especialista Base de Datos PlanERP; Líder del Proyecto/Desarrollo PlanERP; Consultor Especialista en Procesos de GADs PlanERP |  |
| 146 | 2.1.5.2.2 | Ajustes y Configuraciones finales al Software acorde a necesidades Entidad | 0d | 2018-10-11 A | 2018-10-24 A | 137FS+2h | Administrador de Contrato - Cliente; Funcionarios Técnicos - Cliente; Líder Funcional - Usuario Experto - Cliente; Especialista Base de Datos PlanERP; Líder del Proyecto/Desarrollo PlanERP; Consultor Especialista en Procesos de GADs PlanERP |  |
| 147 | 2.1.5.3 | **Cierre de la ETAPA 5** | 0d | 2018-10-24 A | 2018-10-24 A |  |  |  |
| 148 | 2.1.5.3.1 | Reunión de Cierre de la ETAPA 5 | 0d | 2018-10-24 A | 2018-10-24 A | 144FS+10d | Administrador de Contrato - Cliente; Líder Funcional - Usuario Experto - Cliente; Funcionarios Técnicos - Cliente; Gerente de Proyecto PlanERP; Líder del Proyecto/Desarrollo PlanERP; Analista de Calidad PlanERP |  |
| 149 | 2.1.5.4 | HITO: FIN DE LA ETAPA 5 | 0d | 2018-10-24 A | 2018-10-24 A | 148FS+2h |  | 40% |
| 150 | 2.1.6 | **ETAPA 6: Estabilización, Apoyo Emisión 2019 y Desarrollo de funcionalidades no establecidas en el Alcance Contractual** | 0d | 2018-11-16 A | 2019-01-25 A |  |  |  |
| 151 | 2.1.6.1 | Depuración de Errores de Calidad de Información fuente migrada (Base Oracle) | 0d | 2018-11-16 A | 2018-12-24 A | 139FS+30d |  |  |
| 152 | 2.1.6.2 | Soporte y Mantenimiento de Módulos de la Fase 1 | 0d | 2018-11-16 A | 2018-12-24 A | 139FS+30d |  |  |
| 153 | 2.1.6.3 | Adaptaciones a Software para incluir Nuevas funcionalidades no contempladas en alcance proyecto | 0d | 2018-11-16 A | 2018-12-24 A | 139FS+30d |  |  |
| 154 | 2.1.6.4 | Implementación de Licencia temporal de Modulo de Catastro Urbano SIIM | 0d | 2018-12-03 A | 2018-12-26 A |  |  |  |
| 155 | 2.1.6.5 | Migración de información de Emisión de Impuestos de Catastro Urbano 2019 | 0d | 2018-12-03 A | 2018-12-26 A |  |  |  |
| 156 | 2.1.6.6 | Creación de interfaces mediante ETLs para integración entre Sistema Oracle y SIIM para la recaudación de Impuestos 2019 de Catastro Urbano | 0d | 2018-12-03 A | 2018-12-26 A |  |  |  |
| 157 | 2.1.6.7 | Soporte en Recaudación de Impuestos de Catastro urbano y mejoras 2019 | 0d | 2018-12-26 A | 2019-01-25 A | 156FS+20d |  |  |

| ID | WBS | Task | Duration | Start | Finish | Predecessors | Resources | Porcentage Avance |
| --- | --- | --- | --- | --- | --- | --- | --- | --- |
| 158 | 2.1.6.8 | **Cierre de la FASE 1** | 0d | 2019-01-25 A | 2019-01-25 A |  |  |  |
| 159 | 2.1.6.8.1 | Reunión de Cierre de la FASE 1 | 0d | 2019-01-25 A | 2019-01-25 A | 157FS+25d | Administrador de Contrato - Cliente; Líder Funcional - Usuario Experto - Cliente; Funcionarios Técnicos - Cliente; Gerente de Proyecto PlanERP; Líder del Proyecto/Desarrollo PlanERP; Analista de Calidad PlanERP |  |
| 160 | 2.1.6.8.2 | HITO: FIN DE LA FASE 1 | 0d | 2019-01-25 A | 2019-01-25 A | 159FS+2h |  | 50% |
| 161 | 2.2 | **FASE 2: Implementación de Módulos de Planificación de Recursos Institucionales - PRI** | 0d | 2019-01-25 A | 2019-05-14 |  |  |  |
| 162 | 2.2.1 | **ETAPA 1: Instalación del SIIM - Módulos PRI** | 0d | 2019-01-25 A | 2019-01-31 |  |  |  |
| 163 | 2.2.1.1 | **Entrega e Instalación del Software** | 0d | 2019-01-25 A | 2019-01-30 A |  |  |  |
| 164 | 2.2.1.1.1 | **Instalar SIIM en Servidor** | 0d | 2019-01-25 A | 2019-01-30 A |  | Funcionarios Técnicos - Cliente |  |
| 165 | 2.2.1.1.1.1 | **Instalar Módulos PRI** | 0d | 2019-01-25 A | 2019-01-30 A | 150FS+57.29d | Funcionarios Técnicos - Cliente; Desarrollador PlanERP; Líder del Proyecto/Desarrollo PlanERP |  |
| 166 | 2.2.1.1.1.1.1 | 2.1 Administración Técnica | 0d | 2019-01-25 A | 2019-01-25 A |  |  |  |
| 167 | 2.2.1.1.1.1.2 | 2.2 Salud Ocupacional y Riesgos | 0d | 2019-01-25 A | 2019-01-28 A | 166FS+2h |  |  |
| 168 | 2.2.1.1.1.1.3 | 3.2 Adquisiciones | 0d | 2019-01-28 A | 2019-01-28 A | 167FS+2h |  |  |
| 169 | 2.2.1.1.1.1.4 | 6.1 Administración de Bienes | 0d | 2019-01-28 A | 2019-01-28 A | 168FS+2h |  |  |
| 170 | 2.2.1.1.1.1.5 | 8.1 Contabilidad | 0d | 2019-01-28 A | 2019-01-28 A | 169FS+2h |  |  |
| 171 | 2.2.1.1.1.1.6 | 8.2 Presupuestos | 0d | 2019-01-28 A | 2019-01-29 A | 170FS+2h |  |  |
| 172 | 2.2.1.1.1.1.7 | 13 CRM para Urbanizaciones | 0d | 2019-01-29 A | 2019-01-29 A | 171FS+2h |  |  |
| 173 | 2.2.1.1.1.1.8 | 14 Dirección de Planificación Institucional (Incluye control de proyectos de Obras Públicas | 0d | 2019-01-29 A | 2019-01-29 A | 172FS+2h |  |  |
| 174 | 2.2.1.1.1.1.9 | 15.6 Servicios Corporativos | 0d | 2019-01-29 A | 2019-01-29 A | 173FS+2h |  |  |
| 175 | 2.2.1.1.1.1.10 | 15.8 BI Planificación Institucional | 0d | 2019-01-29 A | 2019-01-30 A | 174FS+2h |  |  |
| 176 | 2.2.1.1.2 | Entrega de Software | 0d | 2019-01-30 A | 2019-01-30 A | 164FS+2.86d | Gerente de Proyecto PlanERP; Administrador de Contrato - Cliente |  |
| 177 | 2.2.1.2 | Revisar la ETAPA del Proyecto | 0d | 2019-01-30 A | 2019-01-31 A | 163FS+3.14d | Administrador de Contrato - Cliente; Gerente de Proyecto PlanERP; Analista de Calidad PlanERP |  |
| 178 | 2.2.1.3 | HITO: FINALIZACION ETAPA 1 | 0d | 2019-01-31 | 2019-01-31 | 177FS+1d |  | 53% |
| 179 | 2.2.2 | **ETAPA 2: Levantamiento de Características Institucionales - Módulos PRI** | 0d | 2019-01-31 A | 2019-02-11 | 162FS+4.14d |  |  |
| 180 | 2.2.2.1 | **Actividades de Gestión del Proyecto** | 0d | 2019-01-31 A | 2019-01-31 A |  |  |  |
| 181 | 2.2.2.1.1 | Revisión del Plan del Proyecto | 0d | 2019-01-31 A | 2019-01-31 A |  | Administrador de Contrato - Cliente; Gerente de Proyecto PlanERP |  |
| 182 | 2.2.2.1.2 | Programar talleres de requerimientos de Entidad | 0d | 2019-01-31 A | 2019-01-31 A | 181FS+2h | Administrador de Contrato - Cliente; Gerente de Proyecto PlanERP |  |

| ID | WBS | Task | Duration | Start | Finish | Predecessors | Resources | Porcentage Avance |
| --- | --- | --- | --- | --- | --- | --- | --- | --- |
| 183 | 2.2.2.2 | **Sesiones de Requerimientos del Entidad** | 0d | 2019-01-31 A | 2019-02-08 A | 180FS+0.57d |  |  |
| 184 | 2.2.2.2.1 | Conducir Sesiones de Requerimientos | 0d | 2019-01-31 A | 2019-02-07 A |  | Funcionarios Técnicos - Cliente; Analista Procesos PlanERP; Consultor Especialista en Procesos de GADs PlanERP |  |
| 185 | 2.2.2.2.2 | Crear Documento de Características del Entidad | 0d | 2019-02-07 A | 2019-02-08 A | 184FS+5d | Analista Procesos PlanERP; Funcionarios Técnicos - Cliente; Consultor Especialista en Procesos de GADs PlanERP |  |
| 186 | 2.2.2.3 | **Revisar el Documento de Características del Entidad** | 0d | 2019-02-08 A | 2019-02-08 A | 183FS+6d |  |  |
| 187 | 2.2.2.3.1 | Revisar el Documento de Características del Entidad | 0d | 2019-02-08 A | 2019-02-08 A |  | Administrador de Contrato - Cliente; Gerente de Proyecto PlanERP; Analista de Calidad PlanERP; Consultor Especialista en Procesos de GADs PlanERP; Analista Procesos PlanERP |  |
| 188 | 2.2.2.3.2 | Revisar el Plan del Proyecto | 0d | 2019-02-08 A | 2019-02-08 A | 187FS+4h | Administrador de Contrato - Cliente; Gerente de Proyecto PlanERP |  |
| 189 | 2.2.2.4 | Revisar la ETAPA del Proyecto | 0d | 2019-02-08 A | 2019-02-11 A | 186FS+1d | Administrador de Contrato - Cliente; Gerente de Proyecto PlanERP; Líder del Proyecto/Desarrollo PlanERP; Analista de Calidad PlanERP |  |
| 190 | 2.2.2.5 | HITO: FINALIZACION ETAPA 2 | 0d | 2019-02-11 | 2019-02-11 | 189FS+1d |  | 55% |
| 191 | 2.2.3 | **ETAPA 3: Migración de Datos, Configuración y Pruebas de Operación de Módulos - Módulos PRI** | 0d | 2019-02-11 A | 2019-03-25 | 179FS+8.57d |  |  |
| 192 | 2.2.3.1 | **Gestión General del Proyecto** | 0d | 2019-02-11 A | 2019-02-13 A |  |  |  |
| 193 | 2.2.3.1.1 | Planificar cambio Organizacional | 0d | 2019-02-11 A | 2019-02-12 A |  | Administrador de Contrato - Cliente; Gerente de Proyecto PlanERP; Líder del Proyecto/Desarrollo PlanERP |  |
| 194 | 2.2.3.1.2 | Planificar Entrenamiento a Usuarios Finales | 0d | 2019-02-12 A | 2019-02-12 A | 193FS+3h | Administrador de Contrato - Cliente; Gerente de Proyecto PlanERP; Líder del Proyecto/Desarrollo PlanERP |  |
| 195 | 2.2.3.1.3 | Definir y Preparar la Migración de Datos | 0d | 2019-02-12 A | 2019-02-13 A | 194FS+4h | Funcionarios Técnicos - Cliente; Líder del Proyecto/Desarrollo PlanERP; Especialista Base de Datos PlanERP |  |
| 196 | 2.2.3.2 | **Configuración del Sistema en Producción** | 0d | 2019-02-13 A | 2019-03-08 | 192FS+1.57d |  |  |
| 197 | 2.2.3.2.1 | Instalar el SIIM en Producción | 0d | 2019-02-13 A | 2019-02-13 A |  | Funcionarios Técnicos - Cliente; Analista Procesos PlanERP; Desarrollador PlanERP; Líder del Proyecto/Desarrollo PlanERP; Especialista Base de Datos PlanERP |  |
| 198 | 2.2.3.2.2 | Configurar Inicialización del Sistema | 0d | 2019-02-13 A | 2019-02-14 A | 197FS+4h | Funcionarios Técnicos - Cliente; Analista Procesos PlanERP; Desarrollador PlanERP; Líder del Proyecto/Desarrollo PlanERP; Especialista Base de Datos PlanERP |  |
| 199 | 2.2.3.2.3 | Realizar la Migración de Datos | 0d | 2019-02-14 A | 2019-03-01 | 198FS+1d | Funcionarios Técnicos - Cliente; Analista Procesos PlanERP; Desarrollador PlanERP; Líder del Proyecto/Desarrollo PlanERP; Especialista Base de Datos PlanERP |  |
| 200 | 2.2.3.2.4 | Desarrollar Adaptaciones al Software | 0d | 2019-03-01 A | 2019-03-05 | 199FS+13d | Funcionarios Técnicos - Cliente; Analista Procesos PlanERP; Desarrollador PlanERP; Líder del Proyecto/Desarrollo PlanERP; Especialista Base de Datos PlanERP |  |
| 201 | 2.2.3.2.5 | Configuración del Sistema en base al Documento de Características del Entidad | 0d | 2019-03-05 A | 2019-03-06 A | 200FS+2d | Funcionarios Técnicos - Cliente; Analista Procesos PlanERP; Desarrollador PlanERP; Líder del Proyecto/Desarrollo PlanERP; Especialista Base de Datos PlanERP |  |
| 202 | 2.2.3.2.6 | Configurar Interfaces | 0d | 2019-03-06 A | 2019-03-07 A | 201FS+1d | Funcionarios Técnicos - Cliente; Analista Procesos PlanERP; Desarrollador PlanERP; Líder del Proyecto/Desarrollo PlanERP; Especialista Base de Datos PlanERP |  |
| 203 | 2.2.3.2.7 | Configurar Usuarios y Autorizaciones | 0d | 2019-03-07 A | 2019-03-08 A | 202FS+1d | Funcionarios Técnicos - Cliente; Analista Procesos PlanERP; Desarrollador PlanERP; Líder del Proyecto/Desarrollo PlanERP; Especialista Base de Datos PlanERP |  |
| 204 | 2.2.3.3 | **Gestión del Cambio Organizacional** | 0d | 2019-03-08 A | 2019-03-08 A | 196FS+19.57d |  |  |
| 205 | 2.2.3.3.1 | Conducir la comunicación de la Gestión de Cambios (si es aplicable) | 0d | 2019-03-08 A | 2019-03-08 A |  | Administrador de Contrato - Cliente; Líder Funcional - Usuario Experto - Cliente; Gerente de Proyecto PlanERP; Consultor Especialista en Procesos de GADs PlanERP |  |
| 206 | 2.2.3.4 | **Pruebas de validación del Sistema** | 0d | 2019-03-08 A | 2019-03-14 | 204FS+0.29d |  |  |
| 207 | 2.2.3.4.1 | Mantener la Lista Maestra de Procesos de Entidad | 0d | 2019-03-08 A | 2019-03-11 A |  | Líder Funcional - Usuario Experto - Cliente; Gerente de Proyecto PlanERP; Líder del Proyecto/Desarrollo PlanERP; Analista Procesos PlanERP; Consultor Especialista en Procesos de GADs PlanERP |  |

| ID | WBS | Task | Duration | Start | Finish | Predecessors | Resources |
| --- | --- | --- | --- | --- | --- | --- | --- |
| 208 | 2.2.3.4.2 | **Conducir Talleres de Validación** | 0d | 2019-03-11 | 2019-03-14 | 207FS+4h | Líder Funcional - Usuario Experto - Cliente; Analista Procesos PlanERP; Analista de Calidad PlanERP; Consultor Especialista en Procesos de GADs PlanERP |
| 209 | 2.2.3.4.2.1 | 2.1 Administración Técnica | 0d | 2019-03-11 | 2019-03-11 |  |  |
| 210 | 2.2.3.4.2.2 | 2.2 Salud Ocupacional y Riesgos | 0d | 2019-03-11 | 2019-03-11 | 209FS+4h |  |
| 211 | 2.2.3.4.2.3 | 3.2 Adquisiciones | 0d | 2019-03-11 | 2019-03-12 | 210FS+2h |  |
| 212 | 2.2.3.4.2.4 | 6.1 Administración de Bienes | 0d | 2019-03-12 | 2019-03-12 | 211FS+4h |  |
| 213 | 2.2.3.4.2.5 | 8.1 Contabilidad | 0d | 2019-03-12 | 2019-03-13 | 212FS+2h |  |
| 214 | 2.2.3.4.2.6 | 8.2 Presupuestos | 0d | 2019-03-13 | 2019-03-13 | 213FS+4h |  |
| 215 | 2.2.3.4.2.7 | 13 CRM para Urbanizaciones | 0d | 2019-03-13 | 2019-03-13 | 214FS+4h |  |
| 216 | 2.2.3.4.2.8 | 14 Dirección de Planificación Institucional (Incluye control de proyectos de Obras Públicas) | 0d | 2019-03-13 | 2019-03-14 | 215FS+2h |  |
| 217 | 2.2.3.4.2.9 | 15.6 BI Servicios Corporativos | 0d | 2019-03-14 | 2019-03-14 | 216FS+2h |  |
| 218 | 2.2.3.4.2.10 | 15.8 BI Planificación Institucional | 0d | 2019-03-14 | 2019-03-14 | 217FS+2h |  |
| 219 | 2.2.3.5 | **Pruebas de aceptacion del Sistema** | 0d | 2019-03-14 A | 2019-03-21 | 206FS+4.57d |  |
| 220 | 2.2.3.5.1 | Definir casos de prueba y alcance | 0d | 2019-03-14 A | 2019-03-14 |  | Líder Funcional - Usuario Experto - Cliente; Líder del Proyecto/Desarrollo PlanERP; Analista de Calidad PlanERP; Funcionarios Técnicos - Cliente |
| 221 | 2.2.3.5.2 | Preparar ambiente de pruebas | 0d | 2019-03-14 A | 2019-03-15 | 220FS+3h | Funcionarios Técnicos - Cliente; Líder Funcional - Usuario Experto - Cliente; Líder del Proyecto/Desarrollo PlanERP; Analista de Calidad PlanERP |
| 222 | 2.2.3.5.3 | **Ejecutar el plan de pruebas** | 0d | 2019-03-15 | 2019-03-21 | 221FS+1d | Líder Funcional - Usuario Experto - Cliente; Líder del Proyecto/Desarrollo PlanERP; Analista de Calidad PlanERP; Funcionarios Técnicos - Cliente; Consultor Especialista en Procesos de GADs PlanERP |
| 223 | 2.2.3.5.3.1 | 2.1 Administración Técnica | 0d | 2019-03-15 | 2019-03-18 |  |  |
| 224 | 2.2.3.5.3.2 | 2.2 Salud Ocupacional y Riesgos | 0d | 2019-03-18 | 2019-03-18 | 223FS+4h |  |
| 225 | 2.2.3.5.3.3 | 3.2 Adquisiciones | 0d | 2019-03-18 | 2019-03-19 | 224FS+2h |  |
| 226 | 2.2.3.5.3.4 | 6.1 Administración de Bienes | 0d | 2019-03-19 | 2019-03-19 | 225FS+4h |  |
| 227 | 2.2.3.5.3.5 | 8.1 Contabilidad | 0d | 2019-03-19 | 2019-03-19 | 226FS+2h |  |
| 228 | 2.2.3.5.3.6 | 8.2 Presupuestos | 0d | 2019-03-19 | 2019-03-20 | 227FS+4h |  |
| 229 | 2.2.3.5.3.7 | 13 CRM para Urbanizaciones | 0d | 2019-03-20 | 2019-03-20 | 228FS+4h |  |
| 230 | 2.2.3.5.3.8 | 14 Dirección de Planificación Institucional (Incluye control de proyectos de Obras Públicas) | 0d | 2019-03-20 | 2019-03-20 | 229FS+2h |  |
| 231 | 2.2.3.5.3.9 | 15.6 BI Servicios Corporativos | 0d | 2019-03-20 | 2019-03-21 | 230FS+2h |  |
| 232 | 2.2.3.5.3.10 | 15.8 BI Planificación Institucional | 0d | 2019-03-21 | 2019-03-21 | 231FS+2h |  |
| 233 | 2.2.3.5.4 | Revisar los resultados de las pruebas y necesidades de cambios | 0d | 2019-03-14 | 2019-03-15 |  | Administrador de Contrato - Cliente; Gerente de Proyecto PlanERP; Analista de Calidad PlanERP; Consultor Especialista en Procesos de GADs PlanERP |

| ID | WBS | Task | Duration | Start | Finish | Predecessors | Resources | Porcentage Avance |
| --- | --- | --- | --- | --- | --- | --- | --- | --- |
| 234 | 2.2.3.6 | **Planificar Salida a Producción y Soporte** | 0d | 2019-03-21 A | 2019-03-22 A | 219FS+5.43d |  |  |
| 235 | 2.2.3.6.1 | Definir Plan de Salida a Producción | 0d | 2019-03-21 A | 2019-03-21 A |  | Administrador de Contrato - Cliente; Líder Funcional - Usuario Experto - Cliente; Gerente de Proyecto PlanERP; Líder del Proyecto/Desarrollo PlanERP |  |
| 236 | 2.2.3.6.2 | Planificar Estrategia de Soporte | 0d | 2019-03-21 A | 2019-03-22 A | 235FS+3h | Administrador de Contrato - Cliente; Líder Funcional - Usuario Experto - Cliente; Gerente de Proyecto PlanERP; Líder del Proyecto/Desarrollo PlanERP |  |
| 237 | 2.2.3.6.3 | Planificar Administración del Sistema | 0d | 2019-03-22 A | 2019-03-22 A | 236FS+3h | Administrador de Contrato - Cliente; Líder Funcional - Usuario Experto - Cliente; Gerente de Proyecto PlanERP; Líder del Proyecto/Desarrollo PlanERP |  |
| 238 | 2.2.3.7 | Revisar la ETAPA del Proyecto | 0d | 2019-03-22 A | 2019-03-25 A | 234FS+1.29d | Administrador de Contrato - Cliente; Gerente de Proyecto PlanERP; Líder del Proyecto/Desarrollo PlanERP; Analista de Calidad PlanERP |  |
| 239 | 2.2.3.8 | HITO: FINALIZACION ETAPA 3 | 0d | 2019-03-25 | 2019-03-25 | 238FS+1d |  | %60 |
| 240 | 2.2.4 | **ETAPA 4: Preparación Final previo Despliegue en Producción - Módulos PRI** | 0d | 2019-03-25 A | 2019-04-08 | 191FS+33.71d |  |  |
| 241 | 2.2.4.1 | **Gestión General del Proyecto** | 0d | 2019-03-25 A | 2019-03-26 |  |  |  |
| 242 | 2.2.4.1.1 | Confirmar el Plan de Entrenamiento | 0d | 2019-03-25 A | 2019-03-25 |  | Administrador de Contrato - Cliente; Funcionarios Técnicos - Cliente; Gerente de Proyecto PlanERP; Líder del Proyecto/Desarrollo PlanERP |  |
| 243 | 2.2.4.1.2 | Finalizar plan de Salida a Producción | 0d | 2019-03-25 A | 2019-03-26 | 242FS+4h | Administrador de Contrato - Cliente; Funcionarios Técnicos - Cliente; Gerente de Proyecto PlanERP; Líder del Proyecto/Desarrollo PlanERP; Analista de Calidad PlanERP |  |
| 244 | 2.2.4.2 | **Entrenamiento** | 0d | 2019-03-26 | 2019-04-02 | 241FS+1.14d |  |  |
| 245 | 2.2.4.2.1 | **Entrenamiento de Usuarios Funcionales y Certificación de Procesos** | 0d | 2019-03-26 | 2019-03-29 |  | Líder Funcional - Usuario Experto - Cliente; Usuarios Finales - Cliente; Funcionarios Técnicos - Cliente; Analista Procesos PlanERP; Desarrollador PlanERP; Consultor Especialista en Procesos de GADs PlanERP |  |
| 246 | 2.2.4.2.1.1 | 2.1 Administración Técnica | 0d | 2019-03-26 | 2019-03-26 |  |  |  |
| 247 | 2.2.4.2.1.2 | 2.2 Salud Ocupacional y Riesgos | 0d | 2019-03-26 | 2019-03-27 | 246FS+4h |  |  |
| 248 | 2.2.4.2.1.3 | 3.2 Adquisiciones | 0d | 2019-03-27 | 2019-03-27 | 247FS+2h |  |  |
| 249 | 2.2.4.2.1.4 | 6.1 Administración de Bienes | 0d | 2019-03-27 | 2019-03-27 | 248FS+4h |  |  |
| 250 | 2.2.4.2.1.5 | 8.1 Contabilidad | 0d | 2019-03-27 | 2019-03-28 | 249FS+2h |  |  |
| 251 | 2.2.4.2.1.6 | 8.2 Presupuestos | 0d | 2019-03-28 | 2019-03-28 | 250FS+4h |  |  |
| 252 | 2.2.4.2.1.7 | 13 CRM para Urbanizaciones | 0d | 2019-03-28 | 2019-03-29 | 251FS+4h |  |  |
| 253 | 2.2.4.2.1.8 | 14 Dirección de Planificación Institucional (Incluye control de proyectos de Obras Públicas) | 0d | 2019-03-29 | 2019-03-29 | 252FS+2h |  |  |
| 254 | 2.2.4.2.1.9 | 15.6 BI Servicios Corporativos | 0d | 2019-03-29 | 2019-03-29 | 253FS+2h |  |  |
| 255 | 2.2.4.2.1.10 | 15.8 BI Planificación Institucional | 0d | 2019-03-29 | 2019-03-29 | 254FS+2h |  |  |
| 256 | 2.2.4.2.2 | Entrenamiento de Usuario Técnicos | 0d | 2019-03-26 | 2019-04-02 |  | Funcionarios Técnicos - Cliente; Desarrollador PlanERP; Especialista Base de Datos PlanERP; Líder del Proyecto/Desarrollo PlanERP |  |
| 257 | 2.2.4.3 | **Preparación del Sistema** | 0d | 2019-04-02 A | 2019-04-03 | 244FS+6d |  |  |
| 258 | 2.2.4.3.1 | Completar la Administración del Sistema | 0d | 2019-04-02 A | 2019-04-03 |  | Funcionarios Técnicos - Cliente; Desarrollador PlanERP; Analista Procesos PlanERP |  |
| 259 | 2.2.4.3.2 | Comprobación de la Puesta a Producción | 0d | 2019-04-03 A | 2019-04-03 | 258FS+5h | Funcionarios Técnicos - Cliente; Administrador de Contrato - Cliente; Analista de Calidad PlanERP; Líder del Proyecto/Desarrollo PlanERP |  |

| ID | WBS | Task | Duration | Start | Finish | Predecessors | Resources | Porcentage Avance |
| --- | --- | --- | --- | --- | --- | --- | --- | --- |
| 260 | 2.2.4.4 | **Transición** | 0d | 2019-04-03 A | 2019-04-08 | 257FS+1.43d |  |  |
| 261 | 2.2.4.4.1 | Finalizar Procesamiento de Sistemas Legados | 0d | 2019-04-03 A | 2019-04-04 |  | Administrador de Contrato - Cliente; Líder Funcional - Usuario Experto - Cliente; Desarrollador PlanERP; Líder del Proyecto/Desarrollo PlanERP; Especialista Base de Datos PlanERP |  |
| 262 | 2.2.4.4.2 | Realizar la Salida a Producción - Carga Inicial y Configuración Inicial | 0d | 2019-04-04 A | 2019-04-08 | 261FS+4h | Administrador de Contrato - Cliente; Líder Funcional - Usuario Experto - Cliente; Desarrollador PlanERP; Líder del Proyecto/Desarrollo PlanERP; Especialista Base de Datos PlanERP |  |
| 263 | 2.2.4.5 | Revisar la ETAPA del Proyecto | 0d | 2019-04-08 A | 2019-04-08 A | 260FS+2.57d | Administrador de Contrato - Cliente; Gerente de Proyecto PlanERP; Líder del Proyecto/Desarrollo PlanERP; Analista de Calidad PlanERP |  |
| 264 | 2.2.4.6 | HITO: FINALIZACION ETAPA 4 | 0d | 2019-04-08 | 2019-04-08 | 263FS+2h |  | 80% |
| 265 | 2.2.5 | **ETAPA 5: Despliegue en Producción y Soporte Técnico - Módulos PRI** | 0d | 2019-04-08 A | 2019-05-14 | 240FS+11.43d |  |  |
| 266 | 2.2.5.1 | **Soporte en Producción** | 0d | 2019-04-08 A | 2019-04-25 |  |  |  |
| 267 | 2.2.5.1.1 | Soporte durante la Salida a Producción | 0d | 2019-04-08 A | 2019-04-25 A |  | Funcionarios Técnicos - Cliente; Desarrollador PlanERP; Analista Procesos PlanERP; Especialista Base de Datos PlanERP; Consultor Especialista en Procesos de GADs PlanERP |  |
| 268 | 2.2.5.1.2 | Resolver incidentes críticos | 0d | 2019-04-08 A | 2019-04-25 A | 263FS+2h | Funcionarios Técnicos - Cliente; Desarrollador PlanERP; Analista Procesos PlanERP; Especialista Base de Datos PlanERP; Consultor Especialista en Procesos de GADs PlanERP |  |
| 269 | 2.2.5.1.3 | Entregar el soporte y Administración al cliente | 0d | 2019-04-08 | 2019-04-10 | 263FS+2h | Funcionarios Técnicos - Cliente; Desarrollador PlanERP; Analista Procesos PlanERP; Especialista Base de Datos PlanERP; Consultor Especialista en Procesos de GADs PlanERP |  |
| 270 | 2.2.5.2 | **Mejora Continua** | 0d | 2019-04-25 A | 2019-05-14 A | 266FS+15d |  |  |
| 271 | 2.2.5.2.1 | Monitoreo del Sistema y Acompañamiento ETAPA2 | 0d | 2019-04-25 A | 2019-05-14 A | 263FS+2h | Administrador de Contrato - Cliente; Funcionarios Técnicos - Cliente; Líder Funcional - Usuario Experto - Cliente; Especialista Base de Datos PlanERP; Líder del Proyecto/Desarrollo PlanERP; Consultor Especialista en Procesos de GADs PlanERP |  |
| 272 | 2.2.5.2.2 | Ajustes y Configuraciones finales al Software acorde a necesidades Entidad | 0d | 2019-04-25 A | 2019-05-14 A | 263FS+2h | Administrador de Contrato - Cliente; Funcionarios Técnicos - Cliente; Líder Funcional - Usuario Experto - Cliente; Especialista Base de Datos PlanERP; Líder del Proyecto/Desarrollo PlanERP; Consultor Especialista en Procesos de GADs PlanERP |  |
| 273 | 2.2.5.3 | **Cierre de la FASE 2** | 0d | 2019-05-14 A | 2019-05-14 | 270FS+15d |  |  |
| 274 | 2.2.5.3.1 | Reunión de Cierre de la FASE 2 | 0d | 2019-05-14 A | 2019-05-14 |  | Administrador de Contrato - Cliente; Líder Funcional - Usuario Experto - Cliente; Funcionarios Técnicos - Cliente; Gerente de Proyecto PlanERP; Líder del Proyecto/Desarrollo PlanERP; Analista de Calidad PlanERP |  |
| 275 | 2.2.5.4 | HITO: FIN DE LA FASE 2 | 0d | 2019-05-14 | 2019-05-14 | 273FS+0.43d |  | 85% |
| 276 | 2.3 | **FASE 3: Implementación de Módulos de Planificación de Recursos Institucionales - PRI** | 0d | 2019-04-08 A | 2019-07-10 |  |  |  |
| 277 | 2.3.1 | **ETAPA 1: Instalación del SIIM - Módulos PRI** | 0d | 2019-04-08 A | 2019-04-12 |  |  |  |
| 278 | 2.3.1.1 | **Entrega e Instalación del Software** | 0d | 2019-04-08 A | 2019-04-11 A |  |  |  |
| 279 | 2.3.1.1.1 | **Instalar SIIM en Servidor** | 0d | 2019-04-08 A | 2019-04-10 A |  | Funcionarios Técnicos - Cliente |  |
| 280 | 2.3.1.1.1.1 | Instalar Módulos PRI | 0d | 2019-04-08 A | 2019-04-10 A | 264 | Funcionarios Técnicos - Cliente; Desarrollador PlanERP; Líder del Proyecto/Desarrollo PlanERP |  |
| 281 | 2.3.1.1.2 | Entrega de Software | 0d | 2019-04-10 A | 2019-04-11 A | 279FS+3d | Gerente de Proyecto PlanERP; Administrador de Contrato - Cliente |  |
| 282 | 2.3.1.2 | Revisar la ETAPA del Proyecto | 0d | 2019-04-11 A | 2019-04-12 A | 278FS+3.29d | Administrador de Contrato - Cliente; Gerente de Proyecto PlanERP; Analista de Calidad PlanERP |  |
| 283 | 2.3.1.3 | HITO: FINALIZACION ETAPA 1 | 0d | 2019-04-12 | 2019-04-12 | 282FS+1d |  | 86% |

| ID | WBS | Task | Duration | Start | Finish | Predecessors | Resources | Porcentage Avance |
| --- | --- | --- | --- | --- | --- | --- | --- | --- |
| 284 | 2.3.2 | **ETAPA 2: Levantamiento de Características Institucionales - Módulos PRI** | 0d | 2019-04-12 A | 2019-04-23 | 277FS+4.29d |  |  |
| 285 | 2.3.2.1 | **Actividades de Gestión del Proyecto** | 0d | 2019-04-12 A | 2019-04-12 A |  |  |  |
| 286 | 2.3.2.1.1 | Revisión del Plan del Proyecto | 0d | 2019-04-12 A | 2019-04-12 A |  | Administrador de Contrato - Cliente; Gerente de Proyecto PlanERP |  |
| 287 | 2.3.2.1.2 | Programar talleres de requerimientos de Entidad | 0d | 2019-04-12 A | 2019-04-12 A | 286FS+2h | Administrador de Contrato - Cliente; Gerente de Proyecto PlanERP |  |
| 288 | 2.3.2.2 | **Sesiones de Requerimientos del Entidad** | 0d | 2019-04-12 A | 2019-04-19 A | 285FS+0.57d |  |  |
| 289 | 2.3.2.2.1 | Conducir Sesiones de Requerimientos | 0d | 2019-04-12 A | 2019-04-17 A |  | Funcionarios Técnicos - Cliente; Analista Procesos PlanERP; Consultor Especialista en Procesos de GADs PlanERP |  |
| 290 | 2.3.2.2.2 | Crear Documento de Características del Entidad | 0d | 2019-04-17 A | 2019-04-19 A | 289FS+3d | Analista Procesos PlanERP; Funcionarios Técnicos - Cliente; Consultor Especialista en Procesos de GADs PlanERP |  |
| 291 | 2.3.2.3 | **Revisar el Documento de Características del Entidad** | 0d | 2019-04-19 A | 2019-04-22 A | 288FS+6d |  |  |
| 292 | 2.3.2.3.1 | Revisar el Documento de Características del Entidad | 0d | 2019-04-19 A | 2019-04-22 A |  | Administrador de Contrato - Cliente; Gerente de Proyecto PlanERP; Analista de Calidad PlanERP; Consultor Especialista en Procesos de GADs PlanERP; Analista Procesos PlanERP |  |
| 293 | 2.3.2.3.2 | Revisar el Plan del Proyecto | 0d | 2019-04-22 A | 2019-04-22 A | 292FS+4h | Administrador de Contrato - Cliente; Gerente de Proyecto PlanERP |  |
| 294 | 2.3.2.4 | Revisar la ETAPA del Proyecto | 0d | 2019-04-22 A | 2019-04-23 A | 291FS+1d | Administrador de Contrato - Cliente; Gerente de Proyecto PlanERP; Líder del Proyecto/Desarrollo PlanERP; Analista de Calidad PlanERP |  |
| 295 | 2.3.2.5 | HITO: FINALIZACION ETAPA 2 | 0d | 2019-04-23 | 2019-04-23 | 294FS+1d |  | 87% |
| 296 | 2.3.3 | **ETAPA 3: Migración de Datos, Configuración y Pruebas de Operación de Módulos - Módulos PRI** | 0d | 2019-04-23 A | 2019-06-03 | 284FS+8.57d |  |  |
| 297 | 2.3.3.1 | **Gestión General del Proyecto** | 0d | 2019-04-23 A | 2019-04-24 A |  |  |  |
| 298 | 2.3.3.1.1 | Planificar cambio Organizacional | 0d | 2019-04-23 A | 2019-04-23 A |  | Administrador de Contrato - Cliente; Gerente de Proyecto PlanERP; Líder del Proyecto/Desarrollo PlanERP |  |
| 299 | 2.3.3.1.2 | Planificar Entrenamiento a Usuarios Finales | 0d | 2019-04-23 A | 2019-04-24 A | 298FS+3h | Administrador de Contrato - Cliente; Gerente de Proyecto PlanERP; Líder del Proyecto/Desarrollo PlanERP |  |
| 300 | 2.3.3.1.3 | Definir y Preparar la Migración de Datos | 0d | 2019-04-24 A | 2019-04-24 A | 299FS+4h | Funcionarios Técnicos - Cliente; Líder del Proyecto/Desarrollo PlanERP; Especialista Base de Datos PlanERP |  |
| 301 | 2.3.3.2 | **Configuración del Sistema en Producción** | 0d | 2019-04-24 A | 2019-05-20 | 297FS+1.57d |  |  |
| 302 | 2.3.3.2.1 | Instalar el SIIM en Producción | 0d | 2019-04-24 A | 2019-04-25 A |  | Funcionarios Técnicos - Cliente; Analista Procesos PlanERP; Desarrollador PlanERP; Líder del Proyecto/Desarrollo PlanERP; Especialista Base de Datos PlanERP |  |
| 303 | 2.3.3.2.2 | Configurar Inicialización del Sistema | 0d | 2019-04-25 A | 2019-04-26 A | 302FS+4h | Funcionarios Técnicos - Cliente; Analista Procesos PlanERP; Desarrollador PlanERP; Líder del Proyecto/Desarrollo PlanERP; Especialista Base de Datos PlanERP |  |
| 304 | 2.3.3.2.3 | Realizar la Migración de Datos | 0d | 2019-04-26 | 2019-05-09 | 303FS+1d | Funcionarios Técnicos - Cliente; Analista Procesos PlanERP; Desarrollador PlanERP; Líder del Proyecto/Desarrollo PlanERP; Especialista Base de Datos PlanERP |  |
| 305 | 2.3.3.2.4 | Desarrollar Adaptaciones al Software | 0d | 2019-05-09 A | 2019-05-15 | 304FS+10d | Funcionarios Técnicos - Cliente; Analista Procesos PlanERP; Desarrollador PlanERP; Líder del Proyecto/Desarrollo PlanERP; Especialista Base de Datos PlanERP |  |
| 306 | 2.3.3.2.5 | Configuración del Sistema en base al Documento de Características del Entidad | 0d | 2019-05-15 A | 2019-05-17 | 305FS+5d | Funcionarios Técnicos - Cliente; Analista Procesos PlanERP; Desarrollador PlanERP; Líder del Proyecto/Desarrollo PlanERP; Especialista Base de Datos PlanERP |  |
| 307 | 2.3.3.2.6 | Configurar Interfaces | 0d | 2019-05-17 A | 2019-05-20 A | 306FS+2d | Funcionarios Técnicos - Cliente; Analista Procesos PlanERP; Desarrollador PlanERP; Líder del Proyecto/Desarrollo PlanERP; Especialista Base de Datos PlanERP |  |
| 308 | 2.3.3.2.7 | Configurar Usuarios y Autorizaciones | 0d | 2019-05-20 A | 2019-05-20 A | 307FS+1d | Funcionarios Técnicos - Cliente; Analista Procesos PlanERP; Desarrollador PlanERP; Líder del Proyecto/Desarrollo PlanERP; Especialista Base de Datos PlanERP |  |

| ID | WBS | Task | Duration | Start | Finish | Predecessors | Resources |
| --- | --- | --- | --- | --- | --- | --- | --- |
| 309 | 2.3.3.3 | **Gestión del Cambio Organizacional** | 0d | 2019-05-20 A | 2019-05-22 A | 301FS+20.57d |  |
| 310 | 2.3.3.3.1 | Conducir la comunicación de la Gestión de Cambios (si es aplicable) | 0d | 2019-05-20 A | 2019-05-22 A |  | Administrador de Contrato - Cliente; Líder Funcional - Usuario Experto - Cliente; Gerente de Proyecto PlanERP; Consultor Especialista en Procesos de GADs PlanERP |
| 311 | 2.3.3.4 | **Pruebas de validación/aceptación del Sistema** | 0d | 2019-05-22 A | 2019-05-24 | 309FS+2d |  |
| 312 | 2.3.3.4.1 | Mantener la Lista Maestra de Procesos de Entidad | 0d | 2019-05-22 A | 2019-05-23 A |  | Líder Funcional - Usuario Experto - Cliente; Gerente de Proyecto PlanERP; Líder del Proyecto/Desarrollo PlanERP; Analista Procesos PlanERP; Consultor Especialista en Procesos de GADs PlanERP |
| 313 | 2.3.3.4.2 | **Conducir Talleres de Validación** | 0d | 2019-05-23 | 2019-05-24 | 312FS+4h | Líder Funcional - Usuario Experto - Cliente; Analista Procesos PlanERP; Analista de Calidad PlanERP; Consultor Especialista en Procesos de GADs PlanERP |
| 314 | 2.3.3.4.2.1 | 3.1 Compras Públicas | 0d | 2019-05-23 | 2019-05-23 |  |  |
| 315 | 2.3.3.4.2.2 | 6.2 Servicios Generales | 0d | 2019-05-23 | 2019-05-23 | 314FS+2h |  |
| 316 | 2.3.3.4.2.3 | 8.5 Gestión Jurídica - Financiera | 0d | 2019-05-23 | 2019-05-23 | 315FS+2h |  |
| 317 | 2.3.3.4.2.4 | 15.2 BI Financiero | 0d | 2019-05-23 | 2019-05-24 | 316FS+2h |  |
| 318 | 2.3.3.4.2.5 | 15.3 BI Administración del Talento Humano | 0d | 2019-05-24 | 2019-05-24 | 317FS+2h |  |
| 319 | 2.3.3.4.2.6 | 15.4 BI Compras Públicas | 0d | 2019-05-24 | 2019-05-24 | 318FS+2h |  |
| 320 | 2.3.3.4.2.7 | 15.9 Tablero de Control | 0d | 2019-05-24 | 2019-05-24 | 319FS+2h |  |
| 321 | 2.3.3.5 | **Pruebas de aceptacion del Sistema** | 0d | 2019-05-24 | 2019-05-30 | 311FS+2.57d |  |
| 322 | 2.3.3.5.1 | Definir casos de prueba y alcance | 0d | 2019-05-24 | 2019-05-27 |  | Líder Funcional - Usuario Experto - Cliente; Líder del Proyecto/Desarrollo PlanERP; Analista de Calidad PlanERP; Funcionarios Técnicos - Cliente |
| 323 | 2.3.3.5.2 | Preparar ambiente de pruebas | 0d | 2019-05-27 | 2019-05-28 | 322FS+3h | Funcionarios Técnicos - Cliente; Líder Funcional - Usuario Experto - Cliente; Líder del Proyecto/Desarrollo PlanERP; Analista de Calidad PlanERP |
| 324 | 2.3.3.5.3 | **Ejecutar el plan de pruebas** | 0d | 2019-05-28 | 2019-05-29 | 323FS+1d | Líder Funcional - Usuario Experto - Cliente; Líder del Proyecto/Desarrollo PlanERP; Analista de Calidad PlanERP; Funcionarios Técnicos - Cliente; Consultor Especialista en Procesos de GADs PlanERP |
| 325 | 2.3.3.5.3.1 | 3.1 Compras Públicas | 0d | 2019-05-28 | 2019-05-28 |  |  |
| 326 | 2.3.3.5.3.2 | 6.2 Servicios Generales | 0d | 2019-05-28 | 2019-05-28 | 325FS+2h |  |
| 327 | 2.3.3.5.3.3 | 8.5 Gestión Jurídica - Financiera | 0d | 2019-05-28 | 2019-05-28 | 326FS+2h |  |
| 328 | 2.3.3.5.3.4 | 15.2 BI Financiero | 0d | 2019-05-28 | 2019-05-29 | 327FS+2h |  |
| 329 | 2.3.3.5.3.5 | 15.3 BI Administración del Talento Humano | 0d | 2019-05-29 | 2019-05-29 | 328FS+2h |  |
| 330 | 2.3.3.5.3.6 | 15.4 BI Compras Públicas | 0d | 2019-05-29 | 2019-05-29 | 329FS+2h |  |
| 331 | 2.3.3.5.3.7 | 15.9 Tablero de Control | 0d | 2019-05-29 | 2019-05-29 | 330FS+2h |  |
| 332 | 2.3.3.5.4 | Revisar los resultados de las pruebas y necesidades de cambios | 0d | 2019-05-29 | 2019-05-30 | 331FS+2h, 320FS+2h | Administrador de Contrato - Cliente; Gerente de Proyecto PlanERP; Analista de Calidad PlanERP; Consultor Especialista en Procesos de GADs PlanERP |

| ID | WBS | Task | Duration | Start | Finish | Predecessors | Resources | Porcentage Avance |
| --- | --- | --- | --- | --- | --- | --- | --- | --- |
| 333 | 2.3.3.6 | **Planificar Salida a Producción y Soporte** | 0d | 2019-05-30 | 2019-05-31 | 321FS+4.43d |  |  |
| 334 | 2.3.3.6.1 | Definir Plan de Salida a Producción | 0d | 2019-05-30 | 2019-05-31 |  | Administrador de Contrato - Cliente; Líder Funcional - Usuario Experto - Cliente; Gerente de Proyecto PlanERP; Líder del Proyecto/Desarrollo PlanERP |  |
| 335 | 2.3.3.6.2 | Planificar Estrategia de Soporte | 0d | 2019-05-31 | 2019-05-31 | 334FS+3h | Administrador de Contrato - Cliente; Líder Funcional - Usuario Experto - Cliente; Gerente de Proyecto PlanERP; Líder del Proyecto/Desarrollo PlanERP |  |
| 336 | 2.3.3.6.3 | Planificar Administración del Sistema | 0d | 2019-05-31 | 2019-05-31 | 335FS+3h | Administrador de Contrato - Cliente; Líder Funcional - Usuario Experto - Cliente; Gerente de Proyecto PlanERP; Líder del Proyecto/Desarrollo PlanERP |  |
| 337 | 2.3.3.7 | Revisar la ETAPA del Proyecto | 0d | 2019-05-31 | 2019-06-03 | 333FS+1.29d | Administrador de Contrato - Cliente; Gerente de Proyecto PlanERP; Líder del Proyecto/Desarrollo PlanERP; Analista de Calidad PlanERP |  |
| 338 | 2.3.3.8 | HITO: FINALIZACION ETAPA 3 | 0d | 2019-06-03 | 2019-06-03 | 337FS+1d |  | 95% |
| 339 | 2.3.4 | **ETAPA 4: Preparación Final previo Despliegue en Producción - Módulos PRI** | 0d | 2019-06-03 | 2019-06-18 | 296FS+33.43d |  |  |
| 340 | 2.3.4.1 | **Gestión General del Proyecto** | 0d | 2019-06-03 | 2019-06-04 |  |  |  |
| 341 | 2.3.4.1.1 | Confirmar el Plan de Entrenamiento | 0d | 2019-06-03 | 2019-06-04 |  | Administrador de Contrato - Cliente; Funcionarios Técnicos - Cliente; Gerente de Proyecto PlanERP; Líder del Proyecto/Desarrollo PlanERP |  |
| 342 | 2.3.4.1.2 | Finalizar plan de Salida a Producción | 0d | 2019-06-04 | 2019-06-04 | 341FS+4h | Administrador de Contrato - Cliente; Funcionarios Técnicos - Cliente; Gerente de Proyecto PlanERP; Líder del Proyecto/Desarrollo PlanERP; Analista de Calidad PlanERP |  |
| 343 | 2.3.4.2 | **Entrenamiento** | 0d | 2019-06-04 | 2019-06-12 | 340FS+1.14d |  |  |
| 344 | 2.3.4.2.1 | **Entrenamiento de Usuarios Funcionales y Certificación de Procesos** | 0d | 2019-06-04 | 2019-06-10 |  | Líder Funcional - Usuario Experto - Cliente; Usuarios Finales - Cliente; Funcionarios Técnicos - Cliente; Analista Procesos PlanERP; Desarrollador PlanERP; Consultor Especialista en Procesos de GADs PlanERP |  |
| 345 | 2.3.4.2.1.1 | 3.1 Compras Públicas | 0d | 2019-06-04 | 2019-06-05 |  |  |  |
| 346 | 2.3.4.2.1.2 | 6.2 Servicios Generales | 0d | 2019-06-05 | 2019-06-05 | 345FS+4h |  |  |
| 347 | 2.3.4.2.1.3 | 8.5 Gestión Jurídica - Financiera | 0d | 2019-06-05 | 2019-06-06 | 346FS+4h |  |  |
| 348 | 2.3.4.2.1.4 | 15.2 BI Financiero | 0d | 2019-06-06 | 2019-06-06 | 347FS+4h |  |  |
| 349 | 2.3.4.2.1.5 | 15.3 BI Administración del Talento Humano | 0d | 2019-06-06 | 2019-06-07 | 348FS+4h |  |  |
| 350 | 2.3.4.2.1.6 | 15.4 BI Compras Públicas | 0d | 2019-06-07 | 2019-06-07 | 349FS+4h |  |  |
| 351 | 2.3.4.2.1.7 | 15.9 Tablero de Control | 0d | 2019-06-07 | 2019-06-10 | 350FS+4h |  |  |
| 352 | 2.3.4.2.2 | Entrenamiento de Usuario Técnicos | 0d | 2019-06-10 | 2019-06-12 | 351FS+4h | Funcionarios Técnicos - Cliente; Desarrollador PlanERP; Especialista Base de Datos PlanERP; Líder del Proyecto/Desarrollo PlanERP |  |
| 353 | 2.3.4.3 | **Preparación del Sistema** | 0d | 2019-06-12 | 2019-06-14 | 343FS+7d |  |  |
| 354 | 2.3.4.3.1 | Completar la Administración del Sistema | 0d | 2019-06-12 | 2019-06-13 |  | Funcionarios Técnicos - Cliente; Desarrollador PlanERP; Analista Procesos PlanERP |  |
| 355 | 2.3.4.3.2 | Comprobación de la Puesta a Producción | 0d | 2019-06-13 | 2019-06-14 | 354FS+5h | Funcionarios Técnicos - Cliente; Administrador de Contrato - Cliente; Analista de Calidad PlanERP; Líder del Proyecto/Desarrollo PlanERP |  |
| 356 | 2.3.4.4 | **Transición** | 0d | 2019-06-14 | 2019-06-18 | 353FS+1.43d |  |  |
| 357 | 2.3.4.4.1 | Finalizar Procesamiento de Sistemas Legados | 0d | 2019-06-14 | 2019-06-14 |  | Administrador de Contrato - Cliente; Líder Funcional - Usuario Experto - Cliente; Desarrollador PlanERP; Líder del Proyecto/Desarrollo PlanERP; Especialista Base de Datos PlanERP |  |
| 358 | 2.3.4.4.2 | Realizar la Salida a Producción - Carga Inicial y Configuración Inicial | 0d | 2019-06-14 | 2019-06-18 | 357FS+4h | Administrador de Contrato - Cliente; Líder Funcional - Usuario Experto - Cliente; Desarrollador PlanERP; Líder del Proyecto/Desarrollo PlanERP; Especialista Base de Datos PlanERP |  |
| 359 | 2.3.4.5 | Revisar la ETAPA del Proyecto | 0d | 2019-06-18 | 2019-06-18 | 356FS+2.57d | Administrador de Contrato - Cliente; Gerente de Proyecto PlanERP; Líder del Proyecto/Desarrollo PlanERP; Analista de Calidad PlanERP |  |
| 360 | 2.3.4.6 | HITO: FINALIZACION ETAPA 4 | 0d | 2019-06-18 | 2019-06-18 | 359FS+2h |  | 98% |

| ID | WBS | Task | Duration | Start | Finish | Predecessors | Resources | Porcentage Avance |
| --- | --- | --- | --- | --- | --- | --- | --- | --- |
| 361 | 2.3.5 | **ETAPA 5: Despliegue en Producción y Soporte Técnico - Módulos PRI** | 0d | 2019-06-21 | 2019-07-10 | 339FS+12.43d |  |  |
| 362 | 2.3.5.1 | **Soporte en Producción** | 0d | 2019-06-21 | 2019-07-04 |  |  |  |
| 363 | 2.3.5.1.1 | Soporte durante la Salida a Producción | 0d | 2019-06-21 | 2019-06-28 |  | Funcionarios Técnicos - Cliente; Desarrollador PlanERP; Analista Procesos PlanERP; Especialista Base de Datos PlanERP; Consultor Especialista en Procesos de GADs PlanERP |  |
| 364 | 2.3.5.1.2 | Resolver incidentes críticos | 0d | 2019-06-28 | 2019-07-02 | 363FS+5d | Funcionarios Técnicos - Cliente; Desarrollador PlanERP; Analista Procesos PlanERP; Especialista Base de Datos PlanERP; Consultor Especialista en Procesos de GADs PlanERP |  |
| 365 | 2.3.5.1.3 | Entregar el soporte y Administración al cliente | 0d | 2019-07-02 | 2019-07-04 | 364FS+3d | Funcionarios Técnicos - Cliente; Desarrollador PlanERP; Analista Procesos PlanERP; Especialista Base de Datos PlanERP; Consultor Especialista en Procesos de GADs PlanERP |  |
| 366 | 2.3.5.2 | **Mejora Continua** | 0d | 2019-06-21 | 2019-07-10 | 339FS+12.43d |  |  |
| 367 | 2.3.5.2.1 | Monitoreo del Sistema y Acompañamiento | 0d | 2019-06-21 | 2019-07-10 |  | Administrador de Contrato - Cliente; Funcionarios Técnicos - Cliente; Líder Funcional - Usuario Experto - Cliente; Especialista Base de Datos PlanERP; Líder del Proyecto/Desarrollo PlanERP; Consultor Especialista en Procesos de GADs PlanERP |  |
| 368 | 2.3.5.2.2 | Ajustes y Configuraciones finales al Software acorde a necesidades Entidad | 0d | 2019-06-21 | 2019-07-10 | 339FS+12.43d | Administrador de Contrato - Cliente; Funcionarios Técnicos - Cliente; Líder Funcional - Usuario Experto - Cliente; Especialista Base de Datos PlanERP; Líder del Proyecto/Desarrollo PlanERP; Consultor Especialista en Procesos de GADs PlanERP |  |
| 369 | 2.3.5.3 | **Cierre de la FASE 3 y Proyecto** | 0d | 2019-07-10 | 2019-07-10 | 366FS+15d |  |  |
| 370 | 2.3.5.3.1 | Reunión de Cierre de la FASE 3 y Proyecto | 0d | 2019-07-10 | 2019-07-10 |  | Administrador de Contrato - Cliente; Líder Funcional - Usuario Experto - Cliente; Funcionarios Técnicos - Cliente; Gerente de Proyecto PlanERP; Líder del Proyecto/Desarrollo PlanERP; Analista de Calidad PlanERP |  |
| 371 | 2.3.5.4 | HITO: FIN DE LA FASE 3 y Proyecto | 0d | 2019-07-10 | 2019-07-10 | 366FS+15d |  | 100% |
