# 20190122- Plan del Proyecto de Implementacion del SIIM Daule

Schedule from MS Project XML, 2018-07-16 to 2019-07-10, A marks actual dates.
PlanERP

## Calendars

- Standard: Mon-Fri 08:00-12:00, 13:00-17:00; Sat-Sun off.

## Resources

| Resource |
| --- |
| Administrador de Contrato - Cliente |
| Líder Técnico - Cliente |
| Líder Funcional - Usuario Experto - Cliente |
| Funcionarios Técnicos - Cliente |
| Usuarios Finales - Cliente |
| Desarrollador PlanERP |
| Gerente de Proyecto PlanERP |
| Líder del Proyecto/Desarrollo PlanERP |
| Analista Procesos PlanERP |
| Analista de Calidad PlanERP |
| Especialista Base de Datos PlanERP |
| Consultor Especialista en Procesos de GADs PlanERP |

## Schedule

| ID | WBS | Task | Type | Duration | Start | Finish | Predecessors | Complete | Remaining | Constraint | Porcentage Avance |
| --- | --- | --- | --- | --- | --- | --- | --- | --- | --- | --- | --- |
| 1 | 0 | 20190122- Plan del Proyecto de Implementacion del SIIM Daule |  | 294.29d | 2018-07-16 08:30 A | 2019-07-10 13:30 |  | 82% |  |  |  |
| 2 | 2 | **Programa de Implementación SIIM** |  | 294.29d | 2018-07-16 08:30 A | 2019-07-10 13:30 |  | 82% | 52.97d |  |  |
| 3 | 2.1 | **FASE 1: Implementación de Módulos de Servicio al Cliente (SC) y Atención al Ciudadano (AC)** |  | 159.57d | 2018-07-16 08:30 A | 2019-01-25 14:30 A |  | 100% |  |  |  |
| 4 | 2.1.1 | **ETAPA 1: Preparación del Proyecto e Instalación del SIIM - Módulos SC y AC** |  | 9d | 2018-07-16 08:30 A | 2018-07-25 16:30 A |  | 100% |  |  |  |
| 5 | 2.1.1.1 | **Actividades de Gestión del Proyecto** |  | 2.29d | 2018-07-16 08:30 A | 2018-07-18 08:30 A |  | 100% |  |  |  |
| 6 | 2.1.1.1.1 | Revisión de Información de Contrato y Anexos |  | 6h | 2018-07-16 08:30 A | 2018-07-16 15:30 A |  | 100% |  | start no earlier than 2018-07-16 08:30 |  |
| 7 | 2.1.1.1.2 | Definir la Organización del Proyecto |  | 4h | 2018-07-16 15:30 A | 2018-07-17 10:30 A | 6FS+6h | 100% |  |  |  |
| 8 | 2.1.1.1.3 | Kick-off Interno del Proyecto |  | 6h | 2018-07-17 10:30 A | 2018-07-18 08:30 A | 7FS+4h | 100% |  |  |  |
| 9 | 2.1.1.2 | **Preparación del kick-off del Proyecto** |  | 1.14d | 2018-07-18 08:30 A | 2018-07-19 08:30 A |  | 100% |  |  |  |
| 10 | 2.1.1.2.1 | Comunicación con el Cliente |  | 4h | 2018-07-18 08:30 A | 2018-07-18 13:30 A | 8FS+6h | 100% |  |  |  |
| 11 | 2.1.1.2.2 | Crear la presentación del kick-off |  | 4h | 2018-07-18 13:30 A | 2018-07-19 08:30 A | 10FS+4h | 100% |  |  |  |
| 12 | 2.1.1.3 | **Reunión de Kick-off** |  | 0.29d | 2018-07-19 08:30 A | 2018-07-19 10:30 A |  | 100% |  |  |  |
| 13 | 2.1.1.3.1 | Realizar la reunión de kick-off |  | 2h | 2018-07-19 08:30 A | 2018-07-19 10:30 A | 11FS+4h | 100% |  |  |  |
| 14 | 2.1.1.4 | **Entrega e Instalación del Software** |  | 4.29d | 2018-07-19 10:30 A | 2018-07-25 08:30 A |  | 100% |  |  |  |
| 15 | 2.1.1.4.1 | **Instalar SIIM en Servidor** |  | 4d | 2018-07-19 10:30 A | 2018-07-24 15:30 A | 12FS+0.29d | 100% |  |  |  |
| 16 | 2.1.1.4.1.1 | 1 Dirección de Desarrollo Territorial (No incluye Catastro) |  | 2h | 2018-07-19 10:30 A | 2018-07-19 13:30 A |  | 100% |  |  |  |
| 17 | 2.1.1.4.1.2 | 4 Dirección de Justicia y Vigilancia |  | 2h | 2018-07-19 13:30 A | 2018-07-19 15:30 A | 16FS+2h | 100% |  |  |  |
| 18 | 2.1.1.4.1.3 | 5 Dirección de Desarrollo Humano y Social |  | 2h | 2018-07-19 15:30 A | 2018-07-20 08:30 A | 17FS+2h | 100% |  |  |  |
| 19 | 2.1.1.4.1.4 | 8.3 Rentas |  | 2h | 2018-07-20 08:30 A | 2018-07-20 10:30 A | 18FS+2h | 100% |  |  |  |
| 20 | 2.1.1.4.1.5 | 8.4 Tesorería |  | 2h | 2018-07-20 10:30 A | 2018-07-20 13:30 A | 19FS+2h | 100% |  |  |  |
| 21 | 2.1.1.4.1.6 | 9.1 Mercados |  | 1h | 2018-07-20 13:30 A | 2018-07-20 14:30 A | 20FS+2h | 100% |  |  |  |
| 22 | 2.1.1.4.1.7 | 9.2 Cementerio |  | 1h | 2018-07-20 14:30 A | 2018-07-20 15:30 A | 21FS+1h | 100% |  |  |  |
| 23 | 2.1.1.4.1.8 | 9.3 Camal |  | 1h | 2018-07-20 15:30 A | 2018-07-20 16:30 A | 22FS+1h | 100% |  |  |  |
| 24 | 2.1.1.4.1.9 | 10 Registro de la Propiedad y Mercantil |  | 2h | 2018-07-20 16:30 A | 2018-07-23 09:30 A | 23FS+1h | 100% |  |  |  |
| 25 | 2.1.1.4.1.10 | 11 Administración de bomberos |  | 1h | 2018-07-23 09:30 A | 2018-07-23 10:30 A | 24FS+2h | 100% |  |  |  |
| 26 | 2.1.1.4.1.11 | 12 CRM para ciudadanos. Ventanilla Única |  | 2h | 2018-07-23 10:30 A | 2018-07-23 13:30 A | 25FS+1h | 100% |  |  |  |
| 27 | 2.1.1.4.1.12 | 15.1 BI Desarrollo Territorial |  | 2h | 2018-07-23 13:30 A | 2018-07-23 15:30 A | 26FS+2h | 100% |  |  |  |
| 28 | 2.1.1.4.1.13 | 15.5 BI Obras Públicas Municipales |  | 2h | 2018-07-23 15:30 A | 2018-07-24 08:30 A | 27FS+2h | 100% |  |  |  |
| 29 | 2.1.1.4.1.14 | 15.7 BI Registro de la Propiedad y Mercantil |  | 2h | 2018-07-24 08:30 A | 2018-07-24 10:30 A | 28FS+2h | 100% |  |  |  |
| 30 | 2.1.1.4.1.15 | 16.1 Consultas Portal Web |  | 2h | 2018-07-24 10:30 A | 2018-07-24 13:30 A | 29FS+2h | 100% |  |  |  |
| 31 | 2.1.1.4.1.16 | 16.2 Aplicación para móviles (APP) |  | 2h | 2018-07-24 13:30 A | 2018-07-24 15:30 A | 30FS+2h | 100% |  |  |  |
| 32 | 2.1.1.4.2 | Entrega de Software |  | 2h | 2018-07-24 15:30 A | 2018-07-25 08:30 A | 15FS+4d | 100% |  |  |  |
| 33 | 2.1.1.5 | Revisar la ETAPA del Proyecto |  | 1d | 2018-07-25 08:30 A | 2018-07-25 16:30 A | 14FS+4.29d | 100% |  |  |  |
| 34 | 2.1.1.6 | HITO: FINALIZACION ETAPA 1 | milestone | 0d | 2018-07-25 16:30 A | 2018-07-25 16:30 A | 33FS+1d | 100% |  |  | 5% |

Notes:
- 6: · Obtener información de los procesos de negociación, el cliente, cronograma, procesos de negocio / · Levantamiento de los riesgos del proyecto
- 7: · Esclarecer las responsabilidades internas del proyecto
- 8: · Comunicar el Plan del Proyecto al equipo
- 10: · Confirmar disponibilidad de hardware y recursos / · Confirmar fecha y agenda para la reunión de kickoff
- 11: · Elaborar la presentación para la reunión del kickoff, con la agenda y el plan del proyecto
- 13: · Conducir reunión de kickoff / · Comprender las expectativas del usuario y requerimientos de alto nivel / · Finalizar el plan del proyecto y cronograma / · Firmar el Acuerdo de Nivel de Servicio (SLA)
- 15: · Instalar SIIM Base e inicializarlo con una Base de Datos de prueba en el hardware del cliente
- 33: · Obtener la firma de finalización de la fase del proyecto

| ID | WBS | Task | Type | Duration | Start | Finish | Predecessors | Complete | Porcentage Avance |
| --- | --- | --- | --- | --- | --- | --- | --- | --- | --- |
| 35 | 2.1.2 | **ETAPA 2: Levantamiento de Características Institucionales - Módulos SC y AC** |  | 14.71d | 2018-07-25 16:30 A | 2018-08-13 15:30 A | 4FS+9d | 100% |  |
| 36 | 2.1.2.1 | **Actividades de Gestión del Proyecto** |  | 1.14d | 2018-07-25 16:30 A | 2018-07-26 16:30 A |  | 100% |  |
| 37 | 2.1.2.1.1 | Revisión del Plan del Proyecto |  | 4h | 2018-07-25 16:30 A | 2018-07-26 11:30 A | 33FS+1d | 100% |  |
| 38 | 2.1.2.1.2 | Programar talleres de requerimientos de Entidad |  | 4h | 2018-07-26 11:30 A | 2018-07-26 16:30 A | 37FS+4h | 100% |  |
| 39 | 2.1.2.2 | **Sesiones de Requerimientos del Entidad** |  | 12d | 2018-07-26 16:30 A | 2018-08-10 11:30 A |  | 100% |  |
| 40 | 2.1.2.2.1 | Conducir Sesiones de Requerimientos |  | 10d | 2018-07-26 16:30 A | 2018-08-08 14:30 A | 38FS+4h | 100% |  |
| 41 | 2.1.2.2.2 | Crear Documento de Características del Entidad |  | 2d | 2018-08-08 14:30 A | 2018-08-10 11:30 A | 40FS+10d | 100% |  |
| 42 | 2.1.2.3 | **Revisar el Documento de Características del Entidad** |  | 0.57d | 2018-08-10 11:30 A | 2018-08-10 16:30 A |  | 100% |  |
| 43 | 2.1.2.3.1 | Revisar el Documento de Características del Entidad |  | 2h | 2018-08-10 11:30 A | 2018-08-10 14:30 A | 41FS+2d | 100% |  |
| 44 | 2.1.2.3.2 | Revisar el Plan del Proyecto |  | 2h | 2018-08-10 14:30 A | 2018-08-10 16:30 A | 43FS+2h | 100% |  |
| 45 | 2.1.2.4 | Revisar la ETAPA del Proyecto |  | 1d | 2018-08-10 16:30 A | 2018-08-13 15:30 A | 42FS+0.57d | 100% |  |
| 46 | 2.1.2.5 | HITO: FINALIZACION ETAPA 2 | milestone | 0d | 2018-08-13 15:30 A | 2018-08-13 15:30 A | 45FS+1d | 100% | 10% |
| 47 | 2.1.3 | **ETAPA 3: Migración de Datos, Configuración y Pruebas de Operación - Módulos SC y AC** |  | 56.57d | 2018-08-13 15:30 A | 2018-10-22 10:30 A | 35FS+14.71d | 100% |  |
| 48 | 2.1.3.1 | **Gestión General del Proyecto** |  | 0.57d | 2018-08-13 15:30 A | 2018-08-14 10:30 A |  | 100% |  |
| 49 | 2.1.3.1.1 | Planificar cambio Organizacional |  | 2h | 2018-08-13 15:30 A | 2018-08-14 08:30 A | 45FS+1d | 100% |  |
| 50 | 2.1.3.1.2 | Planificar Entrenamiento a Usuarios Finales |  | 2h | 2018-08-14 08:30 A | 2018-08-14 10:30 A | 49FS+2h | 100% |  |
| 51 | 2.1.3.1.3 | Definir y Preparar la Migración de Datos |  | 2h | 2018-08-14 08:30 A | 2018-08-14 10:30 A | 49FS+2h | 100% |  |
| 52 | 2.1.3.2 | **Configuración del Sistema en Producción** |  | 56d | 2018-08-14 10:30 A | 2018-10-22 10:30 A |  | 100% |  |
| 53 | 2.1.3.2.1 | Instalar el SIIM en Producción |  | 1d | 2018-08-14 10:30 A | 2018-08-15 09:30 A | 51FS+2h | 100% |  |
| 54 | 2.1.3.2.2 | Configurar Inicialización del Sistema |  | 1d | 2018-08-15 09:30 A | 2018-08-16 08:30 A | 53FS+1d | 100% |  |
| 55 | 2.1.3.2.3 | Realizar la Migración de Datos |  | 54d | 2018-08-16 08:30 A | 2018-10-22 10:30 A | 54FS+1d | 100% |  |
| 56 | 2.1.3.2.4 | Desarrollar Adaptaciones al Software |  | 10d | 2018-08-16 08:30 A | 2018-08-28 15:30 A | 54FS+1d | 100% |  |
| 57 | 2.1.3.2.5 | Configuración del Sistema en base al Documento de Características del Entidad |  | 3d | 2018-08-28 15:30 A | 2018-08-31 11:30 A | 56FS+10d | 100% |  |
| 58 | 2.1.3.2.6 | Configurar Interfaces |  | 1d | 2018-08-31 11:30 A | 2018-09-03 10:30 A | 57FS+3d | 100% |  |
| 59 | 2.1.3.2.7 | Configurar Usuarios y Autorizaciones |  | 1d | 2018-09-03 10:30 A | 2018-09-04 09:30 A | 58FS+1d | 100% |  |

Notes:
- 37: · Revisar las actas de la reunión de kick-off / · Se actualiza el plan del proyecto en base a la reunión de kick-off
- 38: · Se agenda el taller de levantamiento de requerimientos
- 40: · Las Necesidades del negocio son detalladas en áreas como: Catastro urbano, catastro rural, etc. / · Los requerimientos son definidos para: Autorizaciones y dueños de información, Migración de datos, Interfaces y puntos de Integración, rendimiento del sistema
- 41: · Todos los datos relevantes (requerimientos, soluciones, limites, brechas) son documentadas en el documento de Características del Negocio
- 43: · Se determina la factibilidad de los requerimientos técnicos y de negocio / · Se establecen los limites y brechas y se acuerdan las soluciones
- 44: · Se actualiza el plan del proyecto basado en la revisión del Documento de Características del Negocio
- 45: · Obtener la firma de finalización de la fase del proyecto
- 49: · Se definen los roles de usuario y se asignan a los procesos de negocio / · Se define la estrategia de comunicación con los usuarios finales
- 50: · Se define la estrategia de Entrenamiento / · Se crea el cronograma de entrenamiento preliminar / · Se crea el material de entrenamiento
- 51: · Se limpia y se filtra los datos relevantes de los sistemas legados
- 53: · El SIIM con su base de datos respectiva es instalado en el hardware del cliente para su uso en producción
- 54: · Se inicializa el SIIM basado en el BluePrint y la guía de instalación del SIIM
- 55: · Se configura el SIIM en Producción basado en el BluePrint del Negocio
- 57: · Se configura el SIIM en Producción basado en el BluePrint del Negocio
- 58: · Se configuran las interfaces estándar para imprimir, email, etc.
- 59: · Se completa la lista de usuarios con las respectivas autorizaciones y se crean los usuarios en el SIIM

| ID | WBS | Task | Duration | Start | Finish | Predecessors | Complete |
| --- | --- | --- | --- | --- | --- | --- | --- |
| 60 | 2.1.3.3 | **Gestión del Cambio Organizacional** | 1d | 2018-09-04 09:30 A | 2018-09-05 08:30 A |  | 100% |
| 61 | 2.1.3.3.1 | Conducir la comunicación de la Gestión de Cambios (si es aplicable) | 1d | 2018-09-04 09:30 A | 2018-09-05 08:30 A | 59FS+1d | 100% |
| 62 | 2.1.3.4 | **Pruebas de validación/aceptación del Sistema** | 3.43d | 2018-09-05 08:30 A | 2018-09-10 08:30 A |  | 100% |
| 63 | 2.1.3.4.1 | Mantener la Lista Maestra de Procesos de Entidad | 2h | 2018-09-05 08:30 A | 2018-09-05 10:30 A | 61FS+1d | 100% |
| 64 | 2.1.3.4.2 | **Conducir Talleres de Validación** | 3.14d | 2018-09-05 10:30 A | 2018-09-10 08:30 A | 63FS+2h | 100% |
| 65 | 2.1.3.4.2.1 | 1 Dirección de Desarrollo Territorial (No incluye Catastro) | 2h | 2018-09-05 10:30 A | 2018-09-05 13:30 A |  | 100% |
| 66 | 2.1.3.4.2.2 | 4 Dirección de Justicia y Vigilancia | 2h | 2018-09-05 13:30 A | 2018-09-05 15:30 A | 65FS+2h | 100% |
| 67 | 2.1.3.4.2.3 | 5 Dirección de Desarrollo Humano y Social | 1h | 2018-09-05 15:30 A | 2018-09-05 16:30 A | 66FS+2h | 100% |
| 68 | 2.1.3.4.2.4 | 8.3 Rentas | 2h | 2018-09-05 16:30 A | 2018-09-06 09:30 A | 67FS+1h | 100% |
| 69 | 2.1.3.4.2.5 | 8.4 Tesorería | 2h | 2018-09-06 09:30 A | 2018-09-06 11:30 A | 68FS+2h | 100% |
| 70 | 2.1.3.4.2.6 | 9.1 Mercados | 1h | 2018-09-06 11:30 A | 2018-09-06 13:30 A | 69FS+2h | 100% |
| 71 | 2.1.3.4.2.7 | 9.2 Cementerio | 1h | 2018-09-06 13:30 A | 2018-09-06 14:30 A | 70FS+1h | 100% |
| 72 | 2.1.3.4.2.8 | 9.3 Camal | 1h | 2018-09-06 14:30 A | 2018-09-06 15:30 A | 71FS+1h | 100% |
| 73 | 2.1.3.4.2.9 | 10 Registro de la Propiedad y Mercantil | 2h | 2018-09-06 15:30 A | 2018-09-07 08:30 A | 72FS+1h | 100% |
| 74 | 2.1.3.4.2.10 | 11 Administración de bomberos | 1h | 2018-09-07 08:30 A | 2018-09-07 09:30 A | 73FS+2h | 100% |
| 75 | 2.1.3.4.2.11 | 12 CRM para ciudadanos. Ventanilla Única | 2h | 2018-09-07 09:30 A | 2018-09-07 11:30 A | 74FS+1h | 100% |
| 76 | 2.1.3.4.2.12 | 15.1 BI Desarrollo Territorial | 1h | 2018-09-07 11:30 A | 2018-09-07 13:30 A | 75FS+2h | 100% |
| 77 | 2.1.3.4.2.13 | 15.5 BI Obras Públicas Municipales | 1h | 2018-09-07 13:30 A | 2018-09-07 14:30 A | 76FS+1h | 100% |
| 78 | 2.1.3.4.2.14 | 15.7 BI Registro de la Propiedad y Mercantil | 1h | 2018-09-07 14:30 A | 2018-09-07 15:30 A | 77FS+1h | 100% |
| 79 | 2.1.3.4.2.15 | 16.1 Consultas Portal Web | 1h | 2018-09-07 15:30 A | 2018-09-07 16:30 A | 78FS+1h | 100% |
| 80 | 2.1.3.4.2.16 | 16.2 Aplicación para móviles (APP) | 1h | 2018-09-07 16:30 A | 2018-09-10 08:30 A | 79FS+1h | 100% |
| 81 | 2.1.3.5 | **Pruebas de Aceptacion Sistema** | 5.43d | 2018-09-10 08:30 A | 2018-09-14 15:30 A |  | 100% |
| 82 | 2.1.3.5.1 | Definir casos de prueba y alcance | 2h | 2018-09-10 08:30 A | 2018-09-10 10:30 A | 80FS+1h, 31FS+2h | 100% |
| 83 | 2.1.3.5.2 | Preparar ambiente de pruebas | 1d | 2018-09-10 10:30 A | 2018-09-11 09:30 A | 82FS+2h | 100% |

Notes:
- 61: · Se comunica a los usuarios finales los roles, tareas y cronograma de entrenamiento / · Se comunica a los proveedores y clientes acerca del cronograma y cambios a realizar
- 63: · Se crea la lista de los procesos de negocio mas relevantes para la implementación del SIIM
- 64: · Todos los procesos de negocio de la lista maestra ha sido revisado en el sistema / · Los datos importados en la migración de datos ha sido verificado / · Los cambios en la configuración y el alcance están documentados
- 82: · Se crea el plan de prueba, con sus casos de prueba
- 83: · Una copia de la base de datos del SIIM de producción es creada e inicializada en el ambiente de pruebas del SIIM

| ID | WBS | Task | Type | Duration | Start | Finish | Predecessors | Complete | Porcentage Avance |
| --- | --- | --- | --- | --- | --- | --- | --- | --- | --- |
| 84 | 2.1.3.5.3 | **Ejecutar el plan de pruebas de Aceptacion del Sistema** |  | 3.14d | 2018-09-11 09:30 A | 2018-09-13 16:30 A | 83FS+1d | 100% |  |
| 85 | 2.1.3.5.3.1 | 1 Dirección de Desarrollo Territorial (No incluye Catastro) |  | 2h | 2018-09-11 09:30 A | 2018-09-11 11:30 A |  | 100% |  |
| 86 | 2.1.3.5.3.2 | 4 Dirección de Justicia y Vigilancia |  | 2h | 2018-09-11 11:30 A | 2018-09-11 14:30 A | 85FS+2h | 100% |  |
| 87 | 2.1.3.5.3.3 | 5 Dirección de Desarrollo Humano y Social |  | 1h | 2018-09-11 14:30 A | 2018-09-11 15:30 A | 86FS+2h | 100% |  |
| 88 | 2.1.3.5.3.4 | 8.3 Rentas |  | 2h | 2018-09-11 15:30 A | 2018-09-12 08:30 A | 87FS+1h | 100% |  |
| 89 | 2.1.3.5.3.5 | 8.4 Tesorería |  | 2h | 2018-09-12 08:30 A | 2018-09-12 10:30 A | 88FS+2h | 100% |  |
| 90 | 2.1.3.5.3.6 | 9.1 Mercados |  | 1h | 2018-09-12 10:30 A | 2018-09-12 11:30 A | 89FS+2h | 100% |  |
| 91 | 2.1.3.5.3.7 | 9.2 Cementerio |  | 1h | 2018-09-12 11:30 A | 2018-09-12 13:30 A | 90FS+1h | 100% |  |
| 92 | 2.1.3.5.3.8 | 9.3 Camal |  | 1h | 2018-09-12 13:30 A | 2018-09-12 14:30 A | 91FS+1h | 100% |  |
| 93 | 2.1.3.5.3.9 | 10 Registro de la Propiedad y Mercantil |  | 2h | 2018-09-12 14:30 A | 2018-09-12 16:30 A | 92FS+1h | 100% |  |
| 94 | 2.1.3.5.3.10 | 11 Administración de bomberos |  | 1h | 2018-09-12 16:30 A | 2018-09-13 08:30 A | 93FS+2h | 100% |  |
| 95 | 2.1.3.5.3.11 | 12 CRM para ciudadanos. Ventanilla Única |  | 2h | 2018-09-13 08:30 A | 2018-09-13 10:30 A | 94FS+1h | 100% |  |
| 96 | 2.1.3.5.3.12 | 15.1 BI Desarrollo Territorial |  | 1h | 2018-09-13 10:30 A | 2018-09-13 11:30 A | 95FS+2h | 100% |  |
| 97 | 2.1.3.5.3.13 | 15.5 BI Obras Públicas Municipales |  | 1h | 2018-09-13 11:30 A | 2018-09-13 13:30 A | 96FS+1h | 100% |  |
| 98 | 2.1.3.5.3.14 | 15.7 BI Registro de la Propiedad y Mercantil |  | 1h | 2018-09-13 13:30 A | 2018-09-13 14:30 A | 97FS+1h | 100% |  |
| 99 | 2.1.3.5.3.15 | 16.1 Consultas Portal Web |  | 1h | 2018-09-13 14:30 A | 2018-09-13 15:30 A | 98FS+1h | 100% |  |
| 100 | 2.1.3.5.3.16 | 16.2 Aplicación para móviles (APP) |  | 1h | 2018-09-13 15:30 A | 2018-09-13 16:30 A | 99FS+1h | 100% |  |
| 101 | 2.1.3.5.4 | Revisar los resultados de las pruebas y necesidades de cambios |  | 1d | 2018-09-13 16:30 A | 2018-09-14 15:30 A | 100FS+1h, 80FS+1h, 31FS+2h | 100% |  |
| 102 | 2.1.3.6 | **Planificar Salida a Producción y Soporte** |  | 0.29d | 2018-09-14 15:30 A | 2018-09-17 08:30 A |  | 100% |  |
| 103 | 2.1.3.6.1 | Definir Plan de Salida a Producción |  | 2h | 2018-09-14 15:30 A | 2018-09-17 08:30 A | 101FS+1d | 100% |  |
| 104 | 2.1.3.6.2 | Planificar Estrategia de Soporte |  | 2h | 2018-09-14 15:30 A | 2018-09-17 08:30 A | 101FS+1d | 100% |  |
| 105 | 2.1.3.6.3 | Planificar Administración del Sistema |  | 2h | 2018-09-14 15:30 A | 2018-09-17 08:30 A | 101FS+1d | 100% |  |
| 106 | 2.1.3.7 | Revisar la ETAPA del Proyecto |  | 1d | 2018-09-17 08:30 A | 2018-09-17 16:30 A | 102FS+0.29d | 100% |  |
| 107 | 2.1.3.8 | HITO: FINALIZACION ETAPA 3 | milestone | 0d | 2018-09-17 16:30 A | 2018-09-17 16:30 A | 106FS+1d | 100% | 25% |

Notes:
- 84: · Todos los casos de prueba han sido completados exitosamente
- 101: · Se revisan los resultados de las pruebas y los cambios requeridos / · Se actualiza el plan del proyecto
- 103: · Se define el plan de la Salida a Producción
- 104: · Se definen todos los procedimientos y contactos de soporte
- 105: · Se designa al administrador del Sistema, se definen sus tareas y responsabilidades
- 106: · Obtener la firma de finalización de la fase del proyecto

| ID | WBS | Task | Duration | Start | Finish | Predecessors | Complete |
| --- | --- | --- | --- | --- | --- | --- | --- |
| 108 | 2.1.4 | **ETAPA 4: Preparación Final previo Despliegue en Producción - Módulos SC y AC** | 19.86d | 2018-09-17 16:30 A | 2018-10-11 10:30 A |  | 100% |
| 109 | 2.1.4.1 | **Gestión General del Proyecto** | 0.57d | 2018-09-17 16:30 A | 2018-09-18 11:30 A |  | 100% |
| 110 | 2.1.4.1.1 | Confirmar el Plan de Entrenamiento | 2h | 2018-09-17 16:30 A | 2018-09-18 09:30 A | 106FS+1d | 100% |
| 111 | 2.1.4.1.2 | Finalizar plan de Salida a Producción | 2h | 2018-09-18 09:30 A | 2018-09-18 11:30 A | 110FS+2h | 100% |
| 112 | 2.1.4.2 | **Entrenamiento en Modulos de Areas Funcionales Fase 1** | 16d | 2018-09-18 11:30 A | 2018-10-08 11:30 A | 109FS+0.57d | 100% |
| 113 | 2.1.4.2.1 | **Entrenamiento de Usuarios Funcionales y Certificación de Procesos** | 12d | 2018-09-18 11:30 A | 2018-10-02 16:30 A | 111FS+2h | 100% |
| 114 | 2.1.4.2.1.1 | 1 Dirección de Desarrollo Territorial (No incluye Catastro) | 1d | 2018-09-18 11:30 A | 2018-09-19 10:30 A |  | 100% |
| 115 | 2.1.4.2.1.2 | 4 Dirección de Justicia y Vigilancia | 1d | 2018-09-19 10:30 A | 2018-09-20 09:30 A | 114FS+1d | 100% |
| 116 | 2.1.4.2.1.3 | 5 Dirección de Desarrollo Humano y Social | 1d | 2018-09-20 09:30 A | 2018-09-21 08:30 A | 115FS+1d | 100% |
| 117 | 2.1.4.2.1.4 | 8.3 Rentas | 1d | 2018-09-21 08:30 A | 2018-09-21 16:30 A | 116FS+1d | 100% |
| 118 | 2.1.4.2.1.5 | 8.4 Tesorería | 1d | 2018-09-21 16:30 A | 2018-09-24 15:30 A | 117FS+1d | 100% |
| 119 | 2.1.4.2.1.6 | 9.1 Mercados | 0.5d | 2018-09-24 15:30 A | 2018-09-25 10:00 A | 118FS+1d | 100% |
| 120 | 2.1.4.2.1.7 | 9.2 Cementerio | 0.5d | 2018-09-25 10:00 A | 2018-09-25 14:30 A | 119FS+0.5d | 100% |
| 121 | 2.1.4.2.1.8 | 9.3 Camal | 0.5d | 2018-09-25 14:30 A | 2018-09-26 09:00 A | 120FS+0.5d | 100% |
| 122 | 2.1.4.2.1.9 | 10 Registro de la Propiedad y Mercantil | 1d | 2018-09-26 09:00 A | 2018-09-26 17:00 A | 121FS+0.5d | 100% |
| 123 | 2.1.4.2.1.10 | 11 Administración de bomberos | 0.5d | 2018-09-27 08:00 A | 2018-09-27 11:30 A | 122FS+1d | 100% |
| 124 | 2.1.4.2.1.11 | 12 CRM para ciudadanos. Ventanilla Única | 1d | 2018-09-27 11:30 A | 2018-09-28 10:30 A | 123FS+0.5d | 100% |
| 125 | 2.1.4.2.1.12 | 15.1 BI Desarrollo Territorial | 0.5d | 2018-09-28 10:30 A | 2018-09-28 15:00 A | 124FS+1d | 100% |
| 126 | 2.1.4.2.1.13 | 15.5 BI Obras Públicas Municipales | 0.5d | 2018-09-28 15:00 A | 2018-10-01 09:30 A | 125FS+0.5d | 100% |
| 127 | 2.1.4.2.1.14 | 15.7 BI Registro de la Propiedad y Mercantil | 0.5d | 2018-10-01 09:30 A | 2018-10-01 14:00 A | 126FS+0.5d | 100% |
| 128 | 2.1.4.2.1.15 | 16.1 Consultas Portal Web | 1d | 2018-10-01 14:00 A | 2018-10-02 12:00 A | 127FS+0.5d | 100% |
| 129 | 2.1.4.2.1.16 | 16.2 Aplicación para móviles (APP) | 0.5d | 2018-10-02 13:00 A | 2018-10-02 16:30 A | 128FS+1d | 100% |
| 130 | 2.1.4.2.2 | Entrenamiento de Usuario Técnicos | 4d | 2018-10-02 16:30 A | 2018-10-08 11:30 A | 129FS+0.5d, 100FS+1h, 80FS+1h, 31FS+2h | 100% |
| 131 | 2.1.4.3 | **Preparación del Sistema** | 0.86d | 2018-10-08 11:30 A | 2018-10-09 09:30 A | 112FS+16d | 100% |
| 132 | 2.1.4.3.1 | Completar la Administración del Sistema | 3h | 2018-10-08 11:30 A | 2018-10-08 15:30 A |  | 100% |
| 133 | 2.1.4.3.2 | Comprobación de la Puesta a Producción | 3h | 2018-10-08 15:30 A | 2018-10-09 09:30 A | 132FS+3h | 100% |

Notes:
- 110: · El plan y cronograma de entrenamiento es confirmado y comunicado a los usuarios
- 111: · El plan de salida a producción es confirmado y comunicado a los usuarios finales
- 113: · Se entrena a los usuarios principales
- 130: · Se entrena al administrador del sistema
- 132: · Completar todas las configuraciones administrativas / · Completar todas las configuraciones/instalaciones del cliente
- 133: · Se completa la lista de comprobación de Puesta en Producción

| ID | WBS | Task | Type | Duration | Start | Finish | Predecessors | Complete | Constraint | Porcentage Avance |
| --- | --- | --- | --- | --- | --- | --- | --- | --- | --- | --- |
| 134 | 2.1.4.4 | **Transición** |  | 2.14d | 2018-10-09 09:30 A | 2018-10-11 08:30 A | 131FS+0.86d | 100% |  |  |
| 135 | 2.1.4.4.1 | Finalizar Procesamiento de Sistemas Legados |  | 1h | 2018-10-09 09:30 A | 2018-10-09 10:30 A |  | 100% |  |  |
| 136 | 2.1.4.4.2 | Realizar la Salida a Producción - Carga Inicial y Configuración Inicial |  | 2d | 2018-10-09 10:30 A | 2018-10-11 08:30 A | 135FS+1h | 100% |  |  |
| 137 | 2.1.4.5 | Revisar la ETAPA del Proyecto |  | 2h | 2018-10-11 08:30 A | 2018-10-11 10:30 A | 134FS+2.14d | 100% |  |  |
| 138 | 2.1.4.6 | HITO: FINALIZACION ETAPA 4 | milestone | 0d | 2018-10-11 10:30 A | 2018-10-11 10:30 A | 137FS+2h | 100% |  | 35% |
| 139 | 2.1.5 | **ETAPA 5: Despliegue en Producción y Soporte Técnico - Módulos SC y AC** |  | 30d | 2018-10-11 10:30 A | 2018-11-16 13:30 A | 108FS+19.86d | 100% |  |  |
| 140 | 2.1.5.1 | **Soporte en Producción** |  | 30d | 2018-10-11 10:30 A | 2018-11-16 13:30 A |  | 100% |  |  |
| 141 | 2.1.5.1.1 | Soporte durante la Salida a Producción |  | 30d | 2018-10-11 10:30 A | 2018-11-16 13:30 A | 137FS+2h | 100% |  |  |
| 142 | 2.1.5.1.2 | Resolver incidentes críticos |  | 20d | 2018-10-11 10:30 A | 2018-11-05 15:30 A | 137FS+2h | 100% |  |  |
| 143 | 2.1.5.1.3 | Entregar el soporte y Administración al cliente |  | 1d | 2018-10-11 10:30 A | 2018-10-12 09:30 A |  | 100% |  |  |
| 144 | 2.1.5.2 | **Mejora Continua** |  | 10d | 2018-10-11 10:30 A | 2018-10-24 08:30 A |  | 100% |  |  |
| 145 | 2.1.5.2.1 | Monitoreo del Sistema y Acompañamiento ETAPA1 |  | 10d | 2018-10-11 10:30 A | 2018-10-24 08:30 A | 137FS+2h | 100% |  |  |
| 146 | 2.1.5.2.2 | Ajustes y Configuraciones finales al Software acorde a necesidades Entidad |  | 10d | 2018-10-11 10:30 A | 2018-10-24 08:30 A | 137FS+2h | 100% |  |  |
| 147 | 2.1.5.3 | **Cierre de la ETAPA 5** |  | 0.29d | 2018-10-24 08:30 A | 2018-10-24 10:30 A |  | 100% |  |  |
| 148 | 2.1.5.3.1 | Reunión de Cierre de la ETAPA 5 |  | 2h | 2018-10-24 08:30 A | 2018-10-24 10:30 A | 144FS+10d | 100% |  |  |
| 149 | 2.1.5.4 | HITO: FIN DE LA ETAPA 5 | milestone | 0d | 2018-10-24 10:30 A | 2018-10-24 10:30 A | 148FS+2h | 100% |  | 40% |
| 150 | 2.1.6 | **ETAPA 6: Estabilización, Apoyo Emisión 2019 y Desarrollo de funcionalidades no establecidas en el Alcance Contractual** |  | 57.29d | 2018-11-16 13:30 A | 2019-01-25 14:30 A |  | 100% |  |  |
| 151 | 2.1.6.1 | Depuración de Errores de Calidad de Información fuente migrada (Base Oracle) |  | 30d | 2018-11-16 13:30 A | 2018-12-24 15:30 A | 139FS+30d | 100% |  |  |
| 152 | 2.1.6.2 | Soporte y Mantenimiento de Módulos de la Fase 1 |  | 30d | 2018-11-16 13:30 A | 2018-12-24 15:30 A | 139FS+30d | 100% |  |  |
| 153 | 2.1.6.3 | Adaptaciones a Software para incluir Nuevas funcionalidades no contempladas en alcance proyecto |  | 30d | 2018-11-16 13:30 A | 2018-12-24 15:30 A | 139FS+30d | 100% |  |  |
| 154 | 2.1.6.4 | Implementación de Licencia temporal de Modulo de Catastro Urbano SIIM |  | 20d | 2018-12-03 08:30 A | 2018-12-26 13:30 A |  | 100% | start no earlier than 2018-12-03 08:30 |  |
| 155 | 2.1.6.5 | Migración de información de Emisión de Impuestos de Catastro Urbano 2019 |  | 20d | 2018-12-03 08:30 A | 2018-12-26 13:30 A |  | 100% | start no earlier than 2018-12-03 08:30 |  |
| 156 | 2.1.6.6 | Creación de interfaces mediante ETLs para integración entre Sistema Oracle y SIIM para la recaudación de Impuestos 2019 de Catastro Urbano |  | 20d | 2018-12-03 08:30 A | 2018-12-26 13:30 A |  | 100% | start no earlier than 2018-12-03 08:30 |  |
| 157 | 2.1.6.7 | Soporte en Recaudación de Impuestos de Catastro urbano y mejoras 2019 |  | 25d | 2018-12-26 13:30 A | 2019-01-25 11:30 A | 156FS+20d | 100% |  |  |

Notes:
- 135: · Se completa el mantenimiento de las transacciones y datos maestros de sistemas legados, la noche previa a la salida a producción / · Se documentan los cambios significativos desde la ultima corrida de migración de datos y han sido importados al SIIM
- 136: · Los balances de apertura son transferidos en el SIIM / · Los procesos piloto son completados exitosamente en el SIIM, de acuerdo a la lista de comprobación de la Salida a Producción / · Se crean/actualizan los manuales de usuario / · Se entrega al cliente el usuario para hacer al portal de soporte del SIIM
- 137: · Obtener la firma de finalización de la fase del proyecto
- 141: · El consultor del SIIM resuelve de manera inmediata cualquier incidente
- 142: · Se resuelve cualquier incidente critico excepcional
- 143: · El equipo técnico del cliente asume el soporte y administración del sistema / · La lista de comprobación de la Salida a Producción es completada en el portal del SIIM, para activar el soporte
- 145: · Se registran todos los incidentes / · Se registran las mejoras al rendimiento, funcionalidad, usabilidad, etc.
- 148: · Se revisa el plan del proyecto / · Se completan todos los hitos de manera exitosa / · Se agenda la reunión de "Revisión y Optimización" / · El cliente firma la aceptación final del proyecto

| ID | WBS | Task | Type | Duration | Start | Finish | Predecessors | Complete | Remaining | Constraint | Porcentage Avance |
| --- | --- | --- | --- | --- | --- | --- | --- | --- | --- | --- | --- |
| 158 | 2.1.6.8 | **Cierre de la FASE 1** |  | 0.29d | 2019-01-25 11:30 A | 2019-01-25 14:30 A |  | 100% |  |  |  |
| 159 | 2.1.6.8.1 | Reunión de Cierre de la FASE 1 |  | 2h | 2019-01-25 11:30 A | 2019-01-25 14:30 A | 157FS+25d | 100% |  |  |  |
| 160 | 2.1.6.8.2 | HITO: FIN DE LA FASE 1 | milestone | 0d | 2019-01-25 14:30 A | 2019-01-25 14:30 A | 159FS+2h | 100% |  |  | 50% |
| 161 | 2.2 | **FASE 2: Implementación de Módulos de Planificación de Recursos Institucionales - PRI** |  | 88.29d | 2019-01-25 14:30 A | 2019-05-14 16:30 |  | 74% | 22.95d |  |  |
| 162 | 2.2.1 | **ETAPA 1: Instalación del SIIM - Módulos PRI** |  | 4.14d | 2019-01-25 14:30 A | 2019-01-31 10:30 |  | 99% | 0.04d |  |  |
| 163 | 2.2.1.1 | **Entrega e Instalación del Software** |  | 3.14d | 2019-01-25 14:30 A | 2019-01-30 11:30 A |  | 100% |  |  |  |
| 164 | 2.2.1.1.1 | **Instalar SIIM en Servidor** |  | 2.86d | 2019-01-25 14:30 A | 2019-01-30 09:30 A |  | 100% |  |  |  |
| 165 | 2.2.1.1.1.1 | **Instalar Módulos PRI** |  | 2.86d | 2019-01-25 14:30 A | 2019-01-30 09:30 A | 150FS+57.29d | 100% |  |  |  |
| 166 | 2.2.1.1.1.1.1 | 2.1 Administración Técnica |  | 2h | 2019-01-25 14:30 A | 2019-01-25 16:30 A |  | 100% |  |  |  |
| 167 | 2.2.1.1.1.1.2 | 2.2 Salud Ocupacional y Riesgos |  | 2h | 2019-01-25 16:30 A | 2019-01-28 09:30 A | 166FS+2h | 100% |  |  |  |
| 168 | 2.2.1.1.1.1.3 | 3.2 Adquisiciones |  | 2h | 2019-01-28 09:30 A | 2019-01-28 11:30 A | 167FS+2h | 100% |  |  |  |
| 169 | 2.2.1.1.1.1.4 | 6.1 Administración de Bienes |  | 2h | 2019-01-28 11:30 A | 2019-01-28 14:30 A | 168FS+2h | 100% |  |  |  |
| 170 | 2.2.1.1.1.1.5 | 8.1 Contabilidad |  | 2h | 2019-01-28 14:30 A | 2019-01-28 16:30 A | 169FS+2h | 100% |  |  |  |
| 171 | 2.2.1.1.1.1.6 | 8.2 Presupuestos |  | 2h | 2019-01-28 16:30 A | 2019-01-29 09:30 A | 170FS+2h | 100% |  |  |  |
| 172 | 2.2.1.1.1.1.7 | 13 CRM para Urbanizaciones |  | 2h | 2019-01-29 09:30 A | 2019-01-29 11:30 A | 171FS+2h | 100% |  |  |  |
| 173 | 2.2.1.1.1.1.8 | 14 Dirección de Planificación Institucional (Incluye control de proyectos de Obras Públicas |  | 2h | 2019-01-29 11:30 A | 2019-01-29 14:30 A | 172FS+2h | 100% |  |  |  |
| 174 | 2.2.1.1.1.1.9 | 15.6 Servicios Corporativos |  | 2h | 2019-01-29 14:30 A | 2019-01-29 16:30 A | 173FS+2h | 100% |  |  |  |
| 175 | 2.2.1.1.1.1.10 | 15.8 BI Planificación Institucional |  | 2h | 2019-01-29 16:30 A | 2019-01-30 09:30 A | 174FS+2h | 100% |  |  |  |
| 176 | 2.2.1.1.2 | Entrega de Software |  | 2h | 2019-01-30 09:30 A | 2019-01-30 11:30 A | 164FS+2.86d | 100% |  | finish no earlier than 2018-04-10 05:30 |  |
| 177 | 2.2.1.2 | Revisar la ETAPA del Proyecto |  | 1d | 2019-01-30 11:30 A | 2019-01-31 10:30 A | 163FS+3.14d | 100% |  | finish no earlier than 2018-04-10 05:30 |  |
| 178 | 2.2.1.3 | HITO: FINALIZACION ETAPA 1 | milestone | 0d | 2019-01-31 10:30 | 2019-01-31 10:30 | 177FS+1d |  |  | finish no earlier than 2018-04-10 05:30 | 53% |
| 179 | 2.2.2 | **ETAPA 2: Levantamiento de Características Institucionales - Módulos PRI** |  | 8.57d | 2019-01-31 10:30 A | 2019-02-11 15:30 | 162FS+4.14d | 99% | 0.09d |  |  |
| 180 | 2.2.2.1 | **Actividades de Gestión del Proyecto** |  | 0.57d | 2019-01-31 10:30 A | 2019-01-31 15:30 A |  | 100% |  |  |  |
| 181 | 2.2.2.1.1 | Revisión del Plan del Proyecto |  | 2h | 2019-01-31 10:30 A | 2019-01-31 13:30 A |  | 100% |  | finish no earlier than 2018-04-11 05:30 |  |
| 182 | 2.2.2.1.2 | Programar talleres de requerimientos de Entidad |  | 2h | 2019-01-31 13:30 A | 2019-01-31 15:30 A | 181FS+2h | 100% |  | finish no earlier than 2018-04-11 05:30 |  |

| ID | WBS | Task | Type | Duration | Start | Finish | Predecessors | Complete | Remaining | Constraint | Porcentage Avance |
| --- | --- | --- | --- | --- | --- | --- | --- | --- | --- | --- | --- |
| 183 | 2.2.2.2 | **Sesiones de Requerimientos del Entidad** |  | 6d | 2019-01-31 15:30 A | 2019-02-08 08:30 A | 180FS+0.57d | 100% |  |  |  |
| 184 | 2.2.2.2.1 | Conducir Sesiones de Requerimientos |  | 5d | 2019-01-31 15:30 A | 2019-02-07 09:30 A |  | 100% |  | finish no earlier than 2018-04-17 05:30 |  |
| 185 | 2.2.2.2.2 | Crear Documento de Características del Entidad |  | 1d | 2019-02-07 09:30 A | 2019-02-08 08:30 A | 184FS+5d | 100% |  | finish no earlier than 2018-04-18 05:30 |  |
| 186 | 2.2.2.3 | **Revisar el Documento de Características del Entidad** |  | 1d | 2019-02-08 08:30 A | 2019-02-08 16:30 A | 183FS+6d | 100% |  |  |  |
| 187 | 2.2.2.3.1 | Revisar el Documento de Características del Entidad |  | 4h | 2019-02-08 08:30 A | 2019-02-08 13:30 A |  | 100% |  | finish no earlier than 2018-04-19 05:30 |  |
| 188 | 2.2.2.3.2 | Revisar el Plan del Proyecto |  | 3h | 2019-02-08 13:30 A | 2019-02-08 16:30 A | 187FS+4h | 100% |  | finish no earlier than 2018-04-19 05:30 |  |
| 189 | 2.2.2.4 | Revisar la ETAPA del Proyecto |  | 1d | 2019-02-08 16:30 A | 2019-02-11 15:30 A | 186FS+1d | 100% |  | finish no earlier than 2018-04-20 05:30 |  |
| 190 | 2.2.2.5 | HITO: FINALIZACION ETAPA 2 | milestone | 0d | 2019-02-11 15:30 | 2019-02-11 15:30 | 189FS+1d |  |  | finish no earlier than 2018-04-20 05:30 | 55% |
| 191 | 2.2.3 | **ETAPA 3: Migración de Datos, Configuración y Pruebas de Operación de Módulos - Módulos PRI** |  | 33.71d | 2019-02-11 15:30 A | 2019-03-25 10:30 | 179FS+8.57d | 50% | 16.86d |  |  |
| 192 | 2.2.3.1 | **Gestión General del Proyecto** |  | 1.57d | 2019-02-11 15:30 A | 2019-02-13 09:30 A |  | 100% |  |  |  |
| 193 | 2.2.3.1.1 | Planificar cambio Organizacional |  | 3h | 2019-02-11 15:30 A | 2019-02-12 09:30 A |  | 100% |  | finish no earlier than 2018-04-20 05:30 |  |
| 194 | 2.2.3.1.2 | Planificar Entrenamiento a Usuarios Finales |  | 4h | 2019-02-12 09:30 A | 2019-02-12 14:30 A | 193FS+3h | 100% |  | finish no earlier than 2018-04-20 05:30 |  |
| 195 | 2.2.3.1.3 | Definir y Preparar la Migración de Datos |  | 4h | 2019-02-12 14:30 A | 2019-02-13 09:30 A | 194FS+4h | 100% |  | finish no earlier than 2018-04-20 05:30 |  |
| 196 | 2.2.3.2 | **Configuración del Sistema en Producción** |  | 19.57d | 2019-02-13 09:30 A | 2019-03-08 10:30 | 192FS+1.57d | 62% | 7.44d |  |  |
| 197 | 2.2.3.2.1 | Instalar el SIIM en Producción |  | 4h | 2019-02-13 09:30 A | 2019-02-13 14:30 A |  | 100% |  | finish no earlier than 2018-04-20 05:30 |  |
| 198 | 2.2.3.2.2 | Configurar Inicialización del Sistema |  | 1d | 2019-02-13 14:30 A | 2019-02-14 13:30 A | 197FS+4h | 100% |  | finish no earlier than 2018-04-23 05:30 |  |
| 199 | 2.2.3.2.3 | Realizar la Migración de Datos |  | 13d | 2019-02-14 13:30 A | 2019-03-01 16:30 | 198FS+1d | 50% | 6.5d | finish no earlier than 2018-05-23 05:30 |  |
| 200 | 2.2.3.2.4 | Desarrollar Adaptaciones al Software |  | 2d | 2019-03-01 16:30 A | 2019-03-05 14:30 | 199FS+13d | 50% | 1d | finish no earlier than 2018-04-27 05:30 |  |
| 201 | 2.2.3.2.5 | Configuración del Sistema en base al Documento de Características del Entidad |  | 1d | 2019-03-05 14:30 A | 2019-03-06 13:30 A | 200FS+2d | 100% |  | finish no earlier than 2018-05-01 05:30 |  |
| 202 | 2.2.3.2.6 | Configurar Interfaces |  | 1d | 2019-03-06 13:30 A | 2019-03-07 11:30 A | 201FS+1d | 100% |  | finish no earlier than 2018-05-02 05:30 |  |
| 203 | 2.2.3.2.7 | Configurar Usuarios y Autorizaciones |  | 1d | 2019-03-07 11:30 A | 2019-03-08 10:30 A | 202FS+1d | 100% |  | finish no earlier than 2018-05-03 05:30 |  |
| 204 | 2.2.3.3 | **Gestión del Cambio Organizacional** |  | 0.29d | 2019-03-08 10:30 A | 2019-03-08 13:30 A | 196FS+19.57d | 100% |  |  |  |
| 205 | 2.2.3.3.1 | Conducir la comunicación de la Gestión de Cambios (si es aplicable) |  | 2h | 2019-03-08 10:30 A | 2019-03-08 13:30 A |  | 100% |  | finish no earlier than 2018-05-04 05:30 |  |
| 206 | 2.2.3.4 | **Pruebas de validación del Sistema** |  | 4.57d | 2019-03-08 13:30 A | 2019-03-14 13:30 | 204FS+0.29d | 13% | 3.98d |  |  |
| 207 | 2.2.3.4.1 | Mantener la Lista Maestra de Procesos de Entidad |  | 4h | 2019-03-08 13:30 A | 2019-03-11 08:30 A |  | 100% |  | finish no earlier than 2018-05-04 05:30 |  |

| ID | WBS | Task | Duration | Start | Finish | Predecessors | Complete | Remaining | Constraint |
| --- | --- | --- | --- | --- | --- | --- | --- | --- | --- |
| 208 | 2.2.3.4.2 | **Conducir Talleres de Validación** | 4d | 2019-03-11 08:30 | 2019-03-14 13:30 | 207FS+4h |  |  |  |
| 209 | 2.2.3.4.2.1 | 2.1 Administración Técnica | 4h | 2019-03-11 08:30 | 2019-03-11 13:30 |  |  |  |  |
| 210 | 2.2.3.4.2.2 | 2.2 Salud Ocupacional y Riesgos | 2h | 2019-03-11 13:30 | 2019-03-11 15:30 | 209FS+4h |  |  |  |
| 211 | 2.2.3.4.2.3 | 3.2 Adquisiciones | 4h | 2019-03-11 15:30 | 2019-03-12 10:30 | 210FS+2h |  |  |  |
| 212 | 2.2.3.4.2.4 | 6.1 Administración de Bienes | 2h | 2019-03-12 10:30 | 2019-03-12 13:30 | 211FS+4h |  |  |  |
| 213 | 2.2.3.4.2.5 | 8.1 Contabilidad | 4h | 2019-03-12 13:30 | 2019-03-13 08:30 | 212FS+2h |  |  |  |
| 214 | 2.2.3.4.2.6 | 8.2 Presupuestos | 4h | 2019-03-13 08:30 | 2019-03-13 13:30 | 213FS+4h |  |  |  |
| 215 | 2.2.3.4.2.7 | 13 CRM para Urbanizaciones | 2h | 2019-03-13 13:30 | 2019-03-13 15:30 | 214FS+4h |  |  |  |
| 216 | 2.2.3.4.2.8 | 14 Dirección de Planificación Institucional (Incluye control de proyectos de Obras Públicas) | 2h | 2019-03-13 15:30 | 2019-03-14 08:30 | 215FS+2h |  |  |  |
| 217 | 2.2.3.4.2.9 | 15.6 BI Servicios Corporativos | 2h | 2019-03-14 08:30 | 2019-03-14 10:30 | 216FS+2h |  |  |  |
| 218 | 2.2.3.4.2.10 | 15.8 BI Planificación Institucional | 2h | 2019-03-14 10:30 | 2019-03-14 13:30 | 217FS+2h |  |  |  |
| 219 | 2.2.3.5 | **Pruebas de aceptacion del Sistema** | 5.43d | 2019-03-14 13:30 A | 2019-03-21 10:30 | 206FS+4.57d | 11% | 4.83d |  |
| 220 | 2.2.3.5.1 | Definir casos de prueba y alcance | 3h | 2019-03-14 13:30 A | 2019-03-14 16:30 |  | 50% | 1.5h | finish no earlier than 2018-05-09 05:30 |
| 221 | 2.2.3.5.2 | Preparar ambiente de pruebas | 1d | 2019-03-14 16:30 A | 2019-03-15 15:30 | 220FS+3h | 50% | 0.5d | finish no earlier than 2018-05-10 05:30 |
| 222 | 2.2.3.5.3 | **Ejecutar el plan de pruebas** | 4d | 2019-03-15 15:30 | 2019-03-21 10:30 | 221FS+1d |  |  |  |
| 223 | 2.2.3.5.3.1 | 2.1 Administración Técnica | 4h | 2019-03-15 15:30 | 2019-03-18 10:30 |  |  |  |  |
| 224 | 2.2.3.5.3.2 | 2.2 Salud Ocupacional y Riesgos | 2h | 2019-03-18 10:30 | 2019-03-18 13:30 | 223FS+4h |  |  |  |
| 225 | 2.2.3.5.3.3 | 3.2 Adquisiciones | 4h | 2019-03-18 13:30 | 2019-03-19 08:30 | 224FS+2h |  |  |  |
| 226 | 2.2.3.5.3.4 | 6.1 Administración de Bienes | 2h | 2019-03-19 08:30 | 2019-03-19 10:30 | 225FS+4h |  |  |  |
| 227 | 2.2.3.5.3.5 | 8.1 Contabilidad | 4h | 2019-03-19 10:30 | 2019-03-19 15:30 | 226FS+2h |  |  |  |
| 228 | 2.2.3.5.3.6 | 8.2 Presupuestos | 4h | 2019-03-19 15:30 | 2019-03-20 10:30 | 227FS+4h |  |  |  |
| 229 | 2.2.3.5.3.7 | 13 CRM para Urbanizaciones | 2h | 2019-03-20 10:30 | 2019-03-20 13:30 | 228FS+4h |  |  |  |
| 230 | 2.2.3.5.3.8 | 14 Dirección de Planificación Institucional (Incluye control de proyectos de Obras Públicas) | 2h | 2019-03-20 13:30 | 2019-03-20 15:30 | 229FS+2h |  |  |  |
| 231 | 2.2.3.5.3.9 | 15.6 BI Servicios Corporativos | 2h | 2019-03-20 15:30 | 2019-03-21 08:30 | 230FS+2h |  |  |  |
| 232 | 2.2.3.5.3.10 | 15.8 BI Planificación Institucional | 2h | 2019-03-21 08:30 | 2019-03-21 10:30 | 231FS+2h |  |  |  |
| 233 | 2.2.3.5.4 | Revisar los resultados de las pruebas y necesidades de cambios | 1d | 2019-03-14 13:30 | 2019-03-15 11:30 |  |  |  | finish no earlier than 2018-05-14 05:30 |

| ID | WBS | Task | Type | Duration | Start | Finish | Predecessors | Complete | Remaining | Constraint | Porcentage Avance |
| --- | --- | --- | --- | --- | --- | --- | --- | --- | --- | --- | --- |
| 234 | 2.2.3.6 | **Planificar Salida a Producción y Soporte** |  | 1.29d | 2019-03-21 10:30 A | 2019-03-22 11:30 A | 219FS+5.43d | 100% |  |  |  |
| 235 | 2.2.3.6.1 | Definir Plan de Salida a Producción |  | 3h | 2019-03-21 10:30 A | 2019-03-21 14:30 A |  | 100% |  | finish no earlier than 2018-05-15 05:30 |  |
| 236 | 2.2.3.6.2 | Planificar Estrategia de Soporte |  | 3h | 2019-03-21 14:30 A | 2019-03-22 08:30 A | 235FS+3h | 100% |  | finish no earlier than 2018-05-15 05:30 |  |
| 237 | 2.2.3.6.3 | Planificar Administración del Sistema |  | 3h | 2019-03-22 08:30 A | 2019-03-22 11:30 A | 236FS+3h | 100% |  | finish no earlier than 2018-05-15 05:30 |  |
| 238 | 2.2.3.7 | Revisar la ETAPA del Proyecto |  | 1d | 2019-03-22 11:30 A | 2019-03-25 10:30 A | 234FS+1.29d | 100% |  | finish no earlier than 2018-05-15 05:30 |  |
| 239 | 2.2.3.8 | HITO: FINALIZACION ETAPA 3 | milestone | 0d | 2019-03-25 10:30 | 2019-03-25 10:30 | 238FS+1d |  |  | finish no earlier than 2018-05-15 05:30 | %60 |
| 240 | 2.2.4 | **ETAPA 4: Preparación Final previo Despliegue en Producción - Módulos PRI** |  | 11.43d | 2019-03-25 10:30 A | 2019-04-08 10:30 | 191FS+33.71d | 19% | 9.26d |  |  |
| 241 | 2.2.4.1 | **Gestión General del Proyecto** |  | 1.14d | 2019-03-25 10:30 A | 2019-03-26 10:30 |  | 50% | 0.57d |  |  |
| 242 | 2.2.4.1.1 | Confirmar el Plan de Entrenamiento |  | 4h | 2019-03-25 10:30 A | 2019-03-25 15:30 |  | 50% | 2h | finish no earlier than 2018-05-16 05:30 |  |
| 243 | 2.2.4.1.2 | Finalizar plan de Salida a Producción |  | 4h | 2019-03-25 15:30 A | 2019-03-26 10:30 | 242FS+4h | 50% | 2h | finish no earlier than 2018-05-16 05:30 |  |
| 244 | 2.2.4.2 | **Entrenamiento** |  | 6d | 2019-03-26 10:30 | 2019-04-02 13:30 | 241FS+1.14d |  |  |  |  |
| 245 | 2.2.4.2.1 | **Entrenamiento de Usuarios Funcionales y Certificación de Procesos** |  | 4d | 2019-03-26 10:30 | 2019-03-29 15:30 |  |  |  |  |  |
| 246 | 2.2.4.2.1.1 | 2.1 Administración Técnica |  | 4h | 2019-03-26 10:30 | 2019-03-26 15:30 |  |  |  |  |  |
| 247 | 2.2.4.2.1.2 | 2.2 Salud Ocupacional y Riesgos |  | 2h | 2019-03-26 15:30 | 2019-03-27 08:30 | 246FS+4h |  |  |  |  |
| 248 | 2.2.4.2.1.3 | 3.2 Adquisiciones |  | 4h | 2019-03-27 08:30 | 2019-03-27 13:30 | 247FS+2h |  |  |  |  |
| 249 | 2.2.4.2.1.4 | 6.1 Administración de Bienes |  | 2h | 2019-03-27 13:30 | 2019-03-27 15:30 | 248FS+4h |  |  |  |  |
| 250 | 2.2.4.2.1.5 | 8.1 Contabilidad |  | 4h | 2019-03-27 15:30 | 2019-03-28 10:30 | 249FS+2h |  |  |  |  |
| 251 | 2.2.4.2.1.6 | 8.2 Presupuestos |  | 4h | 2019-03-28 10:30 | 2019-03-28 15:30 | 250FS+4h |  |  |  |  |
| 252 | 2.2.4.2.1.7 | 13 CRM para Urbanizaciones |  | 2h | 2019-03-28 15:30 | 2019-03-29 08:30 | 251FS+4h |  |  |  |  |
| 253 | 2.2.4.2.1.8 | 14 Dirección de Planificación Institucional (Incluye control de proyectos de Obras Públicas) |  | 2h | 2019-03-29 08:30 | 2019-03-29 10:30 | 252FS+2h |  |  |  |  |
| 254 | 2.2.4.2.1.9 | 15.6 BI Servicios Corporativos |  | 2h | 2019-03-29 10:30 | 2019-03-29 13:30 | 253FS+2h |  |  |  |  |
| 255 | 2.2.4.2.1.10 | 15.8 BI Planificación Institucional |  | 2h | 2019-03-29 13:30 | 2019-03-29 15:30 | 254FS+2h |  |  |  |  |
| 256 | 2.2.4.2.2 | Entrenamiento de Usuario Técnicos |  | 6d | 2019-03-26 10:30 | 2019-04-02 13:30 |  |  |  | finish no earlier than 2018-05-21 05:30 |  |
| 257 | 2.2.4.3 | **Preparación del Sistema** |  | 1.43d | 2019-04-02 13:30 A | 2019-04-03 15:30 | 244FS+6d | 50% | 0.71d |  |  |
| 258 | 2.2.4.3.1 | Completar la Administración del Sistema |  | 5h | 2019-04-02 13:30 A | 2019-04-03 09:30 |  | 50% | 2.5h | finish no earlier than 2018-05-29 05:30 |  |
| 259 | 2.2.4.3.2 | Comprobación de la Puesta a Producción |  | 5h | 2019-04-03 09:30 A | 2019-04-03 15:30 | 258FS+5h | 50% | 2.5h | finish no earlier than 2018-05-29 05:30 |  |

| ID | WBS | Task | Type | Duration | Start | Finish | Predecessors | Complete | Remaining | Constraint | Porcentage Avance |
| --- | --- | --- | --- | --- | --- | --- | --- | --- | --- | --- | --- |
| 260 | 2.2.4.4 | **Transición** |  | 2.57d | 2019-04-03 15:30 A | 2019-04-08 08:30 | 257FS+1.43d | 50% | 1.29d |  |  |
| 261 | 2.2.4.4.1 | Finalizar Procesamiento de Sistemas Legados |  | 4h | 2019-04-03 15:30 A | 2019-04-04 10:30 |  | 50% | 2h | finish no earlier than 2018-05-30 05:30 |  |
| 262 | 2.2.4.4.2 | Realizar la Salida a Producción - Carga Inicial y Configuración Inicial |  | 2d | 2019-04-04 10:30 A | 2019-04-08 08:30 | 261FS+4h | 50% | 1d | finish no earlier than 2018-05-31 05:30 |  |
| 263 | 2.2.4.5 | Revisar la ETAPA del Proyecto |  | 2h | 2019-04-08 08:30 A | 2019-04-08 10:30 A | 260FS+2.57d | 100% |  | finish no earlier than 2018-06-01 05:30 |  |
| 264 | 2.2.4.6 | HITO: FINALIZACION ETAPA 4 | milestone | 0d | 2019-04-08 10:30 | 2019-04-08 10:30 | 263FS+2h |  |  | finish no earlier than 2018-06-01 05:30 | 80% |
| 265 | 2.2.5 | **ETAPA 5: Despliegue en Producción y Soporte Técnico - Módulos PRI** |  | 30.43d | 2019-04-08 10:30 A | 2019-05-14 16:30 | 240FS+11.43d | 96% | 1.22d |  |  |
| 266 | 2.2.5.1 | **Soporte en Producción** |  | 15d | 2019-04-08 10:30 A | 2019-04-25 11:30 |  | 94% | 0.9d |  |  |
| 267 | 2.2.5.1.1 | Soporte durante la Salida a Producción |  | 15d | 2019-04-08 10:30 A | 2019-04-25 11:30 A |  | 100% |  | finish no earlier than 2018-06-06 05:30 |  |
| 268 | 2.2.5.1.2 | Resolver incidentes críticos |  | 15d | 2019-04-08 10:30 A | 2019-04-25 11:30 A | 263FS+2h | 100% |  | finish no earlier than 2018-06-08 05:30 |  |
| 269 | 2.2.5.1.3 | Entregar el soporte y Administración al cliente |  | 2d | 2019-04-08 10:30 | 2019-04-10 08:30 | 263FS+2h |  |  | finish no earlier than 2018-06-01 05:30 |  |
| 270 | 2.2.5.2 | **Mejora Continua** |  | 15d | 2019-04-25 11:30 A | 2019-05-14 13:30 A | 266FS+15d | 100% |  |  |  |
| 271 | 2.2.5.2.1 | Monitoreo del Sistema y Acompañamiento ETAPA2 |  | 15d | 2019-04-25 11:30 A | 2019-05-14 13:30 A | 263FS+2h | 100% |  | finish no earlier than 2018-06-13 05:30 |  |
| 272 | 2.2.5.2.2 | Ajustes y Configuraciones finales al Software acorde a necesidades Entidad |  | 15d | 2019-04-25 11:30 A | 2019-05-14 13:30 A | 263FS+2h | 100% |  | finish no earlier than 2018-06-13 05:30 |  |
| 273 | 2.2.5.3 | **Cierre de la FASE 2** |  | 0.43d | 2019-05-14 13:30 A | 2019-05-14 16:30 | 270FS+15d | 50% | 0.21d |  |  |
| 274 | 2.2.5.3.1 | Reunión de Cierre de la FASE 2 |  | 3h | 2019-05-14 13:30 A | 2019-05-14 16:30 |  | 50% | 1.5h | finish no earlier than 2018-06-14 05:30 |  |
| 275 | 2.2.5.4 | HITO: FIN DE LA FASE 2 | milestone | 0d | 2019-05-14 16:30 | 2019-05-14 16:30 | 273FS+0.43d |  |  | finish no earlier than 2018-06-14 05:30 | 85% |
| 276 | 2.3 | **FASE 3: Implementación de Módulos de Planificación de Recursos Institucionales - PRI** |  | 76.86d | 2019-04-08 10:30 A | 2019-07-10 13:30 |  | 24% | 58.41d |  |  |
| 277 | 2.3.1 | **ETAPA 1: Instalación del SIIM - Módulos PRI** |  | 4.29d | 2019-04-08 10:30 A | 2019-04-12 08:30 |  | 99% | 0.04d |  |  |
| 278 | 2.3.1.1 | **Entrega e Instalación del Software** |  | 3.29d | 2019-04-08 10:30 A | 2019-04-11 09:30 A |  | 100% |  |  |  |
| 279 | 2.3.1.1.1 | **Instalar SIIM en Servidor** |  | 3d | 2019-04-08 10:30 A | 2019-04-10 16:30 A |  | 100% |  |  |  |
| 280 | 2.3.1.1.1.1 | Instalar Módulos PRI |  | 3d | 2019-04-08 10:30 A | 2019-04-10 16:30 A | 264 | 100% |  | finish no earlier than 2018-10-16 05:30 |  |
| 281 | 2.3.1.1.2 | Entrega de Software |  | 2h | 2019-04-10 16:30 A | 2019-04-11 09:30 A | 279FS+3d | 100% |  | finish no earlier than 2018-10-17 05:30 |  |
| 282 | 2.3.1.2 | Revisar la ETAPA del Proyecto |  | 1d | 2019-04-11 09:30 A | 2019-04-12 08:30 A | 278FS+3.29d | 100% |  | finish no earlier than 2018-10-17 05:30 |  |
| 283 | 2.3.1.3 | HITO: FINALIZACION ETAPA 1 | milestone | 0d | 2019-04-12 08:30 | 2019-04-12 08:30 | 282FS+1d |  |  | finish no earlier than 2018-10-17 05:30 | 86% |

| ID | WBS | Task | Type | Duration | Start | Finish | Predecessors | Complete | Remaining | Constraint | Porcentage Avance |
| --- | --- | --- | --- | --- | --- | --- | --- | --- | --- | --- | --- |
| 284 | 2.3.2 | **ETAPA 2: Levantamiento de Características Institucionales - Módulos PRI** |  | 8.57d | 2019-04-12 08:30 A | 2019-04-23 13:30 | 277FS+4.29d | 99% | 0.09d |  |  |
| 285 | 2.3.2.1 | **Actividades de Gestión del Proyecto** |  | 0.57d | 2019-04-12 08:30 A | 2019-04-12 13:30 A |  | 100% |  |  |  |
| 286 | 2.3.2.1.1 | Revisión del Plan del Proyecto |  | 2h | 2019-04-12 08:30 A | 2019-04-12 10:30 A |  | 100% |  | finish no earlier than 2018-10-18 05:30 |  |
| 287 | 2.3.2.1.2 | Programar talleres de requerimientos de Entidad |  | 2h | 2019-04-12 10:30 A | 2019-04-12 13:30 A | 286FS+2h | 100% |  | finish no earlier than 2018-10-18 05:30 |  |
| 288 | 2.3.2.2 | **Sesiones de Requerimientos del Entidad** |  | 6d | 2019-04-12 13:30 A | 2019-04-19 15:30 A | 285FS+0.57d | 100% |  |  |  |
| 289 | 2.3.2.2.1 | Conducir Sesiones de Requerimientos |  | 3d | 2019-04-12 13:30 A | 2019-04-17 09:30 A |  | 100% |  | finish no earlier than 2018-11-12 05:30 |  |
| 290 | 2.3.2.2.2 | Crear Documento de Características del Entidad |  | 3d | 2019-04-17 09:30 A | 2019-04-19 15:30 A | 289FS+3d | 100% |  | finish no earlier than 2018-11-15 05:30 |  |
| 291 | 2.3.2.3 | **Revisar el Documento de Características del Entidad** |  | 1d | 2019-04-19 15:30 A | 2019-04-22 14:30 A | 288FS+6d | 100% |  |  |  |
| 292 | 2.3.2.3.1 | Revisar el Documento de Características del Entidad |  | 4h | 2019-04-19 15:30 A | 2019-04-22 10:30 A |  | 100% |  | finish no earlier than 2018-11-16 05:30 |  |
| 293 | 2.3.2.3.2 | Revisar el Plan del Proyecto |  | 3h | 2019-04-22 10:30 A | 2019-04-22 14:30 A | 292FS+4h | 100% |  | finish no earlier than 2018-11-16 05:30 |  |
| 294 | 2.3.2.4 | Revisar la ETAPA del Proyecto |  | 1d | 2019-04-22 14:30 A | 2019-04-23 13:30 A | 291FS+1d | 100% |  | finish no earlier than 2018-11-19 05:30 |  |
| 295 | 2.3.2.5 | HITO: FINALIZACION ETAPA 2 | milestone | 0d | 2019-04-23 13:30 | 2019-04-23 13:30 | 294FS+1d |  |  | finish no earlier than 2018-11-19 05:30 | 87% |
| 296 | 2.3.3 | **ETAPA 3: Migración de Datos, Configuración y Pruebas de Operación de Módulos - Módulos PRI** |  | 33.43d | 2019-04-23 13:30 A | 2019-06-03 15:30 | 284FS+8.57d | 34% | 22.06d |  |  |
| 297 | 2.3.3.1 | **Gestión General del Proyecto** |  | 1.57d | 2019-04-23 13:30 A | 2019-04-24 16:30 A |  | 100% |  |  |  |
| 298 | 2.3.3.1.1 | Planificar cambio Organizacional |  | 3h | 2019-04-23 13:30 A | 2019-04-23 16:30 A |  | 100% |  | finish no earlier than 2018-11-19 05:30 |  |
| 299 | 2.3.3.1.2 | Planificar Entrenamiento a Usuarios Finales |  | 4h | 2019-04-23 16:30 A | 2019-04-24 11:30 A | 298FS+3h | 100% |  | finish no earlier than 2018-11-20 05:30 |  |
| 300 | 2.3.3.1.3 | Definir y Preparar la Migración de Datos |  | 4h | 2019-04-24 11:30 A | 2019-04-24 16:30 A | 299FS+4h | 100% |  | finish no earlier than 2018-11-20 05:30 |  |
| 301 | 2.3.3.2 | **Configuración del Sistema en Producción** |  | 20.57d | 2019-04-24 16:30 A | 2019-05-20 16:30 | 297FS+1.57d | 34% | 13.58d |  |  |
| 302 | 2.3.3.2.1 | Instalar el SIIM en Producción |  | 4h | 2019-04-24 16:30 A | 2019-04-25 11:30 A |  | 100% |  | finish no earlier than 2018-11-21 05:30 |  |
| 303 | 2.3.3.2.2 | Configurar Inicialización del Sistema |  | 1d | 2019-04-25 11:30 A | 2019-04-26 10:30 A | 302FS+4h | 100% |  | finish no earlier than 2018-11-23 05:30 |  |
| 304 | 2.3.3.2.3 | Realizar la Migración de Datos |  | 10d | 2019-04-26 10:30 | 2019-05-09 08:30 | 303FS+1d |  |  | finish no earlier than 2019-03-01 05:30 |  |
| 305 | 2.3.3.2.4 | Desarrollar Adaptaciones al Software |  | 5d | 2019-05-09 08:30 A | 2019-05-15 11:30 | 304FS+10d | 50% | 2.5d | finish no earlier than 2019-03-20 05:30 |  |
| 306 | 2.3.3.2.5 | Configuración del Sistema en base al Documento de Características del Entidad |  | 2d | 2019-05-15 11:30 A | 2019-05-17 09:30 | 305FS+5d | 50% | 1d | finish no earlier than 2019-03-27 05:30 |  |
| 307 | 2.3.3.2.6 | Configurar Interfaces |  | 1d | 2019-05-17 09:30 A | 2019-05-20 08:30 A | 306FS+2d | 100% |  | finish no earlier than 2019-03-29 05:30 |  |
| 308 | 2.3.3.2.7 | Configurar Usuarios y Autorizaciones |  | 1d | 2019-05-20 08:30 A | 2019-05-20 16:30 A | 307FS+1d | 100% |  | finish no earlier than 2019-04-01 05:30 |  |

| ID | WBS | Task | Duration | Start | Finish | Predecessors | Complete | Remaining | Constraint |
| --- | --- | --- | --- | --- | --- | --- | --- | --- | --- |
| 309 | 2.3.3.3 | **Gestión del Cambio Organizacional** | 2d | 2019-05-20 16:30 A | 2019-05-22 14:30 A | 301FS+20.57d | 100% |  |  |
| 310 | 2.3.3.3.1 | Conducir la comunicación de la Gestión de Cambios (si es aplicable) | 2d | 2019-05-20 16:30 A | 2019-05-22 14:30 A |  | 100% |  | finish no earlier than 2019-04-03 05:30 |
| 311 | 2.3.3.4 | **Pruebas de validación/aceptación del Sistema** | 2.57d | 2019-05-22 14:30 A | 2019-05-24 16:30 | 309FS+2d | 22% | 2.01d |  |
| 312 | 2.3.3.4.1 | Mantener la Lista Maestra de Procesos de Entidad | 4h | 2019-05-22 14:30 A | 2019-05-23 09:30 A |  | 100% |  | finish no earlier than 2019-04-04 05:30 |
| 313 | 2.3.3.4.2 | **Conducir Talleres de Validación** | 2d | 2019-05-23 09:30 | 2019-05-24 16:30 | 312FS+4h |  |  |  |
| 314 | 2.3.3.4.2.1 | 3.1 Compras Públicas | 2h | 2019-05-23 09:30 | 2019-05-23 11:30 |  |  |  |  |
| 315 | 2.3.3.4.2.2 | 6.2 Servicios Generales | 2h | 2019-05-23 11:30 | 2019-05-23 14:30 | 314FS+2h |  |  |  |
| 316 | 2.3.3.4.2.3 | 8.5 Gestión Jurídica - Financiera | 2h | 2019-05-23 14:30 | 2019-05-23 16:30 | 315FS+2h |  |  |  |
| 317 | 2.3.3.4.2.4 | 15.2 BI Financiero | 2h | 2019-05-23 16:30 | 2019-05-24 09:30 | 316FS+2h |  |  |  |
| 318 | 2.3.3.4.2.5 | 15.3 BI Administración del Talento Humano | 2h | 2019-05-24 09:30 | 2019-05-24 11:30 | 317FS+2h |  |  |  |
| 319 | 2.3.3.4.2.6 | 15.4 BI Compras Públicas | 2h | 2019-05-24 11:30 | 2019-05-24 14:30 | 318FS+2h |  |  |  |
| 320 | 2.3.3.4.2.7 | 15.9 Tablero de Control | 2h | 2019-05-24 14:30 | 2019-05-24 16:30 | 319FS+2h |  |  |  |
| 321 | 2.3.3.5 | **Pruebas de aceptacion del Sistema** | 4.43d | 2019-05-24 16:30 | 2019-05-30 15:30 | 311FS+2.57d |  |  |  |
| 322 | 2.3.3.5.1 | Definir casos de prueba y alcance | 3h | 2019-05-24 16:30 | 2019-05-27 10:30 |  |  |  | finish no earlier than 2019-04-17 05:30 |
| 323 | 2.3.3.5.2 | Preparar ambiente de pruebas | 1d | 2019-05-27 10:30 | 2019-05-28 09:30 | 322FS+3h |  |  | finish no earlier than 2019-04-19 05:30 |
| 324 | 2.3.3.5.3 | **Ejecutar el plan de pruebas** | 2d | 2019-05-28 09:30 | 2019-05-29 16:30 | 323FS+1d |  |  |  |
| 325 | 2.3.3.5.3.1 | 3.1 Compras Públicas | 2h | 2019-05-28 09:30 | 2019-05-28 11:30 |  |  |  |  |
| 326 | 2.3.3.5.3.2 | 6.2 Servicios Generales | 2h | 2019-05-28 11:30 | 2019-05-28 14:30 | 325FS+2h |  |  |  |
| 327 | 2.3.3.5.3.3 | 8.5 Gestión Jurídica - Financiera | 2h | 2019-05-28 14:30 | 2019-05-28 16:30 | 326FS+2h |  |  |  |
| 328 | 2.3.3.5.3.4 | 15.2 BI Financiero | 2h | 2019-05-28 16:30 | 2019-05-29 09:30 | 327FS+2h |  |  |  |
| 329 | 2.3.3.5.3.5 | 15.3 BI Administración del Talento Humano | 2h | 2019-05-29 09:30 | 2019-05-29 11:30 | 328FS+2h |  |  |  |
| 330 | 2.3.3.5.3.6 | 15.4 BI Compras Públicas | 2h | 2019-05-29 11:30 | 2019-05-29 14:30 | 329FS+2h |  |  |  |
| 331 | 2.3.3.5.3.7 | 15.9 Tablero de Control | 2h | 2019-05-29 14:30 | 2019-05-29 16:30 | 330FS+2h |  |  |  |
| 332 | 2.3.3.5.4 | Revisar los resultados de las pruebas y necesidades de cambios | 1d | 2019-05-29 16:30 | 2019-05-30 15:30 | 331FS+2h, 320FS+2h |  |  | finish no earlier than 2019-05-07 05:30 |

| ID | WBS | Task | Type | Duration | Start | Finish | Predecessors | Constraint | Porcentage Avance |
| --- | --- | --- | --- | --- | --- | --- | --- | --- | --- |
| 333 | 2.3.3.6 | **Planificar Salida a Producción y Soporte** |  | 1.29d | 2019-05-30 15:30 | 2019-05-31 16:30 | 321FS+4.43d |  |  |
| 334 | 2.3.3.6.1 | Definir Plan de Salida a Producción |  | 3h | 2019-05-30 15:30 | 2019-05-31 09:30 |  | finish no earlier than 2019-05-07 05:30 |  |
| 335 | 2.3.3.6.2 | Planificar Estrategia de Soporte |  | 3h | 2019-05-31 09:30 | 2019-05-31 13:30 | 334FS+3h | finish no earlier than 2019-05-07 05:30 |  |
| 336 | 2.3.3.6.3 | Planificar Administración del Sistema |  | 3h | 2019-05-31 13:30 | 2019-05-31 16:30 | 335FS+3h | finish no earlier than 2019-05-08 05:30 |  |
| 337 | 2.3.3.7 | Revisar la ETAPA del Proyecto |  | 1d | 2019-05-31 16:30 | 2019-06-03 15:30 | 333FS+1.29d | finish no earlier than 2019-05-09 05:30 |  |
| 338 | 2.3.3.8 | HITO: FINALIZACION ETAPA 3 | milestone | 0d | 2019-06-03 15:30 | 2019-06-03 15:30 | 337FS+1d | finish no earlier than 2019-05-09 05:30 | 95% |
| 339 | 2.3.4 | **ETAPA 4: Preparación Final previo Despliegue en Producción - Módulos PRI** |  | 12.43d | 2019-06-03 15:30 | 2019-06-18 14:30 | 296FS+33.43d |  |  |
| 340 | 2.3.4.1 | **Gestión General del Proyecto** |  | 1.14d | 2019-06-03 15:30 | 2019-06-04 15:30 |  |  |  |
| 341 | 2.3.4.1.1 | Confirmar el Plan de Entrenamiento |  | 4h | 2019-06-03 15:30 | 2019-06-04 10:30 |  | finish no earlier than 2019-05-09 05:30 |  |
| 342 | 2.3.4.1.2 | Finalizar plan de Salida a Producción |  | 4h | 2019-06-04 10:30 | 2019-06-04 15:30 | 341FS+4h | finish no earlier than 2019-05-10 05:30 |  |
| 343 | 2.3.4.2 | **Entrenamiento** |  | 7d | 2019-06-04 15:30 | 2019-06-12 16:30 | 340FS+1.14d |  |  |
| 344 | 2.3.4.2.1 | **Entrenamiento de Usuarios Funcionales y Certificación de Procesos** |  | 4d | 2019-06-04 15:30 | 2019-06-10 10:30 |  |  |  |
| 345 | 2.3.4.2.1.1 | 3.1 Compras Públicas |  | 4h | 2019-06-04 15:30 | 2019-06-05 10:30 |  |  |  |
| 346 | 2.3.4.2.1.2 | 6.2 Servicios Generales |  | 4h | 2019-06-05 10:30 | 2019-06-05 15:30 | 345FS+4h |  |  |
| 347 | 2.3.4.2.1.3 | 8.5 Gestión Jurídica - Financiera |  | 4h | 2019-06-05 15:30 | 2019-06-06 10:30 | 346FS+4h |  |  |
| 348 | 2.3.4.2.1.4 | 15.2 BI Financiero |  | 4h | 2019-06-06 10:30 | 2019-06-06 15:30 | 347FS+4h |  |  |
| 349 | 2.3.4.2.1.5 | 15.3 BI Administración del Talento Humano |  | 4h | 2019-06-06 15:30 | 2019-06-07 10:30 | 348FS+4h |  |  |
| 350 | 2.3.4.2.1.6 | 15.4 BI Compras Públicas |  | 4h | 2019-06-07 10:30 | 2019-06-07 15:30 | 349FS+4h |  |  |
| 351 | 2.3.4.2.1.7 | 15.9 Tablero de Control |  | 4h | 2019-06-07 15:30 | 2019-06-10 10:30 | 350FS+4h |  |  |
| 352 | 2.3.4.2.2 | Entrenamiento de Usuario Técnicos |  | 3d | 2019-06-10 10:30 | 2019-06-12 16:30 | 351FS+4h | finish no earlier than 2019-05-31 05:30 |  |
| 353 | 2.3.4.3 | **Preparación del Sistema** |  | 1.43d | 2019-06-12 16:30 | 2019-06-14 09:30 | 343FS+7d |  |  |
| 354 | 2.3.4.3.1 | Completar la Administración del Sistema |  | 5h | 2019-06-12 16:30 | 2019-06-13 13:30 |  | finish no earlier than 2019-06-03 05:30 |  |
| 355 | 2.3.4.3.2 | Comprobación de la Puesta a Producción |  | 5h | 2019-06-13 13:30 | 2019-06-14 09:30 | 354FS+5h | finish no earlier than 2019-06-04 05:30 |  |
| 356 | 2.3.4.4 | **Transición** |  | 2.57d | 2019-06-14 09:30 | 2019-06-18 11:30 | 353FS+1.43d |  |  |
| 357 | 2.3.4.4.1 | Finalizar Procesamiento de Sistemas Legados |  | 4h | 2019-06-14 09:30 | 2019-06-14 14:30 |  | finish no earlier than 2019-06-04 05:30 |  |
| 358 | 2.3.4.4.2 | Realizar la Salida a Producción - Carga Inicial y Configuración Inicial |  | 2d | 2019-06-14 14:30 | 2019-06-18 11:30 | 357FS+4h | finish no earlier than 2019-06-11 05:30 |  |
| 359 | 2.3.4.5 | Revisar la ETAPA del Proyecto |  | 2h | 2019-06-18 11:30 | 2019-06-18 14:30 | 356FS+2.57d | finish no earlier than 2019-06-11 05:30 |  |
| 360 | 2.3.4.6 | HITO: FINALIZACION ETAPA 4 | milestone | 0d | 2019-06-18 14:30 | 2019-06-18 14:30 | 359FS+2h | finish no earlier than 2019-06-11 05:30 | 98% |

| ID | WBS | Task | Type | Duration | Start | Finish | Predecessors | Constraint | Porcentage Avance |
| --- | --- | --- | --- | --- | --- | --- | --- | --- | --- |
| 361 | 2.3.5 | **ETAPA 5: Despliegue en Producción y Soporte Técnico - Módulos PRI** |  | 15.43d | 2019-06-21 08:30 | 2019-07-10 13:30 | 339FS+12.43d |  |  |
| 362 | 2.3.5.1 | **Soporte en Producción** |  | 10d | 2019-06-21 14:00 | 2019-07-04 11:00 |  |  |  |
| 363 | 2.3.5.1.1 | Soporte durante la Salida a Producción |  | 5d | 2019-06-21 14:00 | 2019-06-28 05:30 |  | finish no earlier than 2019-06-28 05:30 |  |
| 364 | 2.3.5.1.2 | Resolver incidentes críticos |  | 3d | 2019-06-28 08:00 | 2019-07-02 14:00 | 363FS+5d | finish no earlier than 2019-06-28 05:30 |  |
| 365 | 2.3.5.1.3 | Entregar el soporte y Administración al cliente |  | 2d | 2019-07-02 14:00 | 2019-07-04 11:00 | 364FS+3d | finish no earlier than 2019-06-13 05:30 |  |
| 366 | 2.3.5.2 | **Mejora Continua** |  | 15d | 2019-06-21 08:30 | 2019-07-10 09:30 | 339FS+12.43d |  |  |
| 367 | 2.3.5.2.1 | Monitoreo del Sistema y Acompañamiento |  | 15d | 2019-06-21 08:30 | 2019-07-10 09:30 |  | start no earlier than 2019-06-21 08:30 |  |
| 368 | 2.3.5.2.2 | Ajustes y Configuraciones finales al Software acorde a necesidades Entidad |  | 15d | 2019-06-21 08:30 | 2019-07-10 09:30 | 339FS+12.43d | start no earlier than 2019-06-21 08:30 |  |
| 369 | 2.3.5.3 | **Cierre de la FASE 3 y Proyecto** |  | 0.43d | 2019-07-10 09:30 | 2019-07-10 13:30 | 366FS+15d |  |  |
| 370 | 2.3.5.3.1 | Reunión de Cierre de la FASE 3 y Proyecto |  | 3h | 2019-07-10 09:30 | 2019-07-10 13:30 |  | start no earlier than 2019-07-10 08:30 |  |
| 371 | 2.3.5.4 | HITO: FIN DE LA FASE 3 y Proyecto | milestone | 0d | 2019-07-10 09:30 | 2019-07-10 09:30 | 366FS+15d | start no earlier than 2019-07-10 08:30 | 100% |
