# 20190122- Plan del Proyecto de Implementacion del SIIM Daule

Schedule from MS Project, 2018-07-16 to 2019-07-10, 7 hours a day, A marks actual dates.
PlanERP

## Calendars

- Standard: Mon-Fri 08:00-12:00, 13:00-17:00; Sat-Sun off.

## Resources

| Resource |
| --- |
| Administrador de Contrato - Cliente |
| Líder Técnico - Cliente |
| Líder Funcional - Usuario Experto - Cliente |
| Funcionarios Técnicos - Cliente |
| Usuarios Finales - Cliente |
| Desarrollador PlanERP |
| Gerente de Proyecto PlanERP |
| Líder del Proyecto/Desarrollo PlanERP |
| Analista Procesos PlanERP |
| Analista de Calidad PlanERP |
| Especialista Base de Datos PlanERP |
| Consultor Especialista en Procesos de GADs PlanERP |

## Schedule

| ID | WBS | Task | Type | Duration | Start | Finish | Predecessors | Complete | Remaining | Total slack | Constraint | Resources | Work | Actual work | Porcentage Avance |
| --- | --- | --- | --- | --- | --- | --- | --- | --- | --- | --- | --- | --- | --- | --- | --- |
| 1 | 1 | **Programa de Implementación SIIM** |  | 294.29d | 2018-07-16 08:30 A | 2019-07-10 13:30 |  | 82% | 52.68d | 0d |  |  | 14139h | 10301.5h |  |
| 2 | 1.1 | **FASE 1: Implementación de Módulos de Servicio al Cliente (SC) y Atención al Ciudadano (AC)** |  | 159.57d | 2018-07-16 08:30 A | 2019-01-25 14:30 A |  | 100% |  |  |  |  | 6380h | 6380h |  |
| 3 | 1.1.1 | **ETAPA 1: Preparación del Proyecto e Instalación del SIIM - Módulos SC y AC** |  | 9d | 2018-07-16 08:30 A | 2018-07-25 16:30 A |  | 100% |  |  |  |  | 111h | 111h |  |
| 4 | 1.1.1.1 | **Actividades de Gestión del Proyecto** |  | 2.29d | 2018-07-16 08:30 A | 2018-07-18 08:30 A |  | 100% |  |  |  |  | 32h | 32h |  |
| 5 | 1.1.1.1.1 | Revisión de Información de Contrato y Anexos |  | 6h | 2018-07-16 08:30 A | 2018-07-16 15:30 A |  | 100% |  |  | start no earlier than 2018-07-16 08:30 | Gerente de Proyecto PlanERP; Líder del Proyecto/Desarrollo PlanERP | 12h | 12h |  |
| 6 | 1.1.1.1.2 | Definir la Organización del Proyecto |  | 4h | 2018-07-16 15:30 A | 2018-07-17 10:30 A | 5 | 100% |  |  |  | Gerente de Proyecto PlanERP; Líder del Proyecto/Desarrollo PlanERP | 8h | 8h |  |
| 7 | 1.1.1.1.3 | Kick-off Interno del Proyecto |  | 6h | 2018-07-17 10:30 A | 2018-07-18 08:30 A | 6 | 100% |  |  |  | Gerente de Proyecto PlanERP; Líder del Proyecto/Desarrollo PlanERP | 12h | 12h |  |
| 8 | 1.1.1.2 | **Preparación del kick-off del Proyecto** |  | 1.14d | 2018-07-18 08:30 A | 2018-07-19 08:30 A |  | 100% |  |  |  |  | 16h | 16h |  |
| 9 | 1.1.1.2.1 | Comunicación con el Cliente |  | 4h | 2018-07-18 08:30 A | 2018-07-18 13:30 A | 7 | 100% |  |  |  | Administrador de Contrato - Cliente; Gerente de Proyecto PlanERP | 8h | 8h |  |
| 10 | 1.1.1.2.2 | Crear la presentación del kick-off |  | 4h | 2018-07-18 13:30 A | 2018-07-19 08:30 A | 9 | 100% |  |  |  | Gerente de Proyecto PlanERP; Líder del Proyecto/Desarrollo PlanERP | 8h | 8h |  |
| 11 | 1.1.1.3 | **Reunión de Kick-off** |  | 0.29d | 2018-07-19 08:30 A | 2018-07-19 10:30 A |  | 100% |  |  |  |  | 10h | 10h |  |
| 12 | 1.1.1.3.1 | Realizar la reunión de kick-off |  | 2h | 2018-07-19 08:30 A | 2018-07-19 10:30 A | 10 | 100% |  |  |  | Administrador de Contrato - Cliente; Líder Funcional - Usuario Experto - Cliente; Gerente de Proyecto PlanERP; Líder Técnico - Cliente; Líder del Proyecto/Desarrollo PlanERP | 10h | 10h |  |
| 13 | 1.1.1.4 | **Entrega e Instalación del Software** |  | 4.29d | 2018-07-19 10:30 A | 2018-07-25 08:30 A |  | 100% |  |  |  |  | 32h | 32h |  |
| 14 | 1.1.1.4.1 | **Instalar SIIM en Servidor** |  | 4d | 2018-07-19 10:30 A | 2018-07-24 15:30 A | 11 | 100% |  |  |  | Funcionarios Técnicos - Cliente | 28h | 28h |  |
| 15 | 1.1.1.4.1.1 | 1 Dirección de Desarrollo Territorial (No incluye Catastro) |  | 2h | 2018-07-19 10:30 A | 2018-07-19 13:30 A |  | 100% |  |  |  |  |  |  |  |
| 16 | 1.1.1.4.1.2 | 4 Dirección de Justicia y Vigilancia |  | 2h | 2018-07-19 13:30 A | 2018-07-19 15:30 A | 15 | 100% |  |  |  |  |  |  |  |
| 17 | 1.1.1.4.1.3 | 5 Dirección de Desarrollo Humano y Social |  | 2h | 2018-07-19 15:30 A | 2018-07-20 08:30 A | 16 | 100% |  |  |  |  |  |  |  |
| 18 | 1.1.1.4.1.4 | 8.3 Rentas |  | 2h | 2018-07-20 08:30 A | 2018-07-20 10:30 A | 17 | 100% |  |  |  |  |  |  |  |
| 19 | 1.1.1.4.1.5 | 8.4 Tesorería |  | 2h | 2018-07-20 10:30 A | 2018-07-20 13:30 A | 18 | 100% |  |  |  |  |  |  |  |
| 20 | 1.1.1.4.1.6 | 9.1 Mercados |  | 1h | 2018-07-20 13:30 A | 2018-07-20 14:30 A | 19 | 100% |  |  |  |  |  |  |  |
| 21 | 1.1.1.4.1.7 | 9.2 Cementerio |  | 1h | 2018-07-20 14:30 A | 2018-07-20 15:30 A | 20 | 100% |  |  |  |  |  |  |  |
| 22 | 1.1.1.4.1.8 | 9.3 Camal |  | 1h | 2018-07-20 15:30 A | 2018-07-20 16:30 A | 21 | 100% |  |  |  |  |  |  |  |
| 23 | 1.1.1.4.1.9 | 10 Registro de la Propiedad y Mercantil |  | 2h | 2018-07-20 16:30 A | 2018-07-23 09:30 A | 22 | 100% |  |  |  |  |  |  |  |
| 24 | 1.1.1.4.1.10 | 11 Administración de bomberos |  | 1h | 2018-07-23 09:30 A | 2018-07-23 10:30 A | 23 | 100% |  |  |  |  |  |  |  |
| 25 | 1.1.1.4.1.11 | 12 CRM para ciudadanos. Ventanilla Única |  | 2h | 2018-07-23 10:30 A | 2018-07-23 13:30 A | 24 | 100% |  |  |  |  |  |  |  |
| 26 | 1.1.1.4.1.12 | 15.1 BI Desarrollo Territorial |  | 2h | 2018-07-23 13:30 A | 2018-07-23 15:30 A | 25 | 100% |  |  |  |  |  |  |  |
| 27 | 1.1.1.4.1.13 | 15.5 BI Obras Públicas Municipales |  | 2h | 2018-07-23 15:30 A | 2018-07-24 08:30 A | 26 | 100% |  |  |  |  |  |  |  |
| 28 | 1.1.1.4.1.14 | 15.7 BI Registro de la Propiedad y Mercantil |  | 2h | 2018-07-24 08:30 A | 2018-07-24 10:30 A | 27 | 100% |  |  |  |  |  |  |  |
| 29 | 1.1.1.4.1.15 | 16.1 Consultas Portal Web |  | 2h | 2018-07-24 10:30 A | 2018-07-24 13:30 A | 28 | 100% |  |  |  |  |  |  |  |
| 30 | 1.1.1.4.1.16 | 16.2 Aplicación para móviles (APP) |  | 2h | 2018-07-24 13:30 A | 2018-07-24 15:30 A | 29 | 100% |  |  |  |  |  |  |  |
| 31 | 1.1.1.4.2 | Entrega de Software |  | 2h | 2018-07-24 15:30 A | 2018-07-25 08:30 A | 14 | 100% |  |  |  | Gerente de Proyecto PlanERP; Administrador de Contrato - Cliente | 4h | 4h |  |
| 32 | 1.1.1.5 | Revisar la ETAPA del Proyecto |  | 1d | 2018-07-25 08:30 A | 2018-07-25 16:30 A | 13 | 100% |  |  |  | Administrador de Contrato - Cliente; Gerente de Proyecto PlanERP; Analista de Calidad PlanERP | 21h | 21h |  |
| 33 | 1.1.1.6 | HITO: FINALIZACION ETAPA 1 | milestone | 0d | 2018-07-25 16:30 A | 2018-07-25 16:30 A | 32 | 100% |  |  |  |  |  |  | 5% |

Notes:
- 5: ·Obtener información de los procesos de negociación, el cliente, cronograma, procesos de negocio / ·Levantamiento de los riesgos del proyecto
- 6: ·Esclarecer las responsabilidades internas del proyecto
- 7: ·Comunicar el Plan del Proyecto al equipo
- 9: ·Confirmar disponibilidad de hardware y recursos / ·Confirmar fecha y agenda para la reunión de kickoff
- 10: ·Elaborar la presentación para la reunión del kickoff, con la agenda y el plan del proyecto
- 12: ·Conducir reunión de kickoff / ·Comprender las expectativas del usuario y requerimientos de alto nivel / ·Finalizar el plan del proyecto y cronograma / ·Firmar el Acuerdo de Nivel de Servicio (SLA)
- 14: ·Instalar SIIM Base e inicializarlo con una Base de Datos de prueba en el hardware del cliente
- 32: ·Obtener la firma de finalización de la fase del proyecto

| ID | WBS | Task | Type | Duration | Start | Finish | Predecessors | Complete | Resources | Work | Actual work | Porcentage Avance |
| --- | --- | --- | --- | --- | --- | --- | --- | --- | --- | --- | --- | --- |
| 34 | 1.1.2 | **ETAPA 2: Levantamiento de Características Institucionales - Módulos SC y AC** |  | 14.71d | 2018-07-25 16:30 A | 2018-08-13 15:30 A | 3 | 100% |  | 310h | 310h |  |
| 35 | 1.1.2.1 | **Actividades de Gestión del Proyecto** |  | 1.14d | 2018-07-25 16:30 A | 2018-07-26 16:30 A |  | 100% |  | 16h | 16h |  |
| 36 | 1.1.2.1.1 | Revisión del Plan del Proyecto |  | 4h | 2018-07-25 16:30 A | 2018-07-26 11:30 A | 32 | 100% | Administrador de Contrato - Cliente; Gerente de Proyecto PlanERP | 8h | 8h |  |
| 37 | 1.1.2.1.2 | Programar talleres de requerimientos de Entidad |  | 4h | 2018-07-26 11:30 A | 2018-07-26 16:30 A | 36 | 100% | Administrador de Contrato - Cliente; Gerente de Proyecto PlanERP | 8h | 8h |  |
| 38 | 1.1.2.2 | **Sesiones de Requerimientos del Entidad** |  | 12d | 2018-07-26 16:30 A | 2018-08-10 11:30 A |  | 100% |  | 252h | 252h |  |
| 39 | 1.1.2.2.1 | Conducir Sesiones de Requerimientos |  | 10d | 2018-07-26 16:30 A | 2018-08-08 14:30 A | 37 | 100% | Funcionarios Técnicos - Cliente; Analista Procesos PlanERP; Consultor Especialista en Procesos de GADs PlanERP | 210h | 210h |  |
| 40 | 1.1.2.2.2 | Crear Documento de Características del Entidad |  | 2d | 2018-08-08 14:30 A | 2018-08-10 11:30 A | 39 | 100% | Analista Procesos PlanERP; Funcionarios Técnicos - Cliente; Consultor Especialista en Procesos de GADs PlanERP | 42h | 42h |  |
| 41 | 1.1.2.3 | **Revisar el Documento de Características del Entidad** |  | 0.57d | 2018-08-10 11:30 A | 2018-08-10 16:30 A |  | 100% |  | 14h | 14h |  |
| 42 | 1.1.2.3.1 | Revisar el Documento de Características del Entidad |  | 2h | 2018-08-10 11:30 A | 2018-08-10 14:30 A | 40 | 100% | Administrador de Contrato - Cliente; Gerente de Proyecto PlanERP; Analista de Calidad PlanERP; Consultor Especialista en Procesos de GADs PlanERP; Analista Procesos PlanERP | 10h | 10h |  |
| 43 | 1.1.2.3.2 | Revisar el Plan del Proyecto |  | 2h | 2018-08-10 14:30 A | 2018-08-10 16:30 A | 42 | 100% | Administrador de Contrato - Cliente; Gerente de Proyecto PlanERP | 4h | 4h |  |
| 44 | 1.1.2.4 | Revisar la ETAPA del Proyecto |  | 1d | 2018-08-10 16:30 A | 2018-08-13 15:30 A | 41 | 100% | Administrador de Contrato - Cliente; Gerente de Proyecto PlanERP; Líder del Proyecto/Desarrollo PlanERP; Analista de Calidad PlanERP | 28h | 28h |  |
| 45 | 1.1.2.5 | HITO: FINALIZACION ETAPA 2 | milestone | 0d | 2018-08-13 15:30 A | 2018-08-13 15:30 A | 44 | 100% |  |  |  | 10% |
| 46 | 1.1.3 | **ETAPA 3: Migración de Datos, Configuración y Pruebas de Operación - Módulos SC y AC** |  | 56.57d | 2018-08-13 15:30 A | 2018-10-22 10:30 A | 34 | 100% |  | 2572h | 2572h |  |
| 47 | 1.1.3.1 | **Gestión General del Proyecto** |  | 0.57d | 2018-08-13 15:30 A | 2018-08-14 10:30 A |  | 100% |  | 18h | 18h |  |
| 48 | 1.1.3.1.1 | Planificar cambio Organizacional |  | 2h | 2018-08-13 15:30 A | 2018-08-14 08:30 A | 44 | 100% | Administrador de Contrato - Cliente; Gerente de Proyecto PlanERP; Líder del Proyecto/Desarrollo PlanERP | 6h | 6h |  |
| 49 | 1.1.3.1.2 | Planificar Entrenamiento a Usuarios Finales |  | 2h | 2018-08-14 08:30 A | 2018-08-14 10:30 A | 48 | 100% | Administrador de Contrato - Cliente; Gerente de Proyecto PlanERP; Líder del Proyecto/Desarrollo PlanERP | 6h | 6h |  |
| 50 | 1.1.3.1.3 | Definir y Preparar la Migración de Datos |  | 2h | 2018-08-14 08:30 A | 2018-08-14 10:30 A | 48 | 100% | Funcionarios Técnicos - Cliente; Líder del Proyecto/Desarrollo PlanERP; Especialista Base de Datos PlanERP | 6h | 6h |  |
| 51 | 1.1.3.2 | **Configuración del Sistema en Producción** |  | 56d | 2018-08-14 10:30 A | 2018-10-22 10:30 A |  | 100% |  | 2202h | 2202h |  |
| 52 | 1.1.3.2.1 | Instalar el SIIM en Producción |  | 1d | 2018-08-14 10:30 A | 2018-08-15 09:30 A | 50 | 100% | Funcionarios Técnicos - Cliente; Analista Procesos PlanERP; Desarrollador PlanERP; Líder del Proyecto/Desarrollo PlanERP; Especialista Base de Datos PlanERP | 35h | 35h |  |
| 53 | 1.1.3.2.2 | Configurar Inicialización del Sistema |  | 1d | 2018-08-15 09:30 A | 2018-08-16 08:30 A | 52 | 100% | Funcionarios Técnicos - Cliente; Analista Procesos PlanERP; Desarrollador PlanERP; Líder del Proyecto/Desarrollo PlanERP; Especialista Base de Datos PlanERP | 35h | 35h |  |
| 54 | 1.1.3.2.3 | Realizar la Migración de Datos |  | 54d | 2018-08-16 08:30 A | 2018-10-22 10:30 A | 53 | 100% | Funcionarios Técnicos - Cliente; Analista Procesos PlanERP; Desarrollador PlanERP; Líder del Proyecto/Desarrollo PlanERP; Especialista Base de Datos PlanERP | 1607h | 1607h |  |
| 55 | 1.1.3.2.4 | Desarrollar Adaptaciones al Software |  | 10d | 2018-08-16 08:30 A | 2018-08-28 15:30 A | 53 | 100% | Funcionarios Técnicos - Cliente; Analista Procesos PlanERP; Desarrollador PlanERP; Líder del Proyecto/Desarrollo PlanERP; Especialista Base de Datos PlanERP | 350h | 350h |  |
| 56 | 1.1.3.2.5 | Configuración del Sistema en base al Documento de Características del Entidad |  | 3d | 2018-08-28 15:30 A | 2018-08-31 11:30 A | 55 | 100% | Funcionarios Técnicos - Cliente; Analista Procesos PlanERP; Desarrollador PlanERP; Líder del Proyecto/Desarrollo PlanERP; Especialista Base de Datos PlanERP | 105h | 105h |  |
| 57 | 1.1.3.2.6 | Configurar Interfaces |  | 1d | 2018-08-31 11:30 A | 2018-09-03 10:30 A | 56 | 100% | Funcionarios Técnicos - Cliente; Analista Procesos PlanERP; Desarrollador PlanERP; Líder del Proyecto/Desarrollo PlanERP; Especialista Base de Datos PlanERP | 35h | 35h |  |
| 58 | 1.1.3.2.7 | Configurar Usuarios y Autorizaciones |  | 1d | 2018-09-03 10:30 A | 2018-09-04 09:30 A | 57 | 100% | Funcionarios Técnicos - Cliente; Analista Procesos PlanERP; Desarrollador PlanERP; Líder del Proyecto/Desarrollo PlanERP; Especialista Base de Datos PlanERP | 35h | 35h |  |

Notes:
- 36: ·Revisar las actas de la reunión de kick-off / ·Se actualiza el plan del proyecto en base a la reunión de kick-off
- 37: ·Se agenda el taller de levantamiento de requerimientos
- 39: ·Las Necesidades del negocio son detalladas en áreas como: Catastro urbano, catastro rural, etc. / ·Los requerimientos son definidos para: Autorizaciones y dueños de información, Migración de datos, Interfaces y puntos de Integración, rendimiento del sistema
- 40: ·Todos los datos relevantes (requerimientos, soluciones, limites, brechas) son documentadas en el documento de Características del Negocio
- 42: ·Se determina la factibilidad de los requerimientos técnicos y de negocio / ·Se establecen los limites y brechas y se acuerdan las soluciones
- 43: ·Se actualiza el plan del proyecto basado en la revisión del Documento de Características del Negocio
- 44: ·Obtener la firma de finalización de la fase del proyecto
- 48: ·Se definen los roles de usuario y se asignan a los procesos de negocio / ·Se define la estrategia de comunicación con los usuarios finales
- 49: ·Se define la estrategia de Entrenamiento / ·Se crea el cronograma de entrenamiento preliminar / ·Se crea el material de entrenamiento
- 50: ·Se limpia y se filtra los datos relevantes de los sistemas legados
- 52: ·El SIIM con su base de datos respectiva es instalado en el hardware del cliente para su uso en producción
- 53: ·Se inicializa el SIIM basado en el BluePrint y la guía de instalación del SIIM
- 54: ·Se configura el SIIM en Producción basado en el BluePrint del Negocio
- 56: ·Se configura el SIIM en Producción basado en el BluePrint del Negocio
- 57: ·Se configuran las interfaces estándar para imprimir, email, etc.
- 58: ·Se completa la lista de usuarios con las respectivas autorizaciones y se crean los usuarios en el SIIM

| ID | WBS | Task | Duration | Start | Finish | Predecessors | Complete | Resources | Work | Actual work |
| --- | --- | --- | --- | --- | --- | --- | --- | --- | --- | --- |
| 59 | 1.1.3.3 | **Gestión del Cambio Organizacional** | 1d | 2018-09-04 09:30 A | 2018-09-05 08:30 A |  | 100% |  | 28h | 28h |
| 60 | 1.1.3.3.1 | Conducir la comunicación de la Gestión de Cambios (si es aplicable) | 1d | 2018-09-04 09:30 A | 2018-09-05 08:30 A | 58 | 100% | Administrador de Contrato - Cliente; Líder Funcional - Usuario Experto - Cliente; Gerente de Proyecto PlanERP; Consultor Especialista en Procesos de GADs PlanERP | 28h | 28h |
| 61 | 1.1.3.4 | **Pruebas de validación/aceptación del Sistema** | 3.43d | 2018-09-05 08:30 A | 2018-09-10 08:30 A |  | 100% |  | 98h | 98h |
| 62 | 1.1.3.4.1 | Mantener la Lista Maestra de Procesos de Entidad | 2h | 2018-09-05 08:30 A | 2018-09-05 10:30 A | 60 | 100% | Líder Funcional - Usuario Experto - Cliente; Gerente de Proyecto PlanERP; Líder del Proyecto/Desarrollo PlanERP; Analista Procesos PlanERP; Consultor Especialista en Procesos de GADs PlanERP | 10h | 10h |
| 63 | 1.1.3.4.2 | **Conducir Talleres de Validación** | 3.14d | 2018-09-05 10:30 A | 2018-09-10 08:30 A | 62 | 100% | Líder Funcional - Usuario Experto - Cliente; Analista Procesos PlanERP; Analista de Calidad PlanERP; Consultor Especialista en Procesos de GADs PlanERP | 88h | 88h |
| 64 | 1.1.3.4.2.1 | 1 Dirección de Desarrollo Territorial (No incluye Catastro) | 2h | 2018-09-05 10:30 A | 2018-09-05 13:30 A |  | 100% |  |  |  |
| 65 | 1.1.3.4.2.2 | 4 Dirección de Justicia y Vigilancia | 2h | 2018-09-05 13:30 A | 2018-09-05 15:30 A | 64 | 100% |  |  |  |
| 66 | 1.1.3.4.2.3 | 5 Dirección de Desarrollo Humano y Social | 1h | 2018-09-05 15:30 A | 2018-09-05 16:30 A | 65 | 100% |  |  |  |
| 67 | 1.1.3.4.2.4 | 8.3 Rentas | 2h | 2018-09-05 16:30 A | 2018-09-06 09:30 A | 66 | 100% |  |  |  |
| 68 | 1.1.3.4.2.5 | 8.4 Tesorería | 2h | 2018-09-06 09:30 A | 2018-09-06 11:30 A | 67 | 100% |  |  |  |
| 69 | 1.1.3.4.2.6 | 9.1 Mercados | 1h | 2018-09-06 11:30 A | 2018-09-06 13:30 A | 68 | 100% |  |  |  |
| 70 | 1.1.3.4.2.7 | 9.2 Cementerio | 1h | 2018-09-06 13:30 A | 2018-09-06 14:30 A | 69 | 100% |  |  |  |
| 71 | 1.1.3.4.2.8 | 9.3 Camal | 1h | 2018-09-06 14:30 A | 2018-09-06 15:30 A | 70 | 100% |  |  |  |
| 72 | 1.1.3.4.2.9 | 10 Registro de la Propiedad y Mercantil | 2h | 2018-09-06 15:30 A | 2018-09-07 08:30 A | 71 | 100% |  |  |  |
| 73 | 1.1.3.4.2.10 | 11 Administración de bomberos | 1h | 2018-09-07 08:30 A | 2018-09-07 09:30 A | 72 | 100% |  |  |  |
| 74 | 1.1.3.4.2.11 | 12 CRM para ciudadanos. Ventanilla Única | 2h | 2018-09-07 09:30 A | 2018-09-07 11:30 A | 73 | 100% |  |  |  |
| 75 | 1.1.3.4.2.12 | 15.1 BI Desarrollo Territorial | 1h | 2018-09-07 11:30 A | 2018-09-07 13:30 A | 74 | 100% |  |  |  |
| 76 | 1.1.3.4.2.13 | 15.5 BI Obras Públicas Municipales | 1h | 2018-09-07 13:30 A | 2018-09-07 14:30 A | 75 | 100% |  |  |  |
| 77 | 1.1.3.4.2.14 | 15.7 BI Registro de la Propiedad y Mercantil | 1h | 2018-09-07 14:30 A | 2018-09-07 15:30 A | 76 | 100% |  |  |  |
| 78 | 1.1.3.4.2.15 | 16.1 Consultas Portal Web | 1h | 2018-09-07 15:30 A | 2018-09-07 16:30 A | 77 | 100% |  |  |  |
| 79 | 1.1.3.4.2.16 | 16.2 Aplicación para móviles (APP) | 1h | 2018-09-07 16:30 A | 2018-09-10 08:30 A | 78 | 100% |  |  |  |
| 80 | 1.1.3.5 | **Pruebas de Aceptacion Sistema** | 5.43d | 2018-09-10 08:30 A | 2018-09-14 15:30 A |  | 100% |  | 174h | 174h |
| 81 | 1.1.3.5.1 | Definir casos de prueba y alcance | 2h | 2018-09-10 08:30 A | 2018-09-10 10:30 A | 79, 30 | 100% | Líder Funcional - Usuario Experto - Cliente; Líder del Proyecto/Desarrollo PlanERP; Analista de Calidad PlanERP; Funcionarios Técnicos - Cliente | 8h | 8h |
| 82 | 1.1.3.5.2 | Preparar ambiente de pruebas | 1d | 2018-09-10 10:30 A | 2018-09-11 09:30 A | 81 | 100% | Funcionarios Técnicos - Cliente; Líder Funcional - Usuario Experto - Cliente; Líder del Proyecto/Desarrollo PlanERP; Analista de Calidad PlanERP | 28h | 28h |

Notes:
- 60: ·Se comunica a los usuarios finales los roles, tareas y cronograma de entrenamiento / ·Se comunica a los proveedores y clientes acerca del cronograma y cambios a realizar
- 62: ·Se crea la lista de los procesos de negocio mas relevantes para la implementación del SIIM
- 63: ·Todos los procesos de negocio de la lista maestra ha sido revisado en el sistema / ·Los datos importados en la migración de datos ha sido verificado / ·Los cambios en la configuración y el alcance están documentados
- 81: ·Se crea el plan de prueba, con sus casos de prueba
- 82: ·Una copia de la base de datos del SIIM de producción es creada e inicializada en el ambiente de pruebas del SIIM

| ID | WBS | Task | Type | Duration | Start | Finish | Predecessors | Complete | Resources | Work | Actual work | Porcentage Avance |
| --- | --- | --- | --- | --- | --- | --- | --- | --- | --- | --- | --- | --- |
| 83 | 1.1.3.5.3 | **Ejecutar el plan de pruebas de Aceptacion del Sistema** |  | 3.14d | 2018-09-11 09:30 A | 2018-09-13 16:30 A | 82 | 100% | Líder Funcional - Usuario Experto - Cliente; Líder del Proyecto/Desarrollo PlanERP; Analista de Calidad PlanERP; Funcionarios Técnicos - Cliente; Consultor Especialista en Procesos de GADs PlanERP | 110h | 110h |  |
| 84 | 1.1.3.5.3.1 | 1 Dirección de Desarrollo Territorial (No incluye Catastro) |  | 2h | 2018-09-11 09:30 A | 2018-09-11 11:30 A |  | 100% |  |  |  |  |
| 85 | 1.1.3.5.3.2 | 4 Dirección de Justicia y Vigilancia |  | 2h | 2018-09-11 11:30 A | 2018-09-11 14:30 A | 84 | 100% |  |  |  |  |
| 86 | 1.1.3.5.3.3 | 5 Dirección de Desarrollo Humano y Social |  | 1h | 2018-09-11 14:30 A | 2018-09-11 15:30 A | 85 | 100% |  |  |  |  |
| 87 | 1.1.3.5.3.4 | 8.3 Rentas |  | 2h | 2018-09-11 15:30 A | 2018-09-12 08:30 A | 86 | 100% |  |  |  |  |
| 88 | 1.1.3.5.3.5 | 8.4 Tesorería |  | 2h | 2018-09-12 08:30 A | 2018-09-12 10:30 A | 87 | 100% |  |  |  |  |
| 89 | 1.1.3.5.3.6 | 9.1 Mercados |  | 1h | 2018-09-12 10:30 A | 2018-09-12 11:30 A | 88 | 100% |  |  |  |  |
| 90 | 1.1.3.5.3.7 | 9.2 Cementerio |  | 1h | 2018-09-12 11:30 A | 2018-09-12 13:30 A | 89 | 100% |  |  |  |  |
| 91 | 1.1.3.5.3.8 | 9.3 Camal |  | 1h | 2018-09-12 13:30 A | 2018-09-12 14:30 A | 90 | 100% |  |  |  |  |
| 92 | 1.1.3.5.3.9 | 10 Registro de la Propiedad y Mercantil |  | 2h | 2018-09-12 14:30 A | 2018-09-12 16:30 A | 91 | 100% |  |  |  |  |
| 93 | 1.1.3.5.3.10 | 11 Administración de bomberos |  | 1h | 2018-09-12 16:30 A | 2018-09-13 08:30 A | 92 | 100% |  |  |  |  |
| 94 | 1.1.3.5.3.11 | 12 CRM para ciudadanos. Ventanilla Única |  | 2h | 2018-09-13 08:30 A | 2018-09-13 10:30 A | 93 | 100% |  |  |  |  |
| 95 | 1.1.3.5.3.12 | 15.1 BI Desarrollo Territorial |  | 1h | 2018-09-13 10:30 A | 2018-09-13 11:30 A | 94 | 100% |  |  |  |  |
| 96 | 1.1.3.5.3.13 | 15.5 BI Obras Públicas Municipales |  | 1h | 2018-09-13 11:30 A | 2018-09-13 13:30 A | 95 | 100% |  |  |  |  |
| 97 | 1.1.3.5.3.14 | 15.7 BI Registro de la Propiedad y Mercantil |  | 1h | 2018-09-13 13:30 A | 2018-09-13 14:30 A | 96 | 100% |  |  |  |  |
| 98 | 1.1.3.5.3.15 | 16.1 Consultas Portal Web |  | 1h | 2018-09-13 14:30 A | 2018-09-13 15:30 A | 97 | 100% |  |  |  |  |
| 99 | 1.1.3.5.3.16 | 16.2 Aplicación para móviles (APP) |  | 1h | 2018-09-13 15:30 A | 2018-09-13 16:30 A | 98 | 100% |  |  |  |  |
| 100 | 1.1.3.5.4 | Revisar los resultados de las pruebas y necesidades de cambios |  | 1d | 2018-09-13 16:30 A | 2018-09-14 15:30 A | 99, 79, 30 | 100% | Administrador de Contrato - Cliente; Gerente de Proyecto PlanERP; Analista de Calidad PlanERP; Consultor Especialista en Procesos de GADs PlanERP | 28h | 28h |  |
| 101 | 1.1.3.6 | **Planificar Salida a Producción y Soporte** |  | 0.29d | 2018-09-14 15:30 A | 2018-09-17 08:30 A |  | 100% |  | 24h | 24h |  |
| 102 | 1.1.3.6.1 | Definir Plan de Salida a Producción |  | 2h | 2018-09-14 15:30 A | 2018-09-17 08:30 A | 100 | 100% | Administrador de Contrato - Cliente; Líder Funcional - Usuario Experto - Cliente; Gerente de Proyecto PlanERP; Líder del Proyecto/Desarrollo PlanERP | 8h | 8h |  |
| 103 | 1.1.3.6.2 | Planificar Estrategia de Soporte |  | 2h | 2018-09-14 15:30 A | 2018-09-17 08:30 A | 100 | 100% | Administrador de Contrato - Cliente; Líder Funcional - Usuario Experto - Cliente; Gerente de Proyecto PlanERP; Líder del Proyecto/Desarrollo PlanERP | 8h | 8h |  |
| 104 | 1.1.3.6.3 | Planificar Administración del Sistema |  | 2h | 2018-09-14 15:30 A | 2018-09-17 08:30 A | 100 | 100% | Administrador de Contrato - Cliente; Líder Funcional - Usuario Experto - Cliente; Gerente de Proyecto PlanERP; Líder del Proyecto/Desarrollo PlanERP | 8h | 8h |  |
| 105 | 1.1.3.7 | Revisar la ETAPA del Proyecto |  | 1d | 2018-09-17 08:30 A | 2018-09-17 16:30 A | 101 | 100% | Administrador de Contrato - Cliente; Gerente de Proyecto PlanERP; Líder del Proyecto/Desarrollo PlanERP; Analista de Calidad PlanERP | 28h | 28h |  |
| 106 | 1.1.3.8 | HITO: FINALIZACION ETAPA 3 | milestone | 0d | 2018-09-17 16:30 A | 2018-09-17 16:30 A | 105 | 100% |  |  |  | 25% |

Notes:
- 83: ·Todos los casos de prueba han sido completados exitosamente
- 100: ·Se revisan los resultados de las pruebas y los cambios requeridos / ·Se actualiza el plan del proyecto
- 102: ·Se define el plan de la Salida a Producción
- 103: ·Se definen todos los procedimientos y contactos de soporte
- 104: ·Se designa al administrador del Sistema, se definen sus tareas y responsabilidades
- 105: ·Obtener la firma de finalización de la fase del proyecto

| ID | WBS | Task | Duration | Start | Finish | Predecessors | Complete | Resources | Work | Actual work |
| --- | --- | --- | --- | --- | --- | --- | --- | --- | --- | --- |
| 107 | 1.1.4 | **ETAPA 4: Preparación Final previo Despliegue en Producción - Módulos SC y AC** | 19.86d | 2018-09-17 16:30 A | 2018-10-11 10:30 A |  | 100% |  | 738h | 738h |
| 108 | 1.1.4.1 | **Gestión General del Proyecto** | 0.57d | 2018-09-17 16:30 A | 2018-09-18 11:30 A |  | 100% |  | 18h | 18h |
| 109 | 1.1.4.1.1 | Confirmar el Plan de Entrenamiento | 2h | 2018-09-17 16:30 A | 2018-09-18 09:30 A | 105 | 100% | Administrador de Contrato - Cliente; Funcionarios Técnicos - Cliente; Gerente de Proyecto PlanERP; Líder del Proyecto/Desarrollo PlanERP | 8h | 8h |
| 110 | 1.1.4.1.2 | Finalizar plan de Salida a Producción | 2h | 2018-09-18 09:30 A | 2018-09-18 11:30 A | 109 | 100% | Administrador de Contrato - Cliente; Funcionarios Técnicos - Cliente; Gerente de Proyecto PlanERP; Líder del Proyecto/Desarrollo PlanERP; Analista de Calidad PlanERP | 10h | 10h |
| 111 | 1.1.4.2 | **Entrenamiento en Modulos de Areas Funcionales Fase 1** | 16d | 2018-09-18 11:30 A | 2018-10-08 11:30 A | 108 | 100% |  | 616h | 616h |
| 112 | 1.1.4.2.1 | **Entrenamiento de Usuarios Funcionales y Certificación de Procesos** | 12d | 2018-09-18 11:30 A | 2018-10-02 16:30 A | 110 | 100% | Líder Funcional - Usuario Experto - Cliente; Usuarios Finales - Cliente; Funcionarios Técnicos - Cliente; Analista Procesos PlanERP; Desarrollador PlanERP; Consultor Especialista en Procesos de GADs PlanERP | 504h | 504h |
| 113 | 1.1.4.2.1.1 | 1 Dirección de Desarrollo Territorial (No incluye Catastro) | 1d | 2018-09-18 11:30 A | 2018-09-19 10:30 A |  | 100% |  |  |  |
| 114 | 1.1.4.2.1.2 | 4 Dirección de Justicia y Vigilancia | 1d | 2018-09-19 10:30 A | 2018-09-20 09:30 A | 113 | 100% |  |  |  |
| 115 | 1.1.4.2.1.3 | 5 Dirección de Desarrollo Humano y Social | 1d | 2018-09-20 09:30 A | 2018-09-21 08:30 A | 114 | 100% |  |  |  |
| 116 | 1.1.4.2.1.4 | 8.3 Rentas | 1d | 2018-09-21 08:30 A | 2018-09-21 16:30 A | 115 | 100% |  |  |  |
| 117 | 1.1.4.2.1.5 | 8.4 Tesorería | 1d | 2018-09-21 16:30 A | 2018-09-24 15:30 A | 116 | 100% |  |  |  |
| 118 | 1.1.4.2.1.6 | 9.1 Mercados | 0.5d | 2018-09-24 15:30 A | 2018-09-25 10:00 A | 117 | 100% |  |  |  |
| 119 | 1.1.4.2.1.7 | 9.2 Cementerio | 0.5d | 2018-09-25 10:00 A | 2018-09-25 14:30 A | 118 | 100% |  |  |  |
| 120 | 1.1.4.2.1.8 | 9.3 Camal | 0.5d | 2018-09-25 14:30 A | 2018-09-26 09:00 A | 119 | 100% |  |  |  |
| 121 | 1.1.4.2.1.9 | 10 Registro de la Propiedad y Mercantil | 1d | 2018-09-26 09:00 A | 2018-09-26 17:00 A | 120 | 100% |  |  |  |
| 122 | 1.1.4.2.1.10 | 11 Administración de bomberos | 0.5d | 2018-09-27 08:00 A | 2018-09-27 11:30 A | 121 | 100% |  |  |  |
| 123 | 1.1.4.2.1.11 | 12 CRM para ciudadanos. Ventanilla Única | 1d | 2018-09-27 11:30 A | 2018-09-28 10:30 A | 122 | 100% |  |  |  |
| 124 | 1.1.4.2.1.12 | 15.1 BI Desarrollo Territorial | 0.5d | 2018-09-28 10:30 A | 2018-09-28 15:00 A | 123 | 100% |  |  |  |
| 125 | 1.1.4.2.1.13 | 15.5 BI Obras Públicas Municipales | 0.5d | 2018-09-28 15:00 A | 2018-10-01 09:30 A | 124 | 100% |  |  |  |
| 126 | 1.1.4.2.1.14 | 15.7 BI Registro de la Propiedad y Mercantil | 0.5d | 2018-10-01 09:30 A | 2018-10-01 14:00 A | 125 | 100% |  |  |  |
| 127 | 1.1.4.2.1.15 | 16.1 Consultas Portal Web | 1d | 2018-10-01 14:00 A | 2018-10-02 12:00 A | 126 | 100% |  |  |  |
| 128 | 1.1.4.2.1.16 | 16.2 Aplicación para móviles (APP) | 0.5d | 2018-10-02 13:00 A | 2018-10-02 16:30 A | 127 | 100% |  |  |  |
| 129 | 1.1.4.2.2 | Entrenamiento de Usuario Técnicos | 4d | 2018-10-02 16:30 A | 2018-10-08 11:30 A | 128, 99, 79, 30 | 100% | Funcionarios Técnicos - Cliente; Desarrollador PlanERP; Especialista Base de Datos PlanERP; Líder del Proyecto/Desarrollo PlanERP | 112h | 112h |
| 130 | 1.1.4.3 | **Preparación del Sistema** | 0.86d | 2018-10-08 11:30 A | 2018-10-09 09:30 A | 111 | 100% |  | 21h | 21h |
| 131 | 1.1.4.3.1 | Completar la Administración del Sistema | 3h | 2018-10-08 11:30 A | 2018-10-08 15:30 A |  | 100% | Funcionarios Técnicos - Cliente; Desarrollador PlanERP; Analista Procesos PlanERP | 9h | 9h |
| 132 | 1.1.4.3.2 | Comprobación de la Puesta a Producción | 3h | 2018-10-08 15:30 A | 2018-10-09 09:30 A | 131 | 100% | Funcionarios Técnicos - Cliente; Administrador de Contrato - Cliente; Analista de Calidad PlanERP; Líder del Proyecto/Desarrollo PlanERP | 12h | 12h |

Notes:
- 109: ·El plan y cronograma de entrenamiento es confirmado y comunicado a los usuarios
- 110: ·El plan de salida a producción es confirmado y comunicado a los usuarios finales
- 112: ·Se entrena a los usuarios principales
- 129: ·Se entrena al administrador del sistema
- 131: ·Completar todas las configuraciones administrativas / ·Completar todas las configuraciones/instalaciones del cliente
- 132: ·Se completa la lista de comprobación de Puesta en Producción

| ID | WBS | Task | Type | Duration | Start | Finish | Predecessors | Complete | Constraint | Resources | Work | Actual work | Porcentage Avance |
| --- | --- | --- | --- | --- | --- | --- | --- | --- | --- | --- | --- | --- | --- |
| 133 | 1.1.4.4 | **Transición** |  | 2.14d | 2018-10-09 09:30 A | 2018-10-11 08:30 A | 130 | 100% |  |  | 75h | 75h |  |
| 134 | 1.1.4.4.1 | Finalizar Procesamiento de Sistemas Legados |  | 1h | 2018-10-09 09:30 A | 2018-10-09 10:30 A |  | 100% |  | Administrador de Contrato - Cliente; Líder Funcional - Usuario Experto - Cliente; Desarrollador PlanERP; Líder del Proyecto/Desarrollo PlanERP; Especialista Base de Datos PlanERP | 5h | 5h |  |
| 135 | 1.1.4.4.2 | Realizar la Salida a Producción - Carga Inicial y Configuración Inicial |  | 2d | 2018-10-09 10:30 A | 2018-10-11 08:30 A | 134 | 100% |  | Administrador de Contrato - Cliente; Líder Funcional - Usuario Experto - Cliente; Desarrollador PlanERP; Líder del Proyecto/Desarrollo PlanERP; Especialista Base de Datos PlanERP | 70h | 70h |  |
| 136 | 1.1.4.5 | Revisar la ETAPA del Proyecto |  | 2h | 2018-10-11 08:30 A | 2018-10-11 10:30 A | 133 | 100% |  | Administrador de Contrato - Cliente; Gerente de Proyecto PlanERP; Líder del Proyecto/Desarrollo PlanERP; Analista de Calidad PlanERP | 8h | 8h |  |
| 137 | 1.1.4.6 | HITO: FINALIZACION ETAPA 4 | milestone | 0d | 2018-10-11 10:30 A | 2018-10-11 10:30 A | 136 | 100% |  |  |  |  | 35% |
| 138 | 1.1.5 | **ETAPA 5: Despliegue en Producción y Soporte Técnico - Módulos SC y AC** |  | 30d | 2018-10-11 10:30 A | 2018-11-16 13:30 A | 107 | 100% |  |  | 2637h | 2637h |  |
| 139 | 1.1.5.1 | **Soporte en Producción** |  | 30d | 2018-10-11 10:30 A | 2018-11-16 13:30 A |  | 100% |  |  | 1785h | 1785h |  |
| 140 | 1.1.5.1.1 | Soporte durante la Salida a Producción |  | 30d | 2018-10-11 10:30 A | 2018-11-16 13:30 A | 136 | 100% |  | Funcionarios Técnicos - Cliente; Desarrollador PlanERP; Analista Procesos PlanERP; Especialista Base de Datos PlanERP; Consultor Especialista en Procesos de GADs PlanERP | 1050h | 1050h |  |
| 141 | 1.1.5.1.2 | Resolver incidentes críticos |  | 20d | 2018-10-11 10:30 A | 2018-11-05 15:30 A | 136 | 100% |  | Funcionarios Técnicos - Cliente; Desarrollador PlanERP; Analista Procesos PlanERP; Especialista Base de Datos PlanERP; Consultor Especialista en Procesos de GADs PlanERP | 700h | 700h |  |
| 142 | 1.1.5.1.3 | Entregar el soporte y Administración al cliente |  | 1d | 2018-10-11 10:30 A | 2018-10-12 09:30 A |  | 100% |  | Funcionarios Técnicos - Cliente; Desarrollador PlanERP; Analista Procesos PlanERP; Especialista Base de Datos PlanERP; Consultor Especialista en Procesos de GADs PlanERP | 35h | 35h |  |
| 143 | 1.1.5.2 | **Mejora Continua** |  | 10d | 2018-10-11 10:30 A | 2018-10-24 08:30 A |  | 100% |  |  | 840h | 840h |  |
| 144 | 1.1.5.2.1 | Monitoreo del Sistema y Acompañamiento ETAPA1 |  | 10d | 2018-10-11 10:30 A | 2018-10-24 08:30 A | 136 | 100% |  | Administrador de Contrato - Cliente; Funcionarios Técnicos - Cliente; Líder Funcional - Usuario Experto - Cliente; Especialista Base de Datos PlanERP; Líder del Proyecto/Desarrollo PlanERP; Consultor Especialista en Procesos de GADs PlanERP | 420h | 420h |  |
| 145 | 1.1.5.2.2 | Ajustes y Configuraciones finales al Software acorde a necesidades Entidad |  | 10d | 2018-10-11 10:30 A | 2018-10-24 08:30 A | 136 | 100% |  | Administrador de Contrato - Cliente; Funcionarios Técnicos - Cliente; Líder Funcional - Usuario Experto - Cliente; Especialista Base de Datos PlanERP; Líder del Proyecto/Desarrollo PlanERP; Consultor Especialista en Procesos de GADs PlanERP | 420h | 420h |  |
| 146 | 1.1.5.3 | **Cierre de la ETAPA 5** |  | 0.29d | 2018-10-24 08:30 A | 2018-10-24 10:30 A |  | 100% |  |  | 12h | 12h |  |
| 147 | 1.1.5.3.1 | Reunión de Cierre de la ETAPA 5 |  | 2h | 2018-10-24 08:30 A | 2018-10-24 10:30 A | 143 | 100% |  | Administrador de Contrato - Cliente; Líder Funcional - Usuario Experto - Cliente; Funcionarios Técnicos - Cliente; Gerente de Proyecto PlanERP; Líder del Proyecto/Desarrollo PlanERP; Analista de Calidad PlanERP | 12h | 12h |  |
| 148 | 1.1.5.4 | HITO: FIN DE LA ETAPA 5 | milestone | 0d | 2018-10-24 10:30 A | 2018-10-24 10:30 A | 147 | 100% |  |  |  |  | 40% |
| 149 | 1.1.6 | **ETAPA 6: Estabilización, Apoyo Emisión 2019 y Desarrollo de funcionalidades no establecidas en el Alcance Contractual** |  | 57.29d | 2018-11-16 13:30 A | 2019-01-25 14:30 A |  | 100% |  |  | 12h | 12h |  |
| 150 | 1.1.6.1 | Depuración de Errores de Calidad de Información fuente migrada (Base Oracle) |  | 30d | 2018-11-16 13:30 A | 2018-12-24 15:30 A | 138 | 100% |  |  |  |  |  |
| 151 | 1.1.6.2 | Soporte y Mantenimiento de Módulos de la Fase 1 |  | 30d | 2018-11-16 13:30 A | 2018-12-24 15:30 A | 138 | 100% |  |  |  |  |  |
| 152 | 1.1.6.3 | Adaptaciones a Software para incluir Nuevas funcionalidades no contempladas en alcance proyecto |  | 30d | 2018-11-16 13:30 A | 2018-12-24 15:30 A | 138 | 100% |  |  |  |  |  |
| 153 | 1.1.6.4 | Implementación de Licencia temporal de Modulo de Catastro Urbano SIIM |  | 20d | 2018-12-03 08:30 A | 2018-12-26 13:30 A |  | 100% | start no earlier than 2018-12-03 08:30 |  |  |  |  |
| 154 | 1.1.6.5 | Migración de información de Emisión de Impuestos de Catastro Urbano 2019 |  | 20d | 2018-12-03 08:30 A | 2018-12-26 13:30 A |  | 100% | start no earlier than 2018-12-03 08:30 |  |  |  |  |
| 155 | 1.1.6.6 | Creación de interfaces mediante ETLs para integración entre Sistema Oracle y SIIM para la recaudación de Impuestos 2019 de Catastro Urbano |  | 20d | 2018-12-03 08:30 A | 2018-12-26 13:30 A |  | 100% | start no earlier than 2018-12-03 08:30 |  |  |  |  |
| 156 | 1.1.6.7 | Soporte en Recaudación de Impuestos de Catastro urbano y mejoras 2019 |  | 25d | 2018-12-26 13:30 A | 2019-01-25 11:30 A | 155 | 100% |  |  |  |  |  |

Notes:
- 134: ·Se completa el mantenimiento de las transacciones y datos maestros de sistemas legados, la noche previa a la salida a producción / ·Se documentan los cambios significativos desde la ultima corrida de migración de datos y han sido importados al SIIM
- 135: ·Los balances de apertura son transferidos en el SIIM / ·Los procesos piloto son completados exitosamente en el SIIM, de acuerdo a la lista de comprobación de la Salida a Producción / ·Se crean/actualizan los manuales de usuario / ·Se entrega al cliente el usuario para hacer al portal de soporte del SIIM
- 136: ·Obtener la firma de finalización de la fase del proyecto
- 140: ·El consultor del SIIM resuelve de manera inmediata cualquier incidente
- 141: ·Se resuelve cualquier incidente critico excepcional
- 142: ·El equipo técnico del cliente asume el soporte y administración del sistema / ·La lista de comprobación de la Salida a Producción es completada en el portal del SIIM, para activar el soporte
- 144: ·Se registran todos los incidentes / ·Se registran las mejoras al rendimiento, funcionalidad, usabilidad, etc.
- 147: ·Se revisa el plan del proyecto / ·Se completan todos los hitos de manera exitosa / ·Se agenda la reunión de "Revisión y Optimización" / ·El cliente firma la aceptación final del proyecto

| ID | WBS | Task | Type | Duration | Start | Finish | Predecessors | Complete | Remaining | Total slack | Constraint | Resources | Work | Actual work | Porcentage Avance |
| --- | --- | --- | --- | --- | --- | --- | --- | --- | --- | --- | --- | --- | --- | --- | --- |
| 157 | 1.1.6.8 | **Cierre de la FASE 1** |  | 0.29d | 2019-01-25 11:30 A | 2019-01-25 14:30 A |  | 100% |  |  |  |  | 12h | 12h |  |
| 158 | 1.1.6.8.1 | Reunión de Cierre de la FASE 1 |  | 2h | 2019-01-25 11:30 A | 2019-01-25 14:30 A | 156 | 100% |  |  |  | Administrador de Contrato - Cliente; Líder Funcional - Usuario Experto - Cliente; Funcionarios Técnicos - Cliente; Gerente de Proyecto PlanERP; Líder del Proyecto/Desarrollo PlanERP; Analista de Calidad PlanERP | 12h | 12h |  |
| 159 | 1.1.6.8.2 | HITO: FIN DE LA FASE 1 | milestone | 0d | 2019-01-25 14:30 A | 2019-01-25 14:30 A | 158 | 100% |  |  |  |  |  |  | 50% |
| 160 | 1.2 | **FASE 2: Implementación de Módulos de Planificación de Recursos Institucionales - PRI** |  | 88.29d | 2019-01-25 14:30 A | 2019-05-14 16:30 |  | 74% | 22.55d | 46.43d |  |  | 4326h | 3268h |  |
| 161 | 1.2.1 | **ETAPA 1: Instalación del SIIM - Módulos PRI** |  | 4.14d | 2019-01-25 14:30 A | 2019-01-31 10:30 |  | 99% | 0d | 0d |  |  | 105h | 105h |  |
| 162 | 1.2.1.1 | **Entrega e Instalación del Software** |  | 3.14d | 2019-01-25 14:30 A | 2019-01-30 11:30 A |  | 100% |  |  |  |  | 84h | 84h |  |
| 163 | 1.2.1.1.1 | **Instalar SIIM en Servidor** |  | 2.86d | 2019-01-25 14:30 A | 2019-01-30 09:30 A |  | 100% |  |  |  | Funcionarios Técnicos - Cliente | 80h | 80h |  |
| 164 | 1.2.1.1.1.1 | **Instalar Módulos PRI** |  | 2.86d | 2019-01-25 14:30 A | 2019-01-30 09:30 A | 149 | 100% |  |  |  | Funcionarios Técnicos - Cliente; Desarrollador PlanERP; Líder del Proyecto/Desarrollo PlanERP | 60h | 60h |  |
| 165 | 1.2.1.1.1.1.1 | 2.1 Administración Técnica |  | 2h | 2019-01-25 14:30 A | 2019-01-25 16:30 A |  | 100% |  |  |  |  |  |  |  |
| 166 | 1.2.1.1.1.1.2 | 2.2 Salud Ocupacional y Riesgos |  | 2h | 2019-01-25 16:30 A | 2019-01-28 09:30 A | 165 | 100% |  |  |  |  |  |  |  |
| 167 | 1.2.1.1.1.1.3 | 3.2 Adquisiciones |  | 2h | 2019-01-28 09:30 A | 2019-01-28 11:30 A | 166 | 100% |  |  |  |  |  |  |  |
| 168 | 1.2.1.1.1.1.4 | 6.1 Administración de Bienes |  | 2h | 2019-01-28 11:30 A | 2019-01-28 14:30 A | 167 | 100% |  |  |  |  |  |  |  |
| 169 | 1.2.1.1.1.1.5 | 8.1 Contabilidad |  | 2h | 2019-01-28 14:30 A | 2019-01-28 16:30 A | 168 | 100% |  |  |  |  |  |  |  |
| 170 | 1.2.1.1.1.1.6 | 8.2 Presupuestos |  | 2h | 2019-01-28 16:30 A | 2019-01-29 09:30 A | 169 | 100% |  |  |  |  |  |  |  |
| 171 | 1.2.1.1.1.1.7 | 13 CRM para Urbanizaciones |  | 2h | 2019-01-29 09:30 A | 2019-01-29 11:30 A | 170 | 100% |  |  |  |  |  |  |  |
| 172 | 1.2.1.1.1.1.8 | 14 Dirección de Planificación Institucional (Incluye control de proyectos de Obras Públicas |  | 2h | 2019-01-29 11:30 A | 2019-01-29 14:30 A | 171 | 100% |  |  |  |  |  |  |  |
| 173 | 1.2.1.1.1.1.9 | 15.6 Servicios Corporativos |  | 2h | 2019-01-29 14:30 A | 2019-01-29 16:30 A | 172 | 100% |  |  |  |  |  |  |  |
| 174 | 1.2.1.1.1.1.10 | 15.8 BI Planificación Institucional |  | 2h | 2019-01-29 16:30 A | 2019-01-30 09:30 A | 173 | 100% |  |  |  |  |  |  |  |
| 175 | 1.2.1.1.2 | Entrega de Software |  | 2h | 2019-01-30 09:30 A | 2019-01-30 11:30 A | 163 | 100% |  |  | finish no earlier than 2018-04-10 05:30 | Gerente de Proyecto PlanERP; Administrador de Contrato - Cliente | 4h | 4h |  |
| 176 | 1.2.1.2 | Revisar la ETAPA del Proyecto |  | 1d | 2019-01-30 11:30 A | 2019-01-31 10:30 A | 162 | 100% |  |  | finish no earlier than 2018-04-10 05:30 | Administrador de Contrato - Cliente; Gerente de Proyecto PlanERP; Analista de Calidad PlanERP | 21h | 21h |  |
| 177 | 1.2.1.3 | HITO: FINALIZACION ETAPA 1 | milestone | 0d | 2019-01-31 10:30 | 2019-01-31 10:30 | 176 |  |  | 0d | finish no earlier than 2018-04-10 05:30 |  |  |  | 53% |
| 178 | 1.2.2 | **ETAPA 2: Levantamiento de Características Institucionales - Módulos PRI** |  | 8.57d | 2019-01-31 10:30 A | 2019-02-11 15:30 | 161 | 99% | 0d | 0d |  |  | 188h | 188h |  |
| 179 | 1.2.2.1 | **Actividades de Gestión del Proyecto** |  | 0.57d | 2019-01-31 10:30 A | 2019-01-31 15:30 A |  | 100% |  |  |  |  | 8h | 8h |  |
| 180 | 1.2.2.1.1 | Revisión del Plan del Proyecto |  | 2h | 2019-01-31 10:30 A | 2019-01-31 13:30 A |  | 100% |  |  | finish no earlier than 2018-04-11 05:30 | Administrador de Contrato - Cliente; Gerente de Proyecto PlanERP | 4h | 4h |  |
| 181 | 1.2.2.1.2 | Programar talleres de requerimientos de Entidad |  | 2h | 2019-01-31 13:30 A | 2019-01-31 15:30 A | 180 | 100% |  |  | finish no earlier than 2018-04-11 05:30 | Administrador de Contrato - Cliente; Gerente de Proyecto PlanERP | 4h | 4h |  |

| ID | WBS | Task | Type | Duration | Start | Finish | Predecessors | Complete | Remaining | Total slack | Free slack | Constraint | Resources | Work | Actual work | Porcentage Avance |
| --- | --- | --- | --- | --- | --- | --- | --- | --- | --- | --- | --- | --- | --- | --- | --- | --- |
| 182 | 1.2.2.2 | **Sesiones de Requerimientos del Entidad** |  | 6d | 2019-01-31 15:30 A | 2019-02-08 08:30 A | 179 | 100% |  |  |  |  |  | 126h | 126h |  |
| 183 | 1.2.2.2.1 | Conducir Sesiones de Requerimientos |  | 5d | 2019-01-31 15:30 A | 2019-02-07 09:30 A |  | 100% |  |  |  | finish no earlier than 2018-04-17 05:30 | Funcionarios Técnicos - Cliente; Analista Procesos PlanERP; Consultor Especialista en Procesos de GADs PlanERP | 105h | 105h |  |
| 184 | 1.2.2.2.2 | Crear Documento de Características del Entidad |  | 1d | 2019-02-07 09:30 A | 2019-02-08 08:30 A | 183 | 100% |  |  |  | finish no earlier than 2018-04-18 05:30 | Analista Procesos PlanERP; Funcionarios Técnicos - Cliente; Consultor Especialista en Procesos de GADs PlanERP | 21h | 21h |  |
| 185 | 1.2.2.3 | **Revisar el Documento de Características del Entidad** |  | 1d | 2019-02-08 08:30 A | 2019-02-08 16:30 A | 182 | 100% |  |  |  |  |  | 26h | 26h |  |
| 186 | 1.2.2.3.1 | Revisar el Documento de Características del Entidad |  | 4h | 2019-02-08 08:30 A | 2019-02-08 13:30 A |  | 100% |  |  |  | finish no earlier than 2018-04-19 05:30 | Administrador de Contrato - Cliente; Gerente de Proyecto PlanERP; Analista de Calidad PlanERP; Consultor Especialista en Procesos de GADs PlanERP; Analista Procesos PlanERP | 20h | 20h |  |
| 187 | 1.2.2.3.2 | Revisar el Plan del Proyecto |  | 3h | 2019-02-08 13:30 A | 2019-02-08 16:30 A | 186 | 100% |  |  |  | finish no earlier than 2018-04-19 05:30 | Administrador de Contrato - Cliente; Gerente de Proyecto PlanERP | 6h | 6h |  |
| 188 | 1.2.2.4 | Revisar la ETAPA del Proyecto |  | 1d | 2019-02-08 16:30 A | 2019-02-11 15:30 A | 185 | 100% |  |  |  | finish no earlier than 2018-04-20 05:30 | Administrador de Contrato - Cliente; Gerente de Proyecto PlanERP; Líder del Proyecto/Desarrollo PlanERP; Analista de Calidad PlanERP | 28h | 28h |  |
| 189 | 1.2.2.5 | HITO: FINALIZACION ETAPA 2 | milestone | 0d | 2019-02-11 15:30 | 2019-02-11 15:30 | 188 |  |  | 0d |  | finish no earlier than 2018-04-20 05:30 |  |  |  | 55% |
| 190 | 1.2.3 | **ETAPA 3: Migración de Datos, Configuración y Pruebas de Operación de Módulos - Módulos PRI** |  | 33.71d | 2019-02-11 15:30 A | 2019-03-25 10:30 | 178 | 50% | 16.72d | 0d |  |  |  | 1130h | 567.5h |  |
| 191 | 1.2.3.1 | **Gestión General del Proyecto** |  | 1.57d | 2019-02-11 15:30 A | 2019-02-13 09:30 A |  | 100% |  |  |  |  |  | 33h | 33h |  |
| 192 | 1.2.3.1.1 | Planificar cambio Organizacional |  | 3h | 2019-02-11 15:30 A | 2019-02-12 09:30 A |  | 100% |  |  |  | finish no earlier than 2018-04-20 05:30 | Administrador de Contrato - Cliente; Gerente de Proyecto PlanERP; Líder del Proyecto/Desarrollo PlanERP | 9h | 9h |  |
| 193 | 1.2.3.1.2 | Planificar Entrenamiento a Usuarios Finales |  | 4h | 2019-02-12 09:30 A | 2019-02-12 14:30 A | 192 | 100% |  |  |  | finish no earlier than 2018-04-20 05:30 | Administrador de Contrato - Cliente; Gerente de Proyecto PlanERP; Líder del Proyecto/Desarrollo PlanERP | 12h | 12h |  |
| 194 | 1.2.3.1.3 | Definir y Preparar la Migración de Datos |  | 4h | 2019-02-12 14:30 A | 2019-02-13 09:30 A | 193 | 100% |  |  |  | finish no earlier than 2018-04-20 05:30 | Funcionarios Técnicos - Cliente; Líder del Proyecto/Desarrollo PlanERP; Especialista Base de Datos PlanERP | 12h | 12h |  |
| 195 | 1.2.3.2 | **Configuración del Sistema en Producción** |  | 19.57d | 2019-02-13 09:30 A | 2019-03-08 10:30 | 191 | 62% | 7.5d | 12.57d |  |  |  | 685h | 422.5h |  |
| 196 | 1.2.3.2.1 | Instalar el SIIM en Producción |  | 4h | 2019-02-13 09:30 A | 2019-02-13 14:30 A |  | 100% |  |  |  | finish no earlier than 2018-04-20 05:30 | Funcionarios Técnicos - Cliente; Analista Procesos PlanERP; Desarrollador PlanERP; Líder del Proyecto/Desarrollo PlanERP; Especialista Base de Datos PlanERP | 20h | 20h |  |
| 197 | 1.2.3.2.2 | Configurar Inicialización del Sistema |  | 1d | 2019-02-13 14:30 A | 2019-02-14 13:30 A | 196 | 100% |  |  |  | finish no earlier than 2018-04-23 05:30 | Funcionarios Técnicos - Cliente; Analista Procesos PlanERP; Desarrollador PlanERP; Líder del Proyecto/Desarrollo PlanERP; Especialista Base de Datos PlanERP | 35h | 35h |  |
| 198 | 1.2.3.2.3 | Realizar la Migración de Datos |  | 13d | 2019-02-14 13:30 A | 2019-03-01 16:30 | 197 | 50% | 6.5d | 1d | 0d | finish no earlier than 2018-05-23 05:30 | Funcionarios Técnicos - Cliente; Analista Procesos PlanERP; Desarrollador PlanERP; Líder del Proyecto/Desarrollo PlanERP; Especialista Base de Datos PlanERP | 455h | 227.5h |  |
| 199 | 1.2.3.2.4 | Desarrollar Adaptaciones al Software |  | 2d | 2019-03-01 16:30 A | 2019-03-05 14:30 | 198 | 50% | 1d | 15.57d |  | finish no earlier than 2018-04-27 05:30 | Funcionarios Técnicos - Cliente; Analista Procesos PlanERP; Desarrollador PlanERP; Líder del Proyecto/Desarrollo PlanERP; Especialista Base de Datos PlanERP | 70h | 35h |  |
| 200 | 1.2.3.2.5 | Configuración del Sistema en base al Documento de Características del Entidad |  | 1d | 2019-03-05 14:30 A | 2019-03-06 13:30 A | 199 | 100% |  |  |  | finish no earlier than 2018-05-01 05:30 | Funcionarios Técnicos - Cliente; Analista Procesos PlanERP; Desarrollador PlanERP; Líder del Proyecto/Desarrollo PlanERP; Especialista Base de Datos PlanERP | 35h | 35h |  |
| 201 | 1.2.3.2.6 | Configurar Interfaces |  | 1d | 2019-03-06 13:30 A | 2019-03-07 11:30 A | 200 | 100% |  |  |  | finish no earlier than 2018-05-02 05:30 | Funcionarios Técnicos - Cliente; Analista Procesos PlanERP; Desarrollador PlanERP; Líder del Proyecto/Desarrollo PlanERP; Especialista Base de Datos PlanERP | 35h | 35h |  |
| 202 | 1.2.3.2.7 | Configurar Usuarios y Autorizaciones |  | 1d | 2019-03-07 11:30 A | 2019-03-08 10:30 A | 201 | 100% |  |  |  | finish no earlier than 2018-05-03 05:30 | Funcionarios Técnicos - Cliente; Analista Procesos PlanERP; Desarrollador PlanERP; Líder del Proyecto/Desarrollo PlanERP; Especialista Base de Datos PlanERP | 35h | 35h |  |
| 203 | 1.2.3.3 | **Gestión del Cambio Organizacional** |  | 0.29d | 2019-03-08 10:30 A | 2019-03-08 13:30 A | 195 | 100% |  |  |  |  |  | 8h | 8h |  |
| 204 | 1.2.3.3.1 | Conducir la comunicación de la Gestión de Cambios (si es aplicable) |  | 2h | 2019-03-08 10:30 A | 2019-03-08 13:30 A |  | 100% |  |  |  | finish no earlier than 2018-05-04 05:30 | Administrador de Contrato - Cliente; Líder Funcional - Usuario Experto - Cliente; Gerente de Proyecto PlanERP; Consultor Especialista en Procesos de GADs PlanERP | 8h | 8h |  |
| 205 | 1.2.3.4 | **Pruebas de validación del Sistema** |  | 4.57d | 2019-03-08 13:30 A | 2019-03-14 13:30 | 203 | 13% | 4d | 0d |  |  |  | 132h | 20h |  |
| 206 | 1.2.3.4.1 | Mantener la Lista Maestra de Procesos de Entidad |  | 4h | 2019-03-08 13:30 A | 2019-03-11 08:30 A |  | 100% |  |  |  | finish no earlier than 2018-05-04 05:30 | Líder Funcional - Usuario Experto - Cliente; Gerente de Proyecto PlanERP; Líder del Proyecto/Desarrollo PlanERP; Analista Procesos PlanERP; Consultor Especialista en Procesos de GADs PlanERP | 20h | 20h |  |

| ID | WBS | Task | Duration | Start | Finish | Predecessors | Complete | Remaining | Total slack | Free slack | Constraint | Resources | Work | Actual work |
| --- | --- | --- | --- | --- | --- | --- | --- | --- | --- | --- | --- | --- | --- | --- |
| 207 | 1.2.3.4.2 | **Conducir Talleres de Validación** | 4d | 2019-03-11 08:30 | 2019-03-14 13:30 | 206 |  |  | 0d |  |  | Líder Funcional - Usuario Experto - Cliente; Analista Procesos PlanERP; Analista de Calidad PlanERP; Consultor Especialista en Procesos de GADs PlanERP | 112h |  |
| 208 | 1.2.3.4.2.1 | 2.1 Administración Técnica | 4h | 2019-03-11 08:30 | 2019-03-11 13:30 |  |  |  | 0d |  |  |  |  |  |
| 209 | 1.2.3.4.2.2 | 2.2 Salud Ocupacional y Riesgos | 2h | 2019-03-11 13:30 | 2019-03-11 15:30 | 208 |  |  | 0d |  |  |  |  |  |
| 210 | 1.2.3.4.2.3 | 3.2 Adquisiciones | 4h | 2019-03-11 15:30 | 2019-03-12 10:30 | 209 |  |  | 0d |  |  |  |  |  |
| 211 | 1.2.3.4.2.4 | 6.1 Administración de Bienes | 2h | 2019-03-12 10:30 | 2019-03-12 13:30 | 210 |  |  | 0d |  |  |  |  |  |
| 212 | 1.2.3.4.2.5 | 8.1 Contabilidad | 4h | 2019-03-12 13:30 | 2019-03-13 08:30 | 211 |  |  | 0d |  |  |  |  |  |
| 213 | 1.2.3.4.2.6 | 8.2 Presupuestos | 4h | 2019-03-13 08:30 | 2019-03-13 13:30 | 212 |  |  | 0d |  |  |  |  |  |
| 214 | 1.2.3.4.2.7 | 13 CRM para Urbanizaciones | 2h | 2019-03-13 13:30 | 2019-03-13 15:30 | 213 |  |  | 0d |  |  |  |  |  |
| 215 | 1.2.3.4.2.8 | 14 Dirección de Planificación Institucional (Incluye control de proyectos de Obras Públicas) | 2h | 2019-03-13 15:30 | 2019-03-14 08:30 | 214 |  |  | 0d |  |  |  |  |  |
| 216 | 1.2.3.4.2.9 | 15.6 BI Servicios Corporativos | 2h | 2019-03-14 08:30 | 2019-03-14 10:30 | 215 |  |  | 0d |  |  |  |  |  |
| 217 | 1.2.3.4.2.10 | 15.8 BI Planificación Institucional | 2h | 2019-03-14 10:30 | 2019-03-14 13:30 | 216 |  |  | 0d |  |  |  |  |  |
| 218 | 1.2.3.5 | **Pruebas de aceptacion del Sistema** | 5.43d | 2019-03-14 13:30 A | 2019-03-21 10:30 | 205 | 11% | 4.83d | 2.29d |  |  |  | 208h | 20h |
| 219 | 1.2.3.5.1 | Definir casos de prueba y alcance | 3h | 2019-03-14 13:30 A | 2019-03-14 16:30 |  | 50% | 1.5h | 0.5d | 0d | finish no earlier than 2018-05-09 05:30 | Líder Funcional - Usuario Experto - Cliente; Líder del Proyecto/Desarrollo PlanERP; Analista de Calidad PlanERP; Funcionarios Técnicos - Cliente | 12h | 6h |
| 220 | 1.2.3.5.2 | Preparar ambiente de pruebas | 1d | 2019-03-14 16:30 A | 2019-03-15 15:30 | 219 | 50% | 0.5d | 2.29d | 0d | finish no earlier than 2018-05-10 05:30 | Funcionarios Técnicos - Cliente; Líder Funcional - Usuario Experto - Cliente; Líder del Proyecto/Desarrollo PlanERP; Analista de Calidad PlanERP | 28h | 14h |
| 221 | 1.2.3.5.3 | **Ejecutar el plan de pruebas** | 4d | 2019-03-15 15:30 | 2019-03-21 10:30 | 220 |  |  | 2.29d |  |  | Líder Funcional - Usuario Experto - Cliente; Líder del Proyecto/Desarrollo PlanERP; Analista de Calidad PlanERP; Funcionarios Técnicos - Cliente; Consultor Especialista en Procesos de GADs PlanERP | 140h |  |
| 222 | 1.2.3.5.3.1 | 2.1 Administración Técnica | 4h | 2019-03-15 15:30 | 2019-03-18 10:30 |  |  |  | 2.29d | 0d |  |  |  |  |
| 223 | 1.2.3.5.3.2 | 2.2 Salud Ocupacional y Riesgos | 2h | 2019-03-18 10:30 | 2019-03-18 13:30 | 222 |  |  | 2.29d | 0d |  |  |  |  |
| 224 | 1.2.3.5.3.3 | 3.2 Adquisiciones | 4h | 2019-03-18 13:30 | 2019-03-19 08:30 | 223 |  |  | 2.29d | 0d |  |  |  |  |
| 225 | 1.2.3.5.3.4 | 6.1 Administración de Bienes | 2h | 2019-03-19 08:30 | 2019-03-19 10:30 | 224 |  |  | 2.29d | 0d |  |  |  |  |
| 226 | 1.2.3.5.3.5 | 8.1 Contabilidad | 4h | 2019-03-19 10:30 | 2019-03-19 15:30 | 225 |  |  | 2.29d | 0d |  |  |  |  |
| 227 | 1.2.3.5.3.6 | 8.2 Presupuestos | 4h | 2019-03-19 15:30 | 2019-03-20 10:30 | 226 |  |  | 2.29d | 0d |  |  |  |  |
| 228 | 1.2.3.5.3.7 | 13 CRM para Urbanizaciones | 2h | 2019-03-20 10:30 | 2019-03-20 13:30 | 227 |  |  | 2.29d | 0d |  |  |  |  |
| 229 | 1.2.3.5.3.8 | 14 Dirección de Planificación Institucional (Incluye control de proyectos de Obras Públicas) | 2h | 2019-03-20 13:30 | 2019-03-20 15:30 | 228 |  |  | 2.29d | 0d |  |  |  |  |
| 230 | 1.2.3.5.3.9 | 15.6 BI Servicios Corporativos | 2h | 2019-03-20 15:30 | 2019-03-21 08:30 | 229 |  |  | 2.29d | 0d |  |  |  |  |
| 231 | 1.2.3.5.3.10 | 15.8 BI Planificación Institucional | 2h | 2019-03-21 08:30 | 2019-03-21 10:30 | 230 |  |  | 2.29d |  |  |  |  |  |
| 232 | 1.2.3.5.4 | Revisar los resultados de las pruebas y necesidades de cambios | 1d | 2019-03-14 13:30 | 2019-03-15 11:30 |  |  |  | 6.71d |  | finish no earlier than 2018-05-14 05:30 | Administrador de Contrato - Cliente; Gerente de Proyecto PlanERP; Analista de Calidad PlanERP; Consultor Especialista en Procesos de GADs PlanERP | 28h |  |

| ID | WBS | Task | Type | Duration | Start | Finish | Predecessors | Complete | Remaining | Total slack | Free slack | Constraint | Resources | Work | Actual work | Porcentage Avance |
| --- | --- | --- | --- | --- | --- | --- | --- | --- | --- | --- | --- | --- | --- | --- | --- | --- |
| 233 | 1.2.3.6 | **Planificar Salida a Producción y Soporte** |  | 1.29d | 2019-03-21 10:30 A | 2019-03-22 11:30 A | 218 | 100% |  |  |  |  |  | 36h | 36h |  |
| 234 | 1.2.3.6.1 | Definir Plan de Salida a Producción |  | 3h | 2019-03-21 10:30 A | 2019-03-21 14:30 A |  | 100% |  |  |  | finish no earlier than 2018-05-15 05:30 | Administrador de Contrato - Cliente; Líder Funcional - Usuario Experto - Cliente; Gerente de Proyecto PlanERP; Líder del Proyecto/Desarrollo PlanERP | 12h | 12h |  |
| 235 | 1.2.3.6.2 | Planificar Estrategia de Soporte |  | 3h | 2019-03-21 14:30 A | 2019-03-22 08:30 A | 234 | 100% |  |  |  | finish no earlier than 2018-05-15 05:30 | Administrador de Contrato - Cliente; Líder Funcional - Usuario Experto - Cliente; Gerente de Proyecto PlanERP; Líder del Proyecto/Desarrollo PlanERP | 12h | 12h |  |
| 236 | 1.2.3.6.3 | Planificar Administración del Sistema |  | 3h | 2019-03-22 08:30 A | 2019-03-22 11:30 A | 235 | 100% |  |  |  | finish no earlier than 2018-05-15 05:30 | Administrador de Contrato - Cliente; Líder Funcional - Usuario Experto - Cliente; Gerente de Proyecto PlanERP; Líder del Proyecto/Desarrollo PlanERP | 12h | 12h |  |
| 237 | 1.2.3.7 | Revisar la ETAPA del Proyecto |  | 1d | 2019-03-22 11:30 A | 2019-03-25 10:30 A | 233 | 100% |  |  |  | finish no earlier than 2018-05-15 05:30 | Administrador de Contrato - Cliente; Gerente de Proyecto PlanERP; Líder del Proyecto/Desarrollo PlanERP; Analista de Calidad PlanERP | 28h | 28h |  |
| 238 | 1.2.3.8 | HITO: FINALIZACION ETAPA 3 | milestone | 0d | 2019-03-25 10:30 | 2019-03-25 10:30 | 237 |  |  | 0d |  | finish no earlier than 2018-05-15 05:30 |  |  |  | %60 |
| 239 | 1.2.4 | **ETAPA 4: Preparación Final previo Despliegue en Producción - Módulos PRI** |  | 11.43d | 2019-03-25 10:30 A | 2019-04-08 10:30 | 190 | 19% | 9.31d | 0d |  |  |  | 505h | 88.5h |  |
| 240 | 1.2.4.1 | **Gestión General del Proyecto** |  | 1.14d | 2019-03-25 10:30 A | 2019-03-26 10:30 |  | 50% | 0.57d | 0d |  |  |  | 36h | 18h |  |
| 241 | 1.2.4.1.1 | Confirmar el Plan de Entrenamiento |  | 4h | 2019-03-25 10:30 A | 2019-03-25 15:30 |  | 50% | 2h | 0.29d | 0d | finish no earlier than 2018-05-16 05:30 | Administrador de Contrato - Cliente; Funcionarios Técnicos - Cliente; Gerente de Proyecto PlanERP; Líder del Proyecto/Desarrollo PlanERP | 16h | 8h |  |
| 242 | 1.2.4.1.2 | Finalizar plan de Salida a Producción |  | 4h | 2019-03-25 15:30 A | 2019-03-26 10:30 | 241 | 50% | 2h | 0d |  | finish no earlier than 2018-05-16 05:30 | Administrador de Contrato - Cliente; Funcionarios Técnicos - Cliente; Gerente de Proyecto PlanERP; Líder del Proyecto/Desarrollo PlanERP; Analista de Calidad PlanERP | 20h | 10h |  |
| 243 | 1.2.4.2 | **Entrenamiento** |  | 6d | 2019-03-26 10:30 | 2019-04-02 13:30 | 240 |  |  | 0d |  |  |  | 336h |  |  |
| 244 | 1.2.4.2.1 | **Entrenamiento de Usuarios Funcionales y Certificación de Procesos** |  | 4d | 2019-03-26 10:30 | 2019-03-29 15:30 |  |  |  | 2d |  |  | Líder Funcional - Usuario Experto - Cliente; Usuarios Finales - Cliente; Funcionarios Técnicos - Cliente; Analista Procesos PlanERP; Desarrollador PlanERP; Consultor Especialista en Procesos de GADs PlanERP | 168h |  |  |
| 245 | 1.2.4.2.1.1 | 2.1 Administración Técnica |  | 4h | 2019-03-26 10:30 | 2019-03-26 15:30 |  |  |  | 2d | 0d |  |  |  |  |  |
| 246 | 1.2.4.2.1.2 | 2.2 Salud Ocupacional y Riesgos |  | 2h | 2019-03-26 15:30 | 2019-03-27 08:30 | 245 |  |  | 2d | 0d |  |  |  |  |  |
| 247 | 1.2.4.2.1.3 | 3.2 Adquisiciones |  | 4h | 2019-03-27 08:30 | 2019-03-27 13:30 | 246 |  |  | 2d | 0d |  |  |  |  |  |
| 248 | 1.2.4.2.1.4 | 6.1 Administración de Bienes |  | 2h | 2019-03-27 13:30 | 2019-03-27 15:30 | 247 |  |  | 2d | 0d |  |  |  |  |  |
| 249 | 1.2.4.2.1.5 | 8.1 Contabilidad |  | 4h | 2019-03-27 15:30 | 2019-03-28 10:30 | 248 |  |  | 2d | 0d |  |  |  |  |  |
| 250 | 1.2.4.2.1.6 | 8.2 Presupuestos |  | 4h | 2019-03-28 10:30 | 2019-03-28 15:30 | 249 |  |  | 2d | 0d |  |  |  |  |  |
| 251 | 1.2.4.2.1.7 | 13 CRM para Urbanizaciones |  | 2h | 2019-03-28 15:30 | 2019-03-29 08:30 | 250 |  |  | 2d | 0d |  |  |  |  |  |
| 252 | 1.2.4.2.1.8 | 14 Dirección de Planificación Institucional (Incluye control de proyectos de Obras Públicas) |  | 2h | 2019-03-29 08:30 | 2019-03-29 10:30 | 251 |  |  | 2d | 0d |  |  |  |  |  |
| 253 | 1.2.4.2.1.9 | 15.6 BI Servicios Corporativos |  | 2h | 2019-03-29 10:30 | 2019-03-29 13:30 | 252 |  |  | 2d | 0d |  |  |  |  |  |
| 254 | 1.2.4.2.1.10 | 15.8 BI Planificación Institucional |  | 2h | 2019-03-29 13:30 | 2019-03-29 15:30 | 253 |  |  | 2d |  |  |  |  |  |  |
| 255 | 1.2.4.2.2 | Entrenamiento de Usuario Técnicos |  | 6d | 2019-03-26 10:30 | 2019-04-02 13:30 |  |  |  | 0d |  | finish no earlier than 2018-05-21 05:30 | Funcionarios Técnicos - Cliente; Desarrollador PlanERP; Especialista Base de Datos PlanERP; Líder del Proyecto/Desarrollo PlanERP | 168h |  |  |
| 256 | 1.2.4.3 | **Preparación del Sistema** |  | 1.43d | 2019-04-02 13:30 A | 2019-04-03 15:30 | 243 | 50% | 0.71d | 0d |  |  |  | 35h | 17.5h |  |
| 257 | 1.2.4.3.1 | Completar la Administración del Sistema |  | 5h | 2019-04-02 13:30 A | 2019-04-03 09:30 |  | 50% | 2.5h | 0.36d | 0d | finish no earlier than 2018-05-29 05:30 | Funcionarios Técnicos - Cliente; Desarrollador PlanERP; Analista Procesos PlanERP | 15h | 7.5h |  |
| 258 | 1.2.4.3.2 | Comprobación de la Puesta a Producción |  | 5h | 2019-04-03 09:30 A | 2019-04-03 15:30 | 257 | 50% | 2.5h | 0d |  | finish no earlier than 2018-05-29 05:30 | Funcionarios Técnicos - Cliente; Administrador de Contrato - Cliente; Analista de Calidad PlanERP; Líder del Proyecto/Desarrollo PlanERP | 20h | 10h |  |

| ID | WBS | Task | Type | Duration | Start | Finish | Predecessors | Complete | Remaining | Total slack | Free slack | Constraint | Resources | Work | Actual work | Porcentage Avance |
| --- | --- | --- | --- | --- | --- | --- | --- | --- | --- | --- | --- | --- | --- | --- | --- | --- |
| 259 | 1.2.4.4 | **Transición** |  | 2.57d | 2019-04-03 15:30 A | 2019-04-08 08:30 | 256 | 50% | 1.29d | 0.29d |  |  |  | 90h | 45h |  |
| 260 | 1.2.4.4.1 | Finalizar Procesamiento de Sistemas Legados |  | 4h | 2019-04-03 15:30 A | 2019-04-04 10:30 |  | 50% | 2h | 1d | 0d | finish no earlier than 2018-05-30 05:30 | Administrador de Contrato - Cliente; Líder Funcional - Usuario Experto - Cliente; Desarrollador PlanERP; Líder del Proyecto/Desarrollo PlanERP; Especialista Base de Datos PlanERP | 20h | 10h |  |
| 261 | 1.2.4.4.2 | Realizar la Salida a Producción - Carga Inicial y Configuración Inicial |  | 2d | 2019-04-04 10:30 A | 2019-04-08 08:30 | 260 | 50% | 1d | 0.29d |  | finish no earlier than 2018-05-31 05:30 | Administrador de Contrato - Cliente; Líder Funcional - Usuario Experto - Cliente; Desarrollador PlanERP; Líder del Proyecto/Desarrollo PlanERP; Especialista Base de Datos PlanERP | 70h | 35h |  |
| 262 | 1.2.4.5 | Revisar la ETAPA del Proyecto |  | 2h | 2019-04-08 08:30 A | 2019-04-08 10:30 A | 259 | 100% |  |  |  | finish no earlier than 2018-06-01 05:30 | Administrador de Contrato - Cliente; Gerente de Proyecto PlanERP; Líder del Proyecto/Desarrollo PlanERP; Analista de Calidad PlanERP | 8h | 8h |  |
| 263 | 1.2.4.6 | HITO: FINALIZACION ETAPA 4 | milestone | 0d | 2019-04-08 10:30 | 2019-04-08 10:30 | 262 |  |  | 0d |  | finish no earlier than 2018-06-01 05:30 |  |  |  | 80% |
| 264 | 1.2.5 | **ETAPA 5: Despliegue en Producción y Soporte Técnico - Módulos PRI** |  | 30.43d | 2019-04-08 10:30 A | 2019-05-14 16:30 | 239 | 96% | 1.08d | 46.43d |  |  |  | 2398h | 2319h |  |
| 265 | 1.2.5.1 | **Soporte en Producción** |  | 15d | 2019-04-08 10:30 A | 2019-04-25 11:30 |  | 94% | 0.94d | 61.86d |  |  |  | 1120h | 1050h |  |
| 266 | 1.2.5.1.1 | Soporte durante la Salida a Producción |  | 15d | 2019-04-08 10:30 A | 2019-04-25 11:30 A |  | 100% |  |  |  | finish no earlier than 2018-06-06 05:30 | Funcionarios Técnicos - Cliente; Desarrollador PlanERP; Analista Procesos PlanERP; Especialista Base de Datos PlanERP; Consultor Especialista en Procesos de GADs PlanERP | 525h | 525h |  |
| 267 | 1.2.5.1.2 | Resolver incidentes críticos |  | 15d | 2019-04-08 10:30 A | 2019-04-25 11:30 A | 262 | 100% |  |  |  | finish no earlier than 2018-06-08 05:30 | Funcionarios Técnicos - Cliente; Desarrollador PlanERP; Analista Procesos PlanERP; Especialista Base de Datos PlanERP; Consultor Especialista en Procesos de GADs PlanERP | 525h | 525h |  |
| 268 | 1.2.5.1.3 | Entregar el soporte y Administración al cliente |  | 2d | 2019-04-08 10:30 | 2019-04-10 08:30 | 262 |  |  | 74.86d |  | finish no earlier than 2018-06-01 05:30 | Funcionarios Técnicos - Cliente; Desarrollador PlanERP; Analista Procesos PlanERP; Especialista Base de Datos PlanERP; Consultor Especialista en Procesos de GADs PlanERP | 70h |  |  |
| 269 | 1.2.5.2 | **Mejora Continua** |  | 15d | 2019-04-25 11:30 A | 2019-05-14 13:30 A | 265 | 100% |  |  |  |  |  | 1260h | 1260h |  |
| 270 | 1.2.5.2.1 | Monitoreo del Sistema y Acompañamiento ETAPA2 |  | 15d | 2019-04-25 11:30 A | 2019-05-14 13:30 A | 262 | 100% |  |  |  | finish no earlier than 2018-06-13 05:30 | Administrador de Contrato - Cliente; Funcionarios Técnicos - Cliente; Líder Funcional - Usuario Experto - Cliente; Especialista Base de Datos PlanERP; Líder del Proyecto/Desarrollo PlanERP; Consultor Especialista en Procesos de GADs PlanERP | 630h | 630h |  |
| 271 | 1.2.5.2.2 | Ajustes y Configuraciones finales al Software acorde a necesidades Entidad |  | 15d | 2019-04-25 11:30 A | 2019-05-14 13:30 A | 262 | 100% |  |  |  | finish no earlier than 2018-06-13 05:30 | Administrador de Contrato - Cliente; Funcionarios Técnicos - Cliente; Líder Funcional - Usuario Experto - Cliente; Especialista Base de Datos PlanERP; Líder del Proyecto/Desarrollo PlanERP; Consultor Especialista en Procesos de GADs PlanERP | 630h | 630h |  |
| 272 | 1.2.5.3 | **Cierre de la FASE 2** |  | 0.43d | 2019-05-14 13:30 A | 2019-05-14 16:30 | 269 | 50% | 0.21d | 46.43d | 0d |  |  | 18h | 9h |  |
| 273 | 1.2.5.3.1 | Reunión de Cierre de la FASE 2 |  | 3h | 2019-05-14 13:30 A | 2019-05-14 16:30 |  | 50% | 1.5h | 46.43d |  | finish no earlier than 2018-06-14 05:30 | Administrador de Contrato - Cliente; Líder Funcional - Usuario Experto - Cliente; Funcionarios Técnicos - Cliente; Gerente de Proyecto PlanERP; Líder del Proyecto/Desarrollo PlanERP; Analista de Calidad PlanERP | 18h | 9h |  |
| 274 | 1.2.5.4 | HITO: FIN DE LA FASE 2 | milestone | 0d | 2019-05-14 16:30 | 2019-05-14 16:30 | 272 |  |  | 46.43d |  | finish no earlier than 2018-06-14 05:30 |  |  |  | 85% |
| 275 | 1.3 | **FASE 3: Implementación de Módulos de Planificación de Recursos Institucionales - PRI** |  | 76.86d | 2019-04-08 10:30 A | 2019-07-10 13:30 |  | 24% | 58.2d | 0d |  |  |  | 3433h | 653.5h |  |
| 276 | 1.3.1 | **ETAPA 1: Instalación del SIIM - Módulos PRI** |  | 4.29d | 2019-04-08 10:30 A | 2019-04-12 08:30 |  | 99% | 0d | 0d |  |  |  | 109h | 109h |  |
| 277 | 1.3.1.1 | **Entrega e Instalación del Software** |  | 3.29d | 2019-04-08 10:30 A | 2019-04-11 09:30 A |  | 100% |  |  |  |  |  | 88h | 88h |  |
| 278 | 1.3.1.1.1 | **Instalar SIIM en Servidor** |  | 3d | 2019-04-08 10:30 A | 2019-04-10 16:30 A |  | 100% |  |  |  |  | Funcionarios Técnicos - Cliente | 84h | 84h |  |
| 279 | 1.3.1.1.1.1 | Instalar Módulos PRI |  | 3d | 2019-04-08 10:30 A | 2019-04-10 16:30 A | 263 | 100% |  |  |  | finish no earlier than 2018-10-16 05:30 | Funcionarios Técnicos - Cliente; Desarrollador PlanERP; Líder del Proyecto/Desarrollo PlanERP | 63h | 63h |  |
| 280 | 1.3.1.1.2 | Entrega de Software |  | 2h | 2019-04-10 16:30 A | 2019-04-11 09:30 A | 278 | 100% |  |  |  | finish no earlier than 2018-10-17 05:30 | Gerente de Proyecto PlanERP; Administrador de Contrato - Cliente | 4h | 4h |  |
| 281 | 1.3.1.2 | Revisar la ETAPA del Proyecto |  | 1d | 2019-04-11 09:30 A | 2019-04-12 08:30 A | 277 | 100% |  |  |  | finish no earlier than 2018-10-17 05:30 | Administrador de Contrato - Cliente; Gerente de Proyecto PlanERP; Analista de Calidad PlanERP | 21h | 21h |  |
| 282 | 1.3.1.3 | HITO: FINALIZACION ETAPA 1 | milestone | 0d | 2019-04-12 08:30 | 2019-04-12 08:30 | 281 |  |  | 0d |  | finish no earlier than 2018-10-17 05:30 |  |  |  | 86% |

| ID | WBS | Task | Type | Duration | Start | Finish | Predecessors | Complete | Remaining | Total slack | Free slack | Constraint | Resources | Work | Actual work | Porcentage Avance |
| --- | --- | --- | --- | --- | --- | --- | --- | --- | --- | --- | --- | --- | --- | --- | --- | --- |
| 283 | 1.3.2 | **ETAPA 2: Levantamiento de Características Institucionales - Módulos PRI** |  | 8.57d | 2019-04-12 08:30 A | 2019-04-23 13:30 | 276 | 99% | 0d | 0d |  |  |  | 188h | 188h |  |
| 284 | 1.3.2.1 | **Actividades de Gestión del Proyecto** |  | 0.57d | 2019-04-12 08:30 A | 2019-04-12 13:30 A |  | 100% |  |  |  |  |  | 8h | 8h |  |
| 285 | 1.3.2.1.1 | Revisión del Plan del Proyecto |  | 2h | 2019-04-12 08:30 A | 2019-04-12 10:30 A |  | 100% |  |  |  | finish no earlier than 2018-10-18 05:30 | Administrador de Contrato - Cliente; Gerente de Proyecto PlanERP | 4h | 4h |  |
| 286 | 1.3.2.1.2 | Programar talleres de requerimientos de Entidad |  | 2h | 2019-04-12 10:30 A | 2019-04-12 13:30 A | 285 | 100% |  |  |  | finish no earlier than 2018-10-18 05:30 | Administrador de Contrato - Cliente; Gerente de Proyecto PlanERP | 4h | 4h |  |
| 287 | 1.3.2.2 | **Sesiones de Requerimientos del Entidad** |  | 6d | 2019-04-12 13:30 A | 2019-04-19 15:30 A | 284 | 100% |  |  |  |  |  | 126h | 126h |  |
| 288 | 1.3.2.2.1 | Conducir Sesiones de Requerimientos |  | 3d | 2019-04-12 13:30 A | 2019-04-17 09:30 A |  | 100% |  |  |  | finish no earlier than 2018-11-12 05:30 | Funcionarios Técnicos - Cliente; Analista Procesos PlanERP; Consultor Especialista en Procesos de GADs PlanERP | 63h | 63h |  |
| 289 | 1.3.2.2.2 | Crear Documento de Características del Entidad |  | 3d | 2019-04-17 09:30 A | 2019-04-19 15:30 A | 288 | 100% |  |  |  | finish no earlier than 2018-11-15 05:30 | Analista Procesos PlanERP; Funcionarios Técnicos - Cliente; Consultor Especialista en Procesos de GADs PlanERP | 63h | 63h |  |
| 290 | 1.3.2.3 | **Revisar el Documento de Características del Entidad** |  | 1d | 2019-04-19 15:30 A | 2019-04-22 14:30 A | 287 | 100% |  |  |  |  |  | 26h | 26h |  |
| 291 | 1.3.2.3.1 | Revisar el Documento de Características del Entidad |  | 4h | 2019-04-19 15:30 A | 2019-04-22 10:30 A |  | 100% |  |  |  | finish no earlier than 2018-11-16 05:30 | Administrador de Contrato - Cliente; Gerente de Proyecto PlanERP; Analista de Calidad PlanERP; Consultor Especialista en Procesos de GADs PlanERP; Analista Procesos PlanERP | 20h | 20h |  |
| 292 | 1.3.2.3.2 | Revisar el Plan del Proyecto |  | 3h | 2019-04-22 10:30 A | 2019-04-22 14:30 A | 291 | 100% |  |  |  | finish no earlier than 2018-11-16 05:30 | Administrador de Contrato - Cliente; Gerente de Proyecto PlanERP | 6h | 6h |  |
| 293 | 1.3.2.4 | Revisar la ETAPA del Proyecto |  | 1d | 2019-04-22 14:30 A | 2019-04-23 13:30 A | 290 | 100% |  |  |  | finish no earlier than 2018-11-19 05:30 | Administrador de Contrato - Cliente; Gerente de Proyecto PlanERP; Líder del Proyecto/Desarrollo PlanERP; Analista de Calidad PlanERP | 28h | 28h |  |
| 294 | 1.3.2.5 | HITO: FINALIZACION ETAPA 2 | milestone | 0d | 2019-04-23 13:30 | 2019-04-23 13:30 | 293 |  |  | 0d |  | finish no earlier than 2018-11-19 05:30 |  |  |  | 87% |
| 295 | 1.3.3 | **ETAPA 3: Migración de Datos, Configuración y Pruebas de Operación de Módulos - Módulos PRI** |  | 33.43d | 2019-04-23 13:30 A | 2019-06-03 15:30 | 283 | 34% | 22.21d | 2.71d | 0d |  |  | 1087h | 356.5h |  |
| 296 | 1.3.3.1 | **Gestión General del Proyecto** |  | 1.57d | 2019-04-23 13:30 A | 2019-04-24 16:30 A |  | 100% |  |  |  |  |  | 33h | 33h |  |
| 297 | 1.3.3.1.1 | Planificar cambio Organizacional |  | 3h | 2019-04-23 13:30 A | 2019-04-23 16:30 A |  | 100% |  |  |  | finish no earlier than 2018-11-19 05:30 | Administrador de Contrato - Cliente; Gerente de Proyecto PlanERP; Líder del Proyecto/Desarrollo PlanERP | 9h | 9h |  |
| 298 | 1.3.3.1.2 | Planificar Entrenamiento a Usuarios Finales |  | 4h | 2019-04-23 16:30 A | 2019-04-24 11:30 A | 297 | 100% |  |  |  | finish no earlier than 2018-11-20 05:30 | Administrador de Contrato - Cliente; Gerente de Proyecto PlanERP; Líder del Proyecto/Desarrollo PlanERP | 12h | 12h |  |
| 299 | 1.3.3.1.3 | Definir y Preparar la Migración de Datos |  | 4h | 2019-04-24 11:30 A | 2019-04-24 16:30 A | 298 | 100% |  |  |  | finish no earlier than 2018-11-20 05:30 | Funcionarios Técnicos - Cliente; Líder del Proyecto/Desarrollo PlanERP; Especialista Base de Datos PlanERP | 12h | 12h |  |
| 300 | 1.3.3.2 | **Configuración del Sistema en Producción** |  | 20.57d | 2019-04-24 16:30 A | 2019-05-20 16:30 | 296 | 34% | 13.5d | 14d |  |  |  | 720h | 247.5h |  |
| 301 | 1.3.3.2.1 | Instalar el SIIM en Producción |  | 4h | 2019-04-24 16:30 A | 2019-04-25 11:30 A |  | 100% |  |  |  | finish no earlier than 2018-11-21 05:30 | Funcionarios Técnicos - Cliente; Analista Procesos PlanERP; Desarrollador PlanERP; Líder del Proyecto/Desarrollo PlanERP; Especialista Base de Datos PlanERP | 20h | 20h |  |
| 302 | 1.3.3.2.2 | Configurar Inicialización del Sistema |  | 1d | 2019-04-25 11:30 A | 2019-04-26 10:30 A | 301 | 100% |  |  |  | finish no earlier than 2018-11-23 05:30 | Funcionarios Técnicos - Cliente; Analista Procesos PlanERP; Desarrollador PlanERP; Líder del Proyecto/Desarrollo PlanERP; Especialista Base de Datos PlanERP | 35h | 35h |  |
| 303 | 1.3.3.2.3 | Realizar la Migración de Datos |  | 10d | 2019-04-26 10:30 | 2019-05-09 08:30 | 302 |  |  | 2.5d | 0d | finish no earlier than 2019-03-01 05:30 | Funcionarios Técnicos - Cliente; Analista Procesos PlanERP; Desarrollador PlanERP; Líder del Proyecto/Desarrollo PlanERP; Especialista Base de Datos PlanERP | 350h |  |  |
| 304 | 1.3.3.2.4 | Desarrollar Adaptaciones al Software |  | 5d | 2019-05-09 08:30 A | 2019-05-15 11:30 | 303 | 50% | 2.5d | 1d | 0d | finish no earlier than 2019-03-20 05:30 | Funcionarios Técnicos - Cliente; Analista Procesos PlanERP; Desarrollador PlanERP; Líder del Proyecto/Desarrollo PlanERP; Especialista Base de Datos PlanERP | 175h | 87.5h |  |
| 305 | 1.3.3.2.5 | Configuración del Sistema en base al Documento de Características del Entidad |  | 2d | 2019-05-15 11:30 A | 2019-05-17 09:30 | 304 | 50% | 1d | 16d |  | finish no earlier than 2019-03-27 05:30 | Funcionarios Técnicos - Cliente; Analista Procesos PlanERP; Desarrollador PlanERP; Líder del Proyecto/Desarrollo PlanERP; Especialista Base de Datos PlanERP | 70h | 35h |  |
| 306 | 1.3.3.2.6 | Configurar Interfaces |  | 1d | 2019-05-17 09:30 A | 2019-05-20 08:30 A | 305 | 100% |  |  |  | finish no earlier than 2019-03-29 05:30 | Funcionarios Técnicos - Cliente; Analista Procesos PlanERP; Desarrollador PlanERP; Líder del Proyecto/Desarrollo PlanERP; Especialista Base de Datos PlanERP | 35h | 35h |  |
| 307 | 1.3.3.2.7 | Configurar Usuarios y Autorizaciones |  | 1d | 2019-05-20 08:30 A | 2019-05-20 16:30 A | 306 | 100% |  |  |  | finish no earlier than 2019-04-01 05:30 | Funcionarios Técnicos - Cliente; Analista Procesos PlanERP; Desarrollador PlanERP; Líder del Proyecto/Desarrollo PlanERP; Especialista Base de Datos PlanERP | 35h | 35h |  |

| ID | WBS | Task | Duration | Start | Finish | Predecessors | Complete | Remaining | Total slack | Free slack | Constraint | Resources | Work | Actual work |
| --- | --- | --- | --- | --- | --- | --- | --- | --- | --- | --- | --- | --- | --- | --- |
| 308 | 1.3.3.3 | **Gestión del Cambio Organizacional** | 2d | 2019-05-20 16:30 A | 2019-05-22 14:30 A | 300 | 100% |  |  |  |  |  | 56h | 56h |
| 309 | 1.3.3.3.1 | Conducir la comunicación de la Gestión de Cambios (si es aplicable) | 2d | 2019-05-20 16:30 A | 2019-05-22 14:30 A |  | 100% |  |  |  | finish no earlier than 2019-04-03 05:30 | Administrador de Contrato - Cliente; Líder Funcional - Usuario Experto - Cliente; Gerente de Proyecto PlanERP; Consultor Especialista en Procesos de GADs PlanERP | 56h | 56h |
| 310 | 1.3.3.4 | **Pruebas de validación/aceptación del Sistema** | 2.57d | 2019-05-22 14:30 A | 2019-05-24 16:30 | 308 | 22% | 2d | 2.71d | 0d |  |  | 76h | 20h |
| 311 | 1.3.3.4.1 | Mantener la Lista Maestra de Procesos de Entidad | 4h | 2019-05-22 14:30 A | 2019-05-23 09:30 A |  | 100% |  |  |  | finish no earlier than 2019-04-04 05:30 | Líder Funcional - Usuario Experto - Cliente; Gerente de Proyecto PlanERP; Líder del Proyecto/Desarrollo PlanERP; Analista Procesos PlanERP; Consultor Especialista en Procesos de GADs PlanERP | 20h | 20h |
| 312 | 1.3.3.4.2 | **Conducir Talleres de Validación** | 2d | 2019-05-23 09:30 | 2019-05-24 16:30 | 311 |  |  | 2.71d |  |  | Líder Funcional - Usuario Experto - Cliente; Analista Procesos PlanERP; Analista de Calidad PlanERP; Consultor Especialista en Procesos de GADs PlanERP | 56h |  |
| 313 | 1.3.3.4.2.1 | 3.1 Compras Públicas | 2h | 2019-05-23 09:30 | 2019-05-23 11:30 |  |  |  | 2.71d | 0d |  |  |  |  |
| 314 | 1.3.3.4.2.2 | 6.2 Servicios Generales | 2h | 2019-05-23 11:30 | 2019-05-23 14:30 | 313 |  |  | 2.71d | 0d |  |  |  |  |
| 315 | 1.3.3.4.2.3 | 8.5 Gestión Jurídica - Financiera | 2h | 2019-05-23 14:30 | 2019-05-23 16:30 | 314 |  |  | 2.71d | 0d |  |  |  |  |
| 316 | 1.3.3.4.2.4 | 15.2 BI Financiero | 2h | 2019-05-23 16:30 | 2019-05-24 09:30 | 315 |  |  | 2.71d | 0d |  |  |  |  |
| 317 | 1.3.3.4.2.5 | 15.3 BI Administración del Talento Humano | 2h | 2019-05-24 09:30 | 2019-05-24 11:30 | 316 |  |  | 2.71d | 0d |  |  |  |  |
| 318 | 1.3.3.4.2.6 | 15.4 BI Compras Públicas | 2h | 2019-05-24 11:30 | 2019-05-24 14:30 | 317 |  |  | 2.71d | 0d |  |  |  |  |
| 319 | 1.3.3.4.2.7 | 15.9 Tablero de Control | 2h | 2019-05-24 14:30 | 2019-05-24 16:30 | 318 |  |  | 2.71d |  |  |  |  |  |
| 320 | 1.3.3.5 | **Pruebas de aceptacion del Sistema** | 4.43d | 2019-05-24 16:30 | 2019-05-30 15:30 | 310 |  |  | 2.71d | 0d |  |  | 138h |  |
| 321 | 1.3.3.5.1 | Definir casos de prueba y alcance | 3h | 2019-05-24 16:30 | 2019-05-27 10:30 |  |  |  | 2.71d | 0d | finish no earlier than 2019-04-17 05:30 | Líder Funcional - Usuario Experto - Cliente; Líder del Proyecto/Desarrollo PlanERP; Analista de Calidad PlanERP; Funcionarios Técnicos - Cliente | 12h |  |
| 322 | 1.3.3.5.2 | Preparar ambiente de pruebas | 1d | 2019-05-27 10:30 | 2019-05-28 09:30 | 321 |  |  | 2.71d | 0d | finish no earlier than 2019-04-19 05:30 | Funcionarios Técnicos - Cliente; Líder Funcional - Usuario Experto - Cliente; Líder del Proyecto/Desarrollo PlanERP; Analista de Calidad PlanERP | 28h |  |
| 323 | 1.3.3.5.3 | **Ejecutar el plan de pruebas** | 2d | 2019-05-28 09:30 | 2019-05-29 16:30 | 322 |  |  | 2.71d |  |  | Líder Funcional - Usuario Experto - Cliente; Líder del Proyecto/Desarrollo PlanERP; Analista de Calidad PlanERP; Funcionarios Técnicos - Cliente; Consultor Especialista en Procesos de GADs PlanERP | 70h |  |
| 324 | 1.3.3.5.3.1 | 3.1 Compras Públicas | 2h | 2019-05-28 09:30 | 2019-05-28 11:30 |  |  |  | 2.71d | 0d |  |  |  |  |
| 325 | 1.3.3.5.3.2 | 6.2 Servicios Generales | 2h | 2019-05-28 11:30 | 2019-05-28 14:30 | 324 |  |  | 2.71d | 0d |  |  |  |  |
| 326 | 1.3.3.5.3.3 | 8.5 Gestión Jurídica - Financiera | 2h | 2019-05-28 14:30 | 2019-05-28 16:30 | 325 |  |  | 2.71d | 0d |  |  |  |  |
| 327 | 1.3.3.5.3.4 | 15.2 BI Financiero | 2h | 2019-05-28 16:30 | 2019-05-29 09:30 | 326 |  |  | 2.71d | 0d |  |  |  |  |
| 328 | 1.3.3.5.3.5 | 15.3 BI Administración del Talento Humano | 2h | 2019-05-29 09:30 | 2019-05-29 11:30 | 327 |  |  | 2.71d | 0d |  |  |  |  |
| 329 | 1.3.3.5.3.6 | 15.4 BI Compras Públicas | 2h | 2019-05-29 11:30 | 2019-05-29 14:30 | 328 |  |  | 2.71d | 0d |  |  |  |  |
| 330 | 1.3.3.5.3.7 | 15.9 Tablero de Control | 2h | 2019-05-29 14:30 | 2019-05-29 16:30 | 329 |  |  | 2.71d | 0d |  |  |  |  |
| 331 | 1.3.3.5.4 | Revisar los resultados de las pruebas y necesidades de cambios | 1d | 2019-05-29 16:30 | 2019-05-30 15:30 | 330, 319 |  |  | 2.71d |  | finish no earlier than 2019-05-07 05:30 | Administrador de Contrato - Cliente; Gerente de Proyecto PlanERP; Analista de Calidad PlanERP; Consultor Especialista en Procesos de GADs PlanERP | 28h |  |

| ID | WBS | Task | Type | Duration | Start | Finish | Predecessors | Total slack | Free slack | Constraint | Resources | Work | Porcentage Avance |
| --- | --- | --- | --- | --- | --- | --- | --- | --- | --- | --- | --- | --- | --- |
| 332 | 1.3.3.6 | **Planificar Salida a Producción y Soporte** |  | 1.29d | 2019-05-30 15:30 | 2019-05-31 16:30 | 320 | 2.71d | 0d |  |  | 36h |  |
| 333 | 1.3.3.6.1 | Definir Plan de Salida a Producción |  | 3h | 2019-05-30 15:30 | 2019-05-31 09:30 |  | 2.71d | 0d | finish no earlier than 2019-05-07 05:30 | Administrador de Contrato - Cliente; Líder Funcional - Usuario Experto - Cliente; Gerente de Proyecto PlanERP; Líder del Proyecto/Desarrollo PlanERP | 12h |  |
| 334 | 1.3.3.6.2 | Planificar Estrategia de Soporte |  | 3h | 2019-05-31 09:30 | 2019-05-31 13:30 | 333 | 2.71d | 0d | finish no earlier than 2019-05-07 05:30 | Administrador de Contrato - Cliente; Líder Funcional - Usuario Experto - Cliente; Gerente de Proyecto PlanERP; Líder del Proyecto/Desarrollo PlanERP | 12h |  |
| 335 | 1.3.3.6.3 | Planificar Administración del Sistema |  | 3h | 2019-05-31 13:30 | 2019-05-31 16:30 | 334 | 2.71d |  | finish no earlier than 2019-05-08 05:30 | Administrador de Contrato - Cliente; Líder Funcional - Usuario Experto - Cliente; Gerente de Proyecto PlanERP; Líder del Proyecto/Desarrollo PlanERP | 12h |  |
| 336 | 1.3.3.7 | Revisar la ETAPA del Proyecto |  | 1d | 2019-05-31 16:30 | 2019-06-03 15:30 | 332 | 2.71d | 0d | finish no earlier than 2019-05-09 05:30 | Administrador de Contrato - Cliente; Gerente de Proyecto PlanERP; Líder del Proyecto/Desarrollo PlanERP; Analista de Calidad PlanERP | 28h |  |
| 337 | 1.3.3.8 | HITO: FINALIZACION ETAPA 3 | milestone | 0d | 2019-06-03 15:30 | 2019-06-03 15:30 | 336 | 2.71d |  | finish no earlier than 2019-05-09 05:30 |  |  | 95% |
| 338 | 1.3.4 | **ETAPA 4: Preparación Final previo Despliegue en Producción - Módulos PRI** |  | 12.43d | 2019-06-03 15:30 | 2019-06-18 14:30 | 295 | 2.71d |  |  |  | 421h |  |
| 339 | 1.3.4.1 | **Gestión General del Proyecto** |  | 1.14d | 2019-06-03 15:30 | 2019-06-04 15:30 |  | 2.71d | 0d |  |  | 36h |  |
| 340 | 1.3.4.1.1 | Confirmar el Plan de Entrenamiento |  | 4h | 2019-06-03 15:30 | 2019-06-04 10:30 |  | 2.71d | 0d | finish no earlier than 2019-05-09 05:30 | Administrador de Contrato - Cliente; Funcionarios Técnicos - Cliente; Gerente de Proyecto PlanERP; Líder del Proyecto/Desarrollo PlanERP | 16h |  |
| 341 | 1.3.4.1.2 | Finalizar plan de Salida a Producción |  | 4h | 2019-06-04 10:30 | 2019-06-04 15:30 | 340 | 2.71d |  | finish no earlier than 2019-05-10 05:30 | Administrador de Contrato - Cliente; Funcionarios Técnicos - Cliente; Gerente de Proyecto PlanERP; Líder del Proyecto/Desarrollo PlanERP; Analista de Calidad PlanERP | 20h |  |
| 342 | 1.3.4.2 | **Entrenamiento** |  | 7d | 2019-06-04 15:30 | 2019-06-12 16:30 | 339 | 2.71d | 0d |  |  | 252h |  |
| 343 | 1.3.4.2.1 | **Entrenamiento de Usuarios Funcionales y Certificación de Procesos** |  | 4d | 2019-06-04 15:30 | 2019-06-10 10:30 |  | 2.71d |  |  | Líder Funcional - Usuario Experto - Cliente; Usuarios Finales - Cliente; Funcionarios Técnicos - Cliente; Analista Procesos PlanERP; Desarrollador PlanERP; Consultor Especialista en Procesos de GADs PlanERP | 168h |  |
| 344 | 1.3.4.2.1.1 | 3.1 Compras Públicas |  | 4h | 2019-06-04 15:30 | 2019-06-05 10:30 |  | 2.71d | 0d |  |  |  |  |
| 345 | 1.3.4.2.1.2 | 6.2 Servicios Generales |  | 4h | 2019-06-05 10:30 | 2019-06-05 15:30 | 344 | 2.71d | 0d |  |  |  |  |
| 346 | 1.3.4.2.1.3 | 8.5 Gestión Jurídica - Financiera |  | 4h | 2019-06-05 15:30 | 2019-06-06 10:30 | 345 | 2.71d | 0d |  |  |  |  |
| 347 | 1.3.4.2.1.4 | 15.2 BI Financiero |  | 4h | 2019-06-06 10:30 | 2019-06-06 15:30 | 346 | 2.71d | 0d |  |  |  |  |
| 348 | 1.3.4.2.1.5 | 15.3 BI Administración del Talento Humano |  | 4h | 2019-06-06 15:30 | 2019-06-07 10:30 | 347 | 2.71d | 0d |  |  |  |  |
| 349 | 1.3.4.2.1.6 | 15.4 BI Compras Públicas |  | 4h | 2019-06-07 10:30 | 2019-06-07 15:30 | 348 | 2.71d | 0d |  |  |  |  |
| 350 | 1.3.4.2.1.7 | 15.9 Tablero de Control |  | 4h | 2019-06-07 15:30 | 2019-06-10 10:30 | 349 | 2.71d | 0d |  |  |  |  |
| 351 | 1.3.4.2.2 | Entrenamiento de Usuario Técnicos |  | 3d | 2019-06-10 10:30 | 2019-06-12 16:30 | 350 | 2.71d |  | finish no earlier than 2019-05-31 05:30 | Funcionarios Técnicos - Cliente; Desarrollador PlanERP; Especialista Base de Datos PlanERP; Líder del Proyecto/Desarrollo PlanERP | 84h |  |
| 352 | 1.3.4.3 | **Preparación del Sistema** |  | 1.43d | 2019-06-12 16:30 | 2019-06-14 09:30 | 342 | 2.71d | 0d |  |  | 35h |  |
| 353 | 1.3.4.3.1 | Completar la Administración del Sistema |  | 5h | 2019-06-12 16:30 | 2019-06-13 13:30 |  | 2.71d | 0d | finish no earlier than 2019-06-03 05:30 | Funcionarios Técnicos - Cliente; Desarrollador PlanERP; Analista Procesos PlanERP | 15h |  |
| 354 | 1.3.4.3.2 | Comprobación de la Puesta a Producción |  | 5h | 2019-06-13 13:30 | 2019-06-14 09:30 | 353 | 2.71d |  | finish no earlier than 2019-06-04 05:30 | Funcionarios Técnicos - Cliente; Administrador de Contrato - Cliente; Analista de Calidad PlanERP; Líder del Proyecto/Desarrollo PlanERP | 20h |  |
| 355 | 1.3.4.4 | **Transición** |  | 2.57d | 2019-06-14 09:30 | 2019-06-18 11:30 | 352 | 2.71d | 0d |  |  | 90h |  |
| 356 | 1.3.4.4.1 | Finalizar Procesamiento de Sistemas Legados |  | 4h | 2019-06-14 09:30 | 2019-06-14 14:30 |  | 2.71d | 0d | finish no earlier than 2019-06-04 05:30 | Administrador de Contrato - Cliente; Líder Funcional - Usuario Experto - Cliente; Desarrollador PlanERP; Líder del Proyecto/Desarrollo PlanERP; Especialista Base de Datos PlanERP | 20h |  |
| 357 | 1.3.4.4.2 | Realizar la Salida a Producción - Carga Inicial y Configuración Inicial |  | 2d | 2019-06-14 14:30 | 2019-06-18 11:30 | 356 | 2.71d |  | finish no earlier than 2019-06-11 05:30 | Administrador de Contrato - Cliente; Líder Funcional - Usuario Experto - Cliente; Desarrollador PlanERP; Líder del Proyecto/Desarrollo PlanERP; Especialista Base de Datos PlanERP | 70h |  |
| 358 | 1.3.4.5 | Revisar la ETAPA del Proyecto |  | 2h | 2019-06-18 11:30 | 2019-06-18 14:30 | 355 | 2.71d | 0d | finish no earlier than 2019-06-11 05:30 | Administrador de Contrato - Cliente; Gerente de Proyecto PlanERP; Líder del Proyecto/Desarrollo PlanERP; Analista de Calidad PlanERP | 8h |  |
| 359 | 1.3.4.6 | HITO: FINALIZACION ETAPA 4 | milestone | 0d | 2019-06-18 14:30 | 2019-06-18 14:30 | 358 | 2.71d |  | finish no earlier than 2019-06-11 05:30 |  |  | 98% |

| ID | WBS | Task | Type | Duration | Start | Finish | Predecessors | Total slack | Free slack | Constraint | Resources | Work | Porcentage Avance |
| --- | --- | --- | --- | --- | --- | --- | --- | --- | --- | --- | --- | --- | --- |
| 360 | 1.3.5 | **ETAPA 5: Despliegue en Producción y Soporte Técnico - Módulos PRI** |  | 15.43d | 2019-06-21 08:30 | 2019-07-10 13:30 | 338 | 0d |  |  |  | 1628h |  |
| 361 | 1.3.5.1 | **Soporte en Producción** |  | 10d | 2019-06-21 14:00 | 2019-07-04 11:00 |  | 4.79d |  |  |  | 350h |  |
| 362 | 1.3.5.1.1 | Soporte durante la Salida a Producción |  | 5d | 2019-06-21 14:00 | 2019-06-28 05:30 |  | 4.79d | 0d | finish no earlier than 2019-06-28 05:30 | Funcionarios Técnicos - Cliente; Desarrollador PlanERP; Analista Procesos PlanERP; Especialista Base de Datos PlanERP; Consultor Especialista en Procesos de GADs PlanERP | 175h |  |
| 363 | 1.3.5.1.2 | Resolver incidentes críticos |  | 3d | 2019-06-28 08:00 | 2019-07-02 14:00 | 362 | 4.79d | 0d | finish no earlier than 2019-06-28 05:30 | Funcionarios Técnicos - Cliente; Desarrollador PlanERP; Analista Procesos PlanERP; Especialista Base de Datos PlanERP; Consultor Especialista en Procesos de GADs PlanERP | 105h |  |
| 364 | 1.3.5.1.3 | Entregar el soporte y Administración al cliente |  | 2d | 2019-07-02 14:00 | 2019-07-04 11:00 | 363 | 4.79d |  | finish no earlier than 2019-06-13 05:30 | Funcionarios Técnicos - Cliente; Desarrollador PlanERP; Analista Procesos PlanERP; Especialista Base de Datos PlanERP; Consultor Especialista en Procesos de GADs PlanERP | 70h |  |
| 365 | 1.3.5.2 | **Mejora Continua** |  | 15d | 2019-06-21 08:30 | 2019-07-10 09:30 | 338 | 0d |  |  |  | 1260h |  |
| 366 | 1.3.5.2.1 | Monitoreo del Sistema y Acompañamiento |  | 15d | 2019-06-21 08:30 | 2019-07-10 09:30 |  | 0d |  | start no earlier than 2019-06-21 08:30 | Administrador de Contrato - Cliente; Funcionarios Técnicos - Cliente; Líder Funcional - Usuario Experto - Cliente; Especialista Base de Datos PlanERP; Líder del Proyecto/Desarrollo PlanERP; Consultor Especialista en Procesos de GADs PlanERP | 630h |  |
| 367 | 1.3.5.2.2 | Ajustes y Configuraciones finales al Software acorde a necesidades Entidad |  | 15d | 2019-06-21 08:30 | 2019-07-10 09:30 | 338 | 0d |  | start no earlier than 2019-06-21 08:30 | Administrador de Contrato - Cliente; Funcionarios Técnicos - Cliente; Líder Funcional - Usuario Experto - Cliente; Especialista Base de Datos PlanERP; Líder del Proyecto/Desarrollo PlanERP; Consultor Especialista en Procesos de GADs PlanERP | 630h |  |
| 368 | 1.3.5.3 | **Cierre de la FASE 3 y Proyecto** |  | 0.43d | 2019-07-10 09:30 | 2019-07-10 13:30 | 365 | 0d |  |  |  | 18h |  |
| 369 | 1.3.5.3.1 | Reunión de Cierre de la FASE 3 y Proyecto |  | 3h | 2019-07-10 09:30 | 2019-07-10 13:30 |  | 0d |  | start no earlier than 2019-07-10 08:30 | Administrador de Contrato - Cliente; Líder Funcional - Usuario Experto - Cliente; Funcionarios Técnicos - Cliente; Gerente de Proyecto PlanERP; Líder del Proyecto/Desarrollo PlanERP; Analista de Calidad PlanERP | 18h |  |
| 370 | 1.3.5.4 | HITO: FIN DE LA FASE 3 y Proyecto | milestone | 0d | 2019-07-10 09:30 | 2019-07-10 09:30 | 365 | 0.43d |  | start no earlier than 2019-07-10 08:30 |  |  | 100% |
